# OPERA HOUSE DOWNTOWN DUBAI - BL REV.00

Schedule from Primavera P6, 2013-11-27 to 2015-12-06, data date 2013-11-27.
Must finish by 2016-01-02

## Calendars

- PPIS - Calender 7 working days: Mon-Sun 07:30-16:30.
- UAE 7 days/Week: Mon-Sun 07:30-16:30.

## Resources

| Resource | Group | Unit |
| --- | --- | --- |
| Excavation | material | M3 |
| Excavator | labor |  |
| Anti -termite | material | M2 |
| TECH-Anti -termite | labor |  |
| Blinding | material | M3 |
| Mason-Concrete | labor |  |
| Helper-Blinding | labor |  |
| TECH-Water Proofing | labor |  |
| Helper-Water Proofing | labor |  |
| Water Proofing | material | M2 |
| MEP Mnhrs | labor |  |
| Pile | material | No |
| Screed | material | M2 |
| Helper-Screed | labor |  |
| Steel Reinforcement | material | Ton |
| Steel Fixer | labor |  |
| Helper-Steel Fixer | labor |  |
| Formwork | material | M2 |
| Carpenter | labor |  |
| Helper-Carpenter | labor |  |
| Shotcrete | material | M2 |
| Concrete | material | M3 |
| Helper-Concrete | labor |  |
| Block | material | M2 |
| TECH-Block | labor |  |
| Helper-Block | labor |  |
| Plaster | material | M2 |
| TECH-Plaster | labor |  |
| Helper-Plaster | labor |  |
| Paint | material | M2 |
| Painter | labor |  |
| Helper-Paint | labor |  |
| False Ceiling | material | LM |
| TECH-False Ceiling | labor |  |
| Helper-False Ceiling | labor |  |
| Ceramic Tiles | material | M2 |
| TECH-Ceramic Tiles | labor |  |
| Helper-Ceramic Tiles | labor |  |
| Granite Tiles | material | M2 |
| TECH-Granite Tiles | labor |  |
| Helper-Granite Tiles | labor |  |
| Vinyle Tile | material | M2 |
| TECH-Vinyle Tile | labor |  |
| Helper-Vinyle Tile | labor |  |
| Partitions | material | M2 |
| TECH-Partitions | labor |  |
| Helper-Partitions | labor |  |

## Schedule

| ID | WBS | Activity | Type | Duration | Start | Finish | Predecessors | Total float | Free float | Constraint | Calendar | user_text1 | user_text2 | user_text4 | user_text6 |
| --- | --- | --- | --- | --- | --- | --- | --- | --- | --- | --- | --- | --- | --- | --- | --- |
|  | 1 | **GENERAL** |  |  | 2013-11-27 | 2015-12-06 |  |  |  |  |  |  |  |  |  |
|  | 7 | **PRELIMINARIES / MOBILIZATION** |  |  | 2013-11-27 | 2015-12-06 |  |  |  |  |  |  |  |  |  |
| OP-PR-01 |  | Site Possession | milestone | 0d | 2013-11-27 | 2013-11-27 |  | 488d | 0d |  | UAE 7 days/Week | OP | PR | 01 | OP-PR-01 |
| OP-PR-02 |  | Mobilization And Site Offices |  | 30d | 2013-11-27 | 2013-12-26 | OP-PR-01 | 488d | 462d |  | UAE 7 days/Week | OP | PR | 02 | OP-PR-02 |
| OP-PR-03 |  | De-Mobilization |  | 30d | 2015-11-07 | 2015-12-06 | OP-PR-02 | 26d | 0d | as late as possible | UAE 7 days/Week | OP | PR | 03 | OP-PR-03 |
|  | 3 | **GENERAL REQUIREMENTS** |  |  | 2013-11-27 | 2013-11-27 |  |  |  |  |  |  |  |  |  |
| OP-GN-01 |  | Receiving Ifc Drawings & Specifications | milestone | 0d | 2013-11-27 | 2013-11-27 |  | 518d | 492d |  | UAE 7 days/Week | OP | GN | 01 | OP-GN-01 |
| OP-GN-02 |  | Receive Of Local Authorities Approval On Design | milestone | 0d | 2013-11-27 | 2013-11-27 |  | 766d | 740d |  | UAE 7 days/Week | OP | GN | 02 | OP-GN-02 |
|  | 4 | **AUTHORITY SUBMISSIONS & APPROVALS** |  |  | 2015-04-03 | 2015-12-06 |  |  |  |  |  |  |  |  |  |
|  | 1 | **AUTHORITY SUBMISSIONS** |  |  | 2015-04-03 | 2015-10-26 |  |  |  |  |  |  |  |  |  |
|  | 1 | **DEWA (ELECTRICAL), LV SECTION** |  |  | 2015-04-03 | 2015-07-09 |  |  |  |  |  |  |  |  |  |
| OP-AS-01 |  | Submission Of Electrical Shop Drawings To Consultant |  | 60d | 2015-04-03 | 2015-06-01 | OP-GN-01, OP-PR-02 | 26d | 0d | as late as possible | UAE 7 days/Week | OP | AS | 01 | OP-AS-01 |
| OP-AS-02 |  | Submit Electrical Shop Drawings To DEWA |  | 24d | 2015-06-16 | 2015-07-09 | OP-AA-01 | 26d | 0d | as late as possible | UAE 7 days/Week | OP | AS | 02 | OP-AS-02 |
|  | 2 | **DEWA (ELECTRICAL), HV SECTION (BY OTHERS)** |  |  | 2015-06-29 | 2015-07-15 |  |  |  |  |  |  |  |  |  |
| OP-AS-03 |  | Submission Of Material Submittal To DEWA (Transformer, Hv Switchgear & Dc Battery Charger) |  | 17d | 2015-06-29 | 2015-07-15 | OP-GN-01 | 26d | 0d | as late as possible | UAE 7 days/Week | OP | AS | 03 | OP-AS-03 |
|  | 3 | **ETISALAT(TELEPHONE)** |  |  | 2015-05-22 | 2015-10-26 |  |  |  |  |  |  |  |  |  |
| OP-AS-04 |  | Appoint Structural Cabling Subcontractor |  | 21d | 2015-05-22 | 2015-06-11 | OP-GN-01 | 26d | 0d | as late as possible | UAE 7 days/Week | OP | AS | 04 | OP-AS-04 |
| OP-AS-05 |  | Submission Of Telephone & Data Drawings To Consultant |  | 120d | 2015-06-12 | 2015-10-09 | OP-AS-04 | 26d | 0d | as late as possible | UAE 7 days/Week | OP | AS | 05 | OP-AS-05 |
| OP-AS-06 |  | Submission Of Telephone & Data Drawings To Etisalat |  | 6d | 2015-10-21 | 2015-10-26 | OP-AA-07 | 26d | 0d | as late as possible | UAE 7 days/Week | OP | AS | 06 | OP-AS-06 |
|  | 4 | **CIVIL DEFENSE** |  |  | 2015-05-07 | 2015-08-24 |  |  |  |  |  |  |  |  |  |
| OP-AS-07 |  | Submission Of Drawings (Fa, Ff, Cb) To Consultant |  | 90d | 2015-05-07 | 2015-08-04 | OP-GN-01 | 26d | 0d | as late as possible | UAE 7 days/Week | OP | AS | 07 | OP-AS-07 |
| OP-AS-08 |  | Submit Shop Drawings To Civil Defense (Fa, Ff, Cb) |  | 6d | 2015-08-19 | 2015-08-24 | OP-AA-10 | 26d | 0d | as late as possible | UAE 7 days/Week | OP | AS | 08 | OP-AS-08 |
|  | 5 | **DEWA (WATER SUPPLY)** |  |  | 2015-07-05 | 2015-07-18 |  |  |  |  |  |  |  |  |  |
| OP-AS-09 |  | Submission Of Shop Drawings To DEWA - Water Division |  | 14d | 2015-07-05 | 2015-07-18 | OP-AS-02 SS+12d | 26d | 0d | as late as possible | UAE 7 days/Week | OP | AS | 09 | OP-AS-09 |

| ID | WBS | Activity | Duration | Start | Finish | Predecessors | Total float | Free float | Constraint | Calendar | user_text1 | user_text2 | user_text4 | user_text6 |
| --- | --- | --- | --- | --- | --- | --- | --- | --- | --- | --- | --- | --- | --- | --- |
|  | 6 | **ADSSC (DRAINAGE)** |  | 2015-07-31 | 2015-08-13 |  |  |  |  |  |  |  |  |  |
| OP-AS-10 |  | Submission Of Shop Drawings To DEWA - Drainage Division | 14d | 2015-07-31 | 2015-08-13 | OP-AS-02 SS+45d | 26d | 0d | as late as possible | UAE 7 days/Week | OP | AS | 10 | OP-AS-10 |
|  | 2 | **AUTHORITY APPROVALS** |  | 2015-04-17 | 2015-12-06 |  |  |  |  |  |  |  |  |  |
|  | 1 | **DEWA (ELECTRICAL), LV SECTION** |  | 2015-04-17 | 2015-12-06 |  |  |  |  |  |  |  |  |  |
| OP-AA-01 |  | Approval Of Electrical Shop Drawings By Consultant | 60d | 2015-04-17 | 2015-06-15 | OP-AS-01 SS+14d, OP-AS-01 FF+14d | 26d | 0d | as late as possible | UAE 7 days/Week | OP | AA | 01 | OP-AA-01 |
| OP-AA-02 |  | Approval Electrical Shop Drawings By DEWA | 25d | 2015-07-10 | 2015-08-03 | OP-AS-02 | 26d | 0d | as late as possible | UAE 7 days/Week | OP | AA | 02 | OP-AA-02 |
| OP-AA-03 |  | Order & Delivery Of L.V. Switchgear | 100d | 2015-08-04 | 2015-11-11 | OP-AA-02 | 26d | 0d | as late as possible | UAE 7 days/Week | OP | AA | 03 | OP-AA-03 |
| OP-AA-04 |  | Installation & Termination Of L.V. Switchgear | 85d | 2015-09-13 | 2015-12-06 | OP-AA-03 SS+40d, OP-AA-03 FF | 26d | 0d | as late as possible | UAE 7 days/Week | OP | AA | 04 | OP-AA-04 |
|  | 2 | **DEWA (ELECTRICAL), HV SECTION** |  | 2015-08-15 | 2015-12-06 |  |  |  |  |  |  |  |  |  |
| OP-AA-05 |  | Approval Of Submittal By DEWA (Transformer, Hv Switchgear & Dc Battery Charger) | 24d | 2015-08-15 | 2015-09-07 | OP-AS-03 FS+30d | 26d | 0d | as late as possible | UAE 7 days/Week | OP | AA | 05 | OP-AA-05 |
| OP-AA-06 |  | Order & Delivery Of Materials (Transformer, Hv Switchgear & Dc Battery Charger) | 90d | 2015-09-08 | 2015-12-06 | OP-AA-05 | 26d | 0d | as late as possible | UAE 7 days/Week | OP | AA | 06 | OP-AA-06 |
|  | 3 | **ETISALAT(TELEPHONE)** |  | 2015-07-23 | 2015-12-06 |  |  |  |  |  |  |  |  |  |
| OP-AA-07 |  | Approval Of Telephone & Data Drawings By Consultant | 90d | 2015-07-23 | 2015-10-20 | OP-AS-05 SS+14d, OP-AS-05 FF+11d | 26d | 0d | as late as possible | UAE 7 days/Week | OP | AA | 07 | OP-AA-07 |
| OP-AA-08 |  | Approval Of Telephone & Data Drawings By Etisalat | 14d | 2015-10-27 | 2015-11-09 | OP-AS-06 | 26d | 0d | as late as possible | UAE 7 days/Week | OP | AA | 08 | OP-AA-08 |
| OP-AA-09 |  | Installation Of Telephone & Data System (As Per Scope In Contract) | 27d | 2015-11-10 | 2015-12-06 | OP-AA-08 | 26d | 0d | as late as possible | UAE 7 days/Week | OP | AA | 09 | OP-AA-09 |
|  | 4 | **CIVIL DEFENSE** |  | 2015-05-21 | 2015-12-06 |  |  |  |  |  |  |  |  |  |
| OP-AA-10 |  | Approval Of Drawings (Fa, Ff, Cb) By Consultant | 90d | 2015-05-21 | 2015-08-18 | OP-AS-07 SS+14d, OP-AS-07 FF+14d | 26d | 0d | as late as possible | UAE 7 days/Week | OP | AA | 10 | OP-AA-10 |
| OP-AA-11 |  | Approval Of Shop Drawings By Civil Defense (Fa, Ff, Cb) | 14d | 2015-08-25 | 2015-09-07 | OP-AS-08 | 26d | 0d | as late as possible | UAE 7 days/Week | OP | AA | 11 | OP-AA-11 |
| OP-AA-12 |  | Installation Of FA, FF, CB Systems | 90d | 2015-09-08 | 2015-12-06 | OP-AA-11 | 26d | 0d | as late as possible | UAE 7 days/Week | OP | AA | 12 | OP-AA-12 |
|  | 5 | **DEWA (WATER SUPPLY)** |  | 2015-07-19 | 2015-12-06 |  |  |  |  |  |  |  |  |  |
| OP-AA-13 |  | Approval Of Shop Drawings By DEWA - Water Division | 21d | 2015-07-19 | 2015-08-08 | OP-AS-09 | 26d | 0d | as late as possible | UAE 7 days/Week | OP | AA | 13 | OP-AA-13 |
| OP-AA-14 |  | Installation Of Water Supply System | 120d | 2015-08-09 | 2015-12-06 | OP-AA-13 | 26d | 0d | as late as possible | UAE 7 days/Week | OP | AA | 14 | OP-AA-14 |
|  | 6 | **DEWA (DRAINAGE)** |  | 2015-08-14 | 2015-12-06 |  |  |  |  |  |  |  |  |  |
| OP-AA-15 |  | Approval Of Shop Drawings By DEWA | 21d | 2015-08-14 | 2015-09-03 | OP-AS-10 | 26d | 0d | as late as possible | UAE 7 days/Week | OP | AA | 15 | OP-AA-15 |
| OP-AA-16 |  | Installation Of Drainage System | 90d | 2015-09-08 | 2015-12-06 | OP-AA-15 FS+4d | 26d | 0d | as late as possible | UAE 7 days/Week | OP | AA | 16 | OP-AA-16 |

| ID | WBS | Activity | Type | Duration | Start | Finish | Predecessors | Total float | Free float | Constraint | Calendar | user_text1 | user_text2 | user_text4 | user_text6 |
| --- | --- | --- | --- | --- | --- | --- | --- | --- | --- | --- | --- | --- | --- | --- | --- |
|  | 2 | **ENGINEERING** |  |  |  |  |  |  |  |  |  |  |  |  |  |
|  | 5 | **PROVISIONAL SUM ITEMS** |  |  | 2013-11-27 | 2015-06-09 |  |  |  |  |  |  |  |  |  |
|  | 1 | **CONTRACT AWARD FROM CLIENT TO SUBCONTRACTOR / INSTRUCTION TO PROCEED** |  |  | 2013-11-27 | 2015-03-01 |  |  |  |  |  |  |  |  |  |
| OHD-FNPS-1000 |  | MEPD Installations | milestone | 0d | 2013-11-27 | 2013-11-27 |  | -8d | 0d | finish on 2013-11-18 | UAE 7 days/Week | OP | PS | 01 | OP-PS-01 |
| OHD-FNPS-1010 |  | Builder Works | milestone | 0d | 2014-01-12 | 2014-01-12 |  | 0d |  | finish on 2014-01-12 | UAE 7 days/Week | OP | PS | 04 | OP-PS-04 |
| OHD-FNPS-1020 |  | Hard Floor And Walls Finishes | milestone | 0d | 2014-01-17 | 2014-01-17 |  | 0d |  | finish on 2014-01-17 | UAE 7 days/Week | OP | PS | 03 | OP-PS-03 |
| OHD-FNPS-1030 |  | Elv Installation | milestone | 0d | 2014-01-22 | 2014-01-22 |  | 0d |  | finish on 2014-01-22 | UAE 7 days/Week | OP | PS | 02 | OP-PS-02 |
| OHD-FNPS-1040 |  | Structural Steel Works | milestone | 0d | 2014-03-05 | 2014-03-05 |  | 0d |  | finish on 2014-03-05 | UAE 7 days/Week | OP | PS | 06 | OP-PS-06 |
| OHD-FNPS-1050 |  | Landscaping And Irrigation | milestone | 0d | 2014-03-25 | 2014-03-25 |  | 0d |  | finish on 2014-03-25 | UAE 7 days/Week | OP | PS | 07 | OP-PS-07 |
| OHD-FNPS-1060 |  | Sundry Metal Works | milestone | 0d | 2014-07-16 | 2014-07-16 |  | 0d |  | finish on 2014-07-16 | UAE 7 days/Week | OP | PS | 08 | OP-PS-08 |
| OHD-FNPS-1070 |  | Lift Installation | milestone | 0d | 2014-09-02 | 2014-09-02 |  | 0d |  | finish on 2014-09-02 | UAE 7 days/Week | OP | PS | 09 | OP-PS-09 |
| OHD-FNPS-1080 |  | External Facade / Curtain Wall | milestone | 0d | 2014-09-12 | 2014-09-12 |  | 0d |  | finish on 2014-09-12 | UAE 7 days/Week | OP | PS | 14 | OP-PS-14 |
| OHD-FNPS-1090 |  | Shop Fitting And Specialized Finishes To The Auditorium | milestone | 0d | 2014-10-29 | 2014-10-29 |  | 0d |  | finish on 2014-10-29 | UAE 7 days/Week | OP | PS | 11 | OP-PS-11 |
| OHD-FNPS-1100 |  | Water Features | milestone | 0d | 2014-10-31 | 2014-10-31 |  | 0d |  | finish on 2014-10-31 | UAE 7 days/Week | OP | PS | 12 | OP-PS-12 |
| OHD-FNPS-1110 |  | Shop Fitting And Specialized Finishes To The Public Areas | milestone | 0d | 2014-11-01 | 2014-11-01 |  | 0d |  | finish on 2014-11-01 | UAE 7 days/Week | OP | PS | 13 | OP-PS-13 |
| OHD-FNPS-1120 |  | Acoustic Treatment | milestone | 0d | 2014-11-11 | 2014-11-11 |  | 0d |  | finish on 2014-11-11 | UAE 7 days/Week | OP | PS | 10 | OP-PS-10 |
| OHD-FNPS-1130 |  | Theatrical Equipment'S | milestone | 0d | 2014-12-03 | 2014-12-03 |  | 0d |  | finish on 2014-12-03 | UAE 7 days/Week | OP | PS | 15 | OP-PS-15 |
| OHD-FNPS-1140 |  | External Balustrades , Screens | milestone | 0d | 2014-12-11 | 2014-12-11 |  | 0d |  | finish on 2014-12-11 | UAE 7 days/Week | OP | PS | 16 | OP-PS-16 |
| OHD-FNPS-1150 |  | Shade Structures | milestone | 0d | 2014-12-11 | 2014-12-11 |  | 0d |  | finish on 2014-12-11 | UAE 7 days/Week | OP | PS | 17 | OP-PS-17 |
| OHD-FNPS-1160 |  | Roofing | milestone | 0d | 2014-12-11 | 2014-12-11 |  | 0d |  | finish on 2014-12-11 | UAE 7 days/Week | OP | PS | 18 | OP-PS-18 |
| OHD-FNPS-1170 |  | Paving And Road Ways | milestone | 0d | 2015-02-02 | 2015-02-02 |  | 0d |  | finish on 2015-02-02 | UAE 7 days/Week | OP | PS | 19 | OP-PS-19 |
| OHD-FNPS-1180 |  | Back Of House Joinery | milestone | 0d | 2015-03-01 | 2015-03-01 |  | 0d |  | finish on 2015-03-01 | UAE 7 days/Week | OP | PS | 05 | OP-PS-05 |
|  | 2 | **ENGINEERING AND PROCUREMENT/ DELIVERY OF PROVISIONAL SUMS** |  |  | 2013-11-27 | 2015-06-09 |  |  |  |  |  |  |  |  |  |
| OHD-EPPS-1000 |  | MEPD Installations |  | 80d | 2013-11-27 | 2014-02-14 | OHD-FNPS-1000 | 681.56d | 0d |  | UAE 7 days/Week | OP | PS | 20 | OP-PS-20 |
| OHD-EPPS-1010 |  | Hard Floor And Walls Finishes |  | 90d | 2014-01-18 | 2014-04-17 | OHD-FNPS-1020 | 474d | 0d |  | UAE 7 days/Week | OP | PS | 22 | OP-PS-22 |
| OHD-EPPS-1020 |  | Elv Installation |  | 90d | 2014-01-23 | 2014-04-22 | OHD-FNPS-1030 | 614.56d | 0d |  | UAE 7 days/Week | OP | PS | 21 | OP-PS-21 |
| OHD-EPPS-1030 |  | Structural Steel Works |  | 150d | 2014-03-06 | 2014-08-02 | OHD-FNPS-1040 | 349.22d | 0d |  | UAE 7 days/Week | OP | PS | 24 | OP-PS-24 |
| OHD-EPPS-1040 |  | Landscaping And Irrigation |  | 90d | 2014-03-26 | 2014-06-23 | OHD-FNPS-1050 | 397d | 0d |  | UAE 7 days/Week | OP | PS | 25 | OP-PS-25 |
| OHD-EPPS-1050 |  | Sundry Metal Works |  | 120d | 2014-07-17 | 2014-11-13 | OHD-FNPS-1060 | 314d | 0d |  | UAE 7 days/Week | OP | PS | 26 | OP-PS-26 |
| OHD-EPPS-1060 |  | Lift Installation |  | 180d | 2014-09-03 | 2015-03-01 | OHD-FNPS-1070 | 116d | 0d |  | UAE 7 days/Week | OP | PS | 27 | OP-PS-27 |
| OHD-EPPS-1070 |  | External Facade / Curtain Wall |  | 180d | 2014-09-13 | 2015-03-11 | OHD-FNPS-1080 | 96d | 0d |  | UAE 7 days/Week | OP | PS | 32 | OP-PS-32 |
| OHD-EPPS-1080 |  | Shop Fitting And Specialized Finishes To The Auditorium |  | 180d | 2014-10-30 | 2015-04-27 | OHD-FNPS-1090 | 149d | 0d |  | UAE 7 days/Week | OP | PS | 29 | OP-PS-29 |
| OHD-EPPS-1090 |  | Water Features |  | 120d | 2014-11-01 | 2015-02-28 | OHD-FNPS-1100 | 187d | 0d |  | UAE 7 days/Week | OP | PS | 30 | OP-PS-30 |
| OHD-EPPS-1100 |  | Shop Fitting And Specialized Finishes To The Public Areas |  | 180d | 2014-11-02 | 2015-04-30 | OHD-FNPS-1110 | 44.89d | 0d |  | UAE 7 days/Week | OP | PS | 31 | OP-PS-31 |
| OHD-EPPS-1110 |  | Acoustic Treatment |  | 120d | 2014-11-12 | 2015-03-11 | OHD-FNPS-1120 | 291.56d | 0d |  | UAE 7 days/Week | OP | PS | 28 | OP-PS-28 |
| OHD-EPPS-1120 |  | Theatrical Equipment'S |  | 180d | 2014-12-04 | 2015-06-01 | OHD-FNPS-1130 | 209.56d | 0d |  | UAE 7 days/Week | OP | PS | 33 | OP-PS-33 |
| OHD-EPPS-1130 |  | External Balustrades , Screens |  | 160d | 2014-12-12 | 2015-05-20 | OHD-FNPS-1140 | 26d | 0d |  | UAE 7 days/Week | OP | PS | 34 | OP-PS-34 |
| OHD-EPPS-1140 |  | Shade Structures |  | 160d | 2014-12-12 | 2015-05-20 | OHD-FNPS-1150 | 26d | 0d |  | UAE 7 days/Week | OP | PS | 35 | OP-PS-35 |
| OHD-EPPS-1150 |  | Roofing |  | 180d | 2014-12-12 | 2015-06-09 | OHD-FNPS-1160 | 122.67d | 0d |  | UAE 7 days/Week | OP | PS | 36 | OP-PS-36 |
| OHD-EPPS-1160 |  | Paving And Road Ways |  | 90d | 2015-02-03 | 2015-05-03 | OHD-FNPS-1170 | 238.56d | 0d |  | UAE 7 days/Week | OP | PS | 37 | OP-PS-37 |
| OHD-EPPS-1170 |  | Back Of House Joinery |  | 90d | 2015-03-02 | 2015-05-30 | OHD-FNPS-1180 | 116d | 0d |  | UAE 7 days/Week | OP | PS | 23 | OP-PS-23 |

| ID | WBS | Activity | Type | Duration | Start | Finish | Predecessors | Total float | Free float | Calendar | Resources | user_text1 | user_text2 | user_text4 | user_text6 |
| --- | --- | --- | --- | --- | --- | --- | --- | --- | --- | --- | --- | --- | --- | --- | --- |
|  | 3 | **START CONSTRUCTION WORKS OF PROVISIONAL SUMS** |  |  | 2014-01-12 | 2015-06-09 |  |  |  |  |  |  |  |  |  |
| OHD-STPS-1000 |  | Builder Works | milestone | 0d | 2014-01-12 | 2014-01-12 | OHD-FNPS-1010, OHD-FNPS-1010 SS | 714.56d | 0d | UAE 7 days/Week |  | OP | PS | 39 | OP-PS-39 |
| OHD-STPS-1010 |  | MEPD Installations | milestone | 0d | 2014-02-14 | 2014-02-14 | OHD-EPPS-1000 | 681.56d | 0d | UAE 7 days/Week |  | OP | PS | 38 | OP-PS-38 |
| OHD-STPS-1020 |  | Hard Floor And Walls Finishes | milestone | 0d | 2014-04-17 | 2014-04-17 | OHD-EPPS-1010 | 474d | 0d | UAE 7 days/Week |  | OP | PS | 41 | OP-PS-41 |
| OHD-STPS-1030 |  | Elv Installation | milestone | 0d | 2014-04-22 | 2014-04-22 | OHD-EPPS-1020 | 614.56d | 0d | UAE 7 days/Week |  | OP | PS | 40 | OP-PS-40 |
| OHD-STPS-1040 |  | Landscaping And Irrigation | milestone | 0d | 2014-06-23 | 2014-06-23 | OHD-EPPS-1040 | 397d | 0d | UAE 7 days/Week |  | OP | PS | 43 | OP-PS-43 |
| OHD-STPS-1050 |  | Structural Steel Works | milestone | 0d | 2014-08-02 | 2014-08-02 | OHD-EPPS-1030 | 349.22d | 0d | UAE 7 days/Week |  | OP | PS | 44 | OP-PS-44 |
| OHD-STPS-1060 |  | Sundry Metal Works | milestone | 0d | 2014-11-13 | 2014-11-13 | OHD-EPPS-1050 | 314d | 0d | UAE 7 days/Week |  | OP | PS | 45 | OP-PS-45 |
| OHD-STPS-1070 |  | Water Features | milestone | 0d | 2015-02-28 | 2015-02-28 | OHD-EPPS-1090 | 187d | 0d | UAE 7 days/Week |  | OP | PS | 48 | OP-PS-48 |
| OHD-STPS-1080 |  | Lift Installation | milestone | 0d | 2015-03-01 | 2015-03-01 | OHD-EPPS-1060 | 116d | 0d | UAE 7 days/Week |  | OP | PS | 47 | OP-PS-47 |
| OHD-STPS-1090 |  | External Facade / Curtain Wall | milestone | 0d | 2015-03-11 | 2015-03-11 | OHD-EPPS-1070 | 96d | 0d | UAE 7 days/Week |  | OP | PS | 52 | OP-PS-52 |
| OHD-STPS-1100 |  | Acoustic Treatment | milestone | 0d | 2015-03-11 | 2015-03-11 | OHD-EPPS-1110 | 291.56d | 0d | UAE 7 days/Week |  | OP | PS | 46 | OP-PS-46 |
| OHD-STPS-1110 |  | Shop Fitting And Specialized Finishes To The Auditorium | milestone | 0d | 2015-04-27 | 2015-04-27 | OHD-EPPS-1080 | 149d | 0d | UAE 7 days/Week |  | OP | PS | 49 | OP-PS-49 |
| OHD-STPS-1120 |  | Shop Fitting And Specialized Finishes To The Public Areas | milestone | 0d | 2015-04-30 | 2015-04-30 | OHD-EPPS-1100 | 44.89d | 0d | UAE 7 days/Week |  | OP | PS | 50 | OP-PS-50 |
| OHD-STPS-1130 |  | Paving And Road Ways | milestone | 0d | 2015-05-03 | 2015-05-03 | OHD-EPPS-1160 | 238.56d | 0d | UAE 7 days/Week |  | OP | PS | 51 | OP-PS-51 |
| OHD-STPS-1140 |  | External Balustrades , Screens | milestone | 0d | 2015-05-20 | 2015-05-20 | OHD-EPPS-1130 | 26d | 0d | UAE 7 days/Week |  | OP | PS | 54 | OP-PS-54 |
| OHD-STPS-1150 |  | Shade Structures | milestone | 0d | 2015-05-20 | 2015-05-20 | OHD-EPPS-1140 | 26d | 0d | UAE 7 days/Week |  | OP | PS | 55 | OP-PS-55 |
| OHD-STPS-1160 |  | Back Of House Joinery | milestone | 0d | 2015-05-30 | 2015-05-30 | OHD-EPPS-1170 | 116d | 0d | UAE 7 days/Week |  | OP | PS | 42 | OP-PS-42 |
| OHD-STPS-1170 |  | Theatrical Equipment'S | milestone | 0d | 2015-06-01 | 2015-06-01 | OHD-EPPS-1120 | 209.56d | 0d | UAE 7 days/Week |  | OP | PS | 53 | OP-PS-53 |
| OHD-STPS-1180 |  | Roofing | milestone | 0d | 2015-06-09 | 2015-06-09 | OHD-EPPS-1150 | 122.67d | 0d | UAE 7 days/Week |  | OP | PS | 56 | OP-PS-56 |
|  | 6 | **PROCUREMENT** |  |  | 2013-11-27 | 2013-12-30 |  |  |  |  |  |  |  |  |  |
| OHD-CLPR-1000 |  | Steel Reinforcement |  | 33.33d | 2013-11-27 | 2013-12-30 |  | 732.67d | 706.67d |  |  |  |  |  |  |
| OHD-CLPR-1010 |  | Formwork |  | 33.33d | 2013-11-27 | 2013-12-30 |  | 732.67d | 706.67d |  |  |  |  |  |  |
| OHD-CLPR-1020 |  | Concrete |  | 33.33d | 2013-11-27 | 2013-12-30 |  | 732.67d | 706.67d |  |  |  |  |  |  |
| OHD-CLPR-1030 |  | Block |  | 33.33d | 2013-11-27 | 2013-12-30 |  | 732.67d | 706.67d |  |  |  |  |  |  |
| OHD-CLPR-1040 |  | Anti Termite |  | 33.33d | 2013-11-27 | 2013-12-30 |  | 732.67d | 706.67d |  |  |  |  |  |  |
| OHD-CLPR-1050 |  | Expantion Joints - OPERA HOUSE |  | 33.33d | 2013-11-27 | 2013-12-30 |  | 732.67d | 706.67d |  |  |  |  |  |  |
| OHD-CLPR-1060 |  | Waterproofing |  | 33.33d | 2013-11-27 | 2013-12-30 |  | 732.67d | 706.67d |  |  |  |  |  |  |
| OHD-CLPR-1070 |  | Screed |  | 33.33d | 2013-11-27 | 2013-12-30 |  | 732.67d | 706.67d |  |  |  |  |  |  |
| OHD-CLPR-1080 |  | Plaster |  | 33.33d | 2013-11-27 | 2013-12-30 |  | 732.67d | 706.67d |  |  |  |  |  |  |
| OHD-CLPR-1090 |  | False Ceiling |  | 33.33d | 2013-11-27 | 2013-12-30 |  | 732.67d | 706.67d |  | False Ceiling; TECH-False Ceiling; Helper-False Ceiling |  |  |  |  |
| OHD-CLPR-1100 |  | Partitions - OPERA HOUSE |  | 33.33d | 2013-11-27 | 2013-12-30 |  | 732.67d | 706.67d |  |  |  |  |  |  |
| OHD-CLPR-1110 |  | Granite Tiles |  | 33.33d | 2013-11-27 | 2013-12-30 |  | 732.67d | 706.67d |  |  |  |  |  |  |
| OHD-CLPR-1120 |  | Ceramic Tiles |  | 33.33d | 2013-11-27 | 2013-12-30 |  | 732.67d | 706.67d |  |  |  |  |  |  |
| OHD-CLPR-1130 |  | Vinyle Tile |  | 33.33d | 2013-11-27 | 2013-12-30 |  | 732.67d | 706.67d |  |  |  |  |  |  |
| OHD-CLPR-1140 |  | Shotcrete |  | 33.33d | 2013-11-27 | 2013-12-30 |  | 732.67d | 706.67d |  | Shotcrete |  |  |  |  |

| ID | WBS | Activity | Duration | Start | Finish | Predecessors | Total float | Free float | Calendar | user_text1 | user_text2 | user_text4 | user_text6 |
| --- | --- | --- | --- | --- | --- | --- | --- | --- | --- | --- | --- | --- | --- |
|  | 3 | **CONSTRUCTION** |  | 2013-11-27 | 2015-12-06 |  |  |  |  |  |  |  |  |
|  | 5 | **PROVISIONAL SUM ITEMS - CONSTRUCTION** |  | 2014-01-13 | 2015-12-06 |  |  |  |  |  |  |  |  |
|  | 1 | **GENERAL** |  | 2014-01-13 | 2015-09-07 |  |  |  |  |  |  |  |  |
| OHD-CSPS-1000 |  | Builder Works | 4.44d | 2014-01-13 | 2014-01-17 | OHD-STPS-1000 | 714.56d | 688.56d | UAE 7 days/Week | OP | PS | 39 | OP-PS-39 |
| OHD-CSPS-1010 |  | MEPD Installations | 4.44d | 2014-02-15 | 2014-02-19 | OHD-STPS-1010 | 681.56d | 655.56d | UAE 7 days/Week | OP | PS | 38 | OP-PS-38 |
| OHD-CSPS-1030 |  | Elv Installation | 4.44d | 2014-04-23 | 2014-04-27 | OHD-STPS-1030 | 614.56d | 588.56d | UAE 7 days/Week | OP | PS | 40 | OP-PS-40 |
| OHD-CSPS-1050 |  | Structural Steel Works | 167.78d | 2014-08-03 | 2015-01-17 | OHD-STPS-1050 | 349.22d | 323.22d | UAE 7 days/Week | OP | PS | 44 | OP-PS-44 |
| OHD-CSPS-1080 |  | Lift Installation | 190d | 2015-03-02 | 2015-09-07 | OHD-STPS-1080 | 116d | 90d | UAE 7 days/Week | OP | PS | 47 | OP-PS-47 |
| OHD-CSPS-1100 |  | Acoustic Treatment | 4.44d | 2015-03-12 | 2015-03-16 | OHD-STPS-1100 | 291.56d | 265.56d | UAE 7 days/Week | OP | PS | 46 | OP-PS-46 |
| OHD-CSPS-1170 |  | Theatrical Equipment'S | 4.44d | 2015-06-02 | 2015-06-06 | OHD-STPS-1170 | 209.56d | 183.56d | UAE 7 days/Week | OP | PS | 53 | OP-PS-53 |
|  | 2 | **INTERNAL FINISHES** |  | 2014-04-18 | 2015-11-18 |  |  |  |  |  |  |  |  |
| OHD-CSPS-1020 |  | Hard Floor And Walls Finishes | 150d | 2014-04-18 | 2014-09-14 | OHD-STPS-1020 | 474d | 448d | UAE 7 days/Week | OP | PS | 41 | OP-PS-41 |
| OHD-CSPS-1060 |  | Sundry Metal Works | 100d | 2014-11-14 | 2015-02-21 | OHD-STPS-1060 | 314d | 288d | UAE 7 days/Week | OP | PS | 45 | OP-PS-45 |
| OHD-CSPS-1110 |  | Shop Fitting And Specialized Finishes To The Auditorium | 100d | 2015-04-28 | 2015-08-05 | OHD-STPS-1110 | 149d | 123d | UAE 7 days/Week | OP | PS | 49 | OP-PS-49 |
| OHD-CSPS-1120 |  | Shop Fitting And Specialized Finishes To The Public Areas | 201.11d | 2015-05-01 | 2015-11-18 | OHD-STPS-1120 | 44.89d | 18.89d | UAE 7 days/Week | OP | PS | 50 | OP-PS-50 |
| OHD-CSPS-1160 |  | Back Of House Joinery | 100d | 2015-05-31 | 2015-09-07 | OHD-STPS-1160 | 116d | 90d | UAE 7 days/Week | OP | PS | 42 | OP-PS-42 |
|  | 10 | **EXTERNAL FACADE AND ROOF WORKS FOR OPERA HOUSE** |  | 2015-03-12 | 2015-12-06 |  |  |  |  |  |  |  |  |
| OHD-CSPS-1090 |  | External Facade / Curtain Wall | 200d | 2015-03-12 | 2015-09-27 | OHD-STPS-1090 | 96d | 70d | UAE 7 days/Week | OP | PS | 52 | OP-PS-52 |
| OHD-CSPS-1140 |  | External Balustrades , Screens | 200d | 2015-05-21 | 2015-12-06 | OHD-STPS-1140 | 26d | 0d | UAE 7 days/Week | OP | PS | 54 | OP-PS-54 |
| OHD-CSPS-1150 |  | Shade Structures | 200d | 2015-05-21 | 2015-12-06 | OHD-STPS-1150 | 26d | 0d | UAE 7 days/Week | OP | PS | 55 | OP-PS-55 |
| OHD-CSPS-1180 |  | Roofing | 83.33d | 2015-06-10 | 2015-09-01 | OHD-STPS-1180 | 122.67d | 96.67d | UAE 7 days/Week | OP | PS | 56 | OP-PS-56 |
|  | 3 | **EXTERNAL WORKS AND LAND SCAPING/ INCLUDING ISLAND PARK DEVELOPMENT-1** |  | 2014-06-24 | 2015-06-28 |  |  |  |  |  |  |  |  |
| OHD-CSPS-1040 |  | Landscaping And Irrigation | 160d | 2014-06-24 | 2014-11-30 | OHD-STPS-1040 | 397d | 371d | UAE 7 days/Week | OP | PS | 43 | OP-PS-43 |
| OHD-CSPS-1070 |  | Water Features | 120d | 2015-03-01 | 2015-06-28 | OHD-STPS-1070 | 187d | 161d | UAE 7 days/Week | OP | PS | 48 | OP-PS-48 |
| OHD-CSPS-1130 |  | Paving And Road Ways | 4.44d | 2015-05-04 | 2015-05-08 | OHD-STPS-1130 | 238.56d | 212.56d | UAE 7 days/Week | OP | PS | 51 | OP-PS-51 |

| ID | WBS | Activity | Duration | Start | Finish | Predecessors | Total float | Free float | Resources |
| --- | --- | --- | --- | --- | --- | --- | --- | --- | --- |
|  | 1 | **PLAZA - PARKING** |  | 2013-11-27 | 2015-01-18 |  |  |  |  |
|  | 7 | **STRUCTURAL** |  | 2013-11-27 | 2014-12-06 |  |  |  |  |
|  | 1 | **BASEMENT LEVEL 4 @ SSL -10.95 M - RAFT SLAB** |  | 2013-11-27 | 2014-02-13 |  |  |  |  |
|  | 1 | **PART E** |  | 2013-11-27 | 2014-02-13 |  |  |  |  |
|  | 1 | **PART E1 STAGE 11** |  | 2013-11-27 | 2014-02-13 |  |  |  |  |
| OHD-CSS-B4-E1-1000 |  | Shotcrete | 7.78d | 2013-11-27 | 2013-12-04 | OHD-CSS-B4-E1-1010 SS | 348.22d | 0d | Shotcrete [1180 M2]; Mason-Concrete [1000 h] |
| OHD-CSS-B4-E1-1010 |  | Site Preparation | 2.22d | 2013-11-27 | 2013-11-29 |  | 348.22d | 0d | Excavation [991 M3]; Excavator [40 h] |
| OHD-CSS-B4-E1-1020 |  | Compaction & Anti -termite under Blinding | 1.11d | 2013-12-04 | 2013-12-05 | OHD-CSS-B4-E1-1010, OHD-CSS-B4-E1-1000 | 348.22d | 0d | Anti -termite [3125.75 M2]; TECH-Anti -termite [50 h] |
| OHD-CSS-B4-E1-1030 |  | Casting of Blinding | 11.11d | 2013-12-05 | 2013-12-16 | OHD-CSS-B4-E1-1020 | 348.22d | 0d | Blinding [223 M3]; Mason-Concrete [468 h]; Helper-Blinding [200.7 h] |
| OHD-CSS-B4-E1-1040 |  | Water Proofing System | 11.11d | 2013-12-17 | 2013-12-28 | OHD-CSS-B4-E1-1030 | 348.22d | 0d | TECH-Water Proofing [605 h]; Helper-Water Proofing [259 h]; Water Proofing [8645.75 M2] |
| OHD-CSS-B4-E1-1050 |  | MEP Under Ground Service | 5.56d | 2013-12-28 | 2014-01-02 | OHD-CSS-B4-E1-1040 | 348.22d | 0d | MEP Mnhrs [250 h] |
| OHD-CSS-B4-E1-1060 |  | Pile Head treatments | 3.33d | 2014-01-02 | 2014-01-05 | OHD-CSS-B4-E1-1050 | 348.22d | 0d | Pile [25 No]; TECH-Water Proofing [48 h] |
| OHD-CSS-B4-E1-1070 |  | Protection Screed | 1.11d | 2014-01-06 | 2014-01-07 | OHD-CSS-B4-E1-1060 | 348.22d | 0d | Screed [148.67 M2]; Mason-Concrete [416 h]; Helper-Screed [178.4 h] |
| OHD-CSS-B4-E1-1080 |  | Steel Reinforcement | 23.33d | 2014-01-07 | 2014-01-30 | OHD-CSS-B4-E1-1070 | 348.22d | 0d | Steel Reinforcement [251.19 Ton]; Steel Fixer [6280 h]; Helper-Steel Fixer [6279.72 h] |
| OHD-CSS-B4-E1-1090 |  | Shuttering For Slab - Formwork | 13.33d | 2014-01-30 | 2014-02-12 | OHD-CSS-B4-E1-1080 | 348.22d | 0d | Formwork [1218.24 M2]; Carpenter [3581.63 h]; Helper-Carpenter [1534.99 h] |
| OHD-CSS-B4-E1-1100 |  | Casting of Slab | 1.11d | 2014-02-12 | 2014-02-13 | OHD-CSS-B4-E1-1090 | 348.22d | 0d | Concrete [1800 M3]; Mason-Concrete [3600 h]; Helper-Concrete [1543 h] |
|  | 2 | **PART E2 STAGE 12** |  | 2013-11-27 | 2014-01-30 |  |  |  |  |
| OHD-CSS-B4-E2-1000 |  | Shotcrete | 1.11d | 2013-11-27 | 2013-11-28 | OHD-CSS-B4-E2-1010 SS | 764.89d | 738.89d | Shotcrete [1180 M2]; Mason-Concrete [1000 h] |
| OHD-CSS-B4-E2-1010 |  | Site Preparation | 2.22d | 2013-11-27 | 2013-11-29 |  | 431.56d | 0d | Excavation [991 M3]; Excavator [40 h] |
| OHD-CSS-B4-E2-1020 |  | Compaction & Anti -termite under Blinding | 1.11d | 2013-11-29 | 2013-11-30 | OHD-CSS-B4-E2-1010 | 431.56d | 0d | Anti -termite [3125.75 M2]; TECH-Anti -termite [50 h] |
| OHD-CSS-B4-E2-1030 |  | Casting of Blinding | 1.11d | 2013-11-30 | 2013-12-01 | OHD-CSS-B4-E2-1020 | 431.56d | 0d | Blinding [223 M3]; Mason-Concrete [468 h]; Helper-Blinding [200.7 h] |
| OHD-CSS-B4-E2-1040 |  | Water Proofing System | 11.11d | 2013-12-01 | 2013-12-12 | OHD-CSS-B4-E2-1030 | 431.56d | 0d | TECH-Water Proofing [605 h]; Helper-Water Proofing [259 h]; Water Proofing [8645.75 M2] |
| OHD-CSS-B4-E2-1050 |  | MEP Under Ground Service | 5.56d | 2013-12-12 | 2013-12-18 | OHD-CSS-B4-E2-1040 | 431.56d | 0d | MEP Mnhrs [250 h] |
| OHD-CSS-B4-E2-1060 |  | Pile Head treatments | 2.22d | 2013-12-18 | 2013-12-20 | OHD-CSS-B4-E2-1050 | 431.56d | 0d | Pile [25 No]; TECH-Water Proofing [36 h] |
| OHD-CSS-B4-E2-1070 |  | Protection Screed | 1.11d | 2013-12-20 | 2013-12-21 | OHD-CSS-B4-E2-1060 | 431.56d | 0d | Screed [148.67 M2]; Mason-Concrete [416 h]; Helper-Screed [178.4 h] |
| OHD-CSS-B4-E2-1080 |  | Steel Reinforcement | 24.44d | 2013-12-21 | 2014-01-14 | OHD-CSS-B4-E2-1070 | 431.56d | 0d | Steel Reinforcement [253.28 Ton]; Steel Fixer [6332 h]; Helper-Steel Fixer [6332.05 h] |
| OHD-CSS-B4-E2-1090 |  | Shuttering For Slab - Formwork | 14.44d | 2014-01-14 | 2014-01-29 | OHD-CSS-B4-E2-1080 | 431.56d | 0d | Formwork [1363.27 M2]; Carpenter [4008.02 h]; Helper-Carpenter [1717.72 h] |
| OHD-CSS-B4-E2-1100 |  | Casting of Slab | 1.11d | 2014-01-29 | 2014-01-30 | OHD-CSS-B4-E2-1090 | 431.56d | 0d | Concrete [1815 M3]; Mason-Concrete [3630 h]; Helper-Concrete [1556 h] |

| ID | WBS | Activity | Duration | Start | Finish | Predecessors | Total float | Free float | Resources |
| --- | --- | --- | --- | --- | --- | --- | --- | --- | --- |
|  | 2 | **PART F** |  | 2013-11-27 | 2014-01-27 |  |  |  |  |
|  | 1 | **PART F1 STAGE 10** |  | 2013-11-27 | 2014-01-21 |  |  |  |  |
| OHD-CSS-B4-F1-1000 |  | Shotcrete | 7.78d | 2013-11-27 | 2013-12-04 | OHD-CSS-B4-F1-1010 SS | 758.22d | 732.22d | Shotcrete [1180 M2]; Mason-Concrete [1000 h] |
| OHD-CSS-B4-F1-1010 |  | Site Preparation | 2.22d | 2013-11-27 | 2013-11-29 |  | 464.89d | 0d | Excavation [991 M3]; Excavator [40 h] |
| OHD-CSS-B4-F1-1020 |  | Compaction & Anti -termite under Blinding | 1.11d | 2013-11-29 | 2013-11-30 | OHD-CSS-B4-F1-1010 | 464.89d | 0d | Anti -termite [3125.75 M2]; TECH-Anti -termite [50 h] |
| OHD-CSS-B4-F1-1030 |  | Casting of Blinding | 1.11d | 2013-11-30 | 2013-12-01 | OHD-CSS-B4-F1-1020 | 464.89d | 0d | Blinding [223 M3]; Mason-Concrete [468 h]; Helper-Blinding [200.7 h] |
| OHD-CSS-B4-F1-1040 |  | Water Proofing System | 11.11d | 2013-12-01 | 2013-12-12 | OHD-CSS-B4-F1-1030 | 464.89d | 0d | TECH-Water Proofing [605 h]; Helper-Water Proofing [259 h]; Water Proofing [8645.75 M2] |
| OHD-CSS-B4-F1-1050 |  | MEP Under Ground Service | 5.56d | 2013-12-12 | 2013-12-18 | OHD-CSS-B4-F1-1040 | 464.89d | 0d | MEP Mnhrs [250 h] |
| OHD-CSS-B4-F1-1060 |  | Pile Head treatments | 2.22d | 2013-12-18 | 2013-12-20 | OHD-CSS-B4-F1-1050 | 464.89d | 0d | Pile [25 No]; TECH-Water Proofing [36 h] |
| OHD-CSS-B4-F1-1070 |  | Protection Screed | 1.11d | 2013-12-20 | 2013-12-21 | OHD-CSS-B4-F1-1060 | 464.89d | 0d | Screed [148.67 M2]; Mason-Concrete [416 h]; Helper-Screed [178.4 h] |
| OHD-CSS-B4-F1-1080 |  | Steel Reinforcement | 17.78d | 2013-12-21 | 2014-01-08 | OHD-CSS-B4-F1-1070 | 464.89d | 0d | Steel Reinforcement [207.79 Ton]; Steel Fixer [5195 h]; Helper-Steel Fixer [5194.72 h] |
| OHD-CSS-B4-F1-1090 |  | Shuttering For Slab - Formwork | 12.22d | 2014-01-08 | 2014-01-20 | OHD-CSS-B4-F1-1080 | 464.89d | 0d | Formwork [1160.23 M2]; Carpenter [3411.08 h]; Helper-Carpenter [1461.89 h] |
| OHD-CSS-B4-F1-1100 |  | Casting of Slab | 1.11d | 2014-01-20 | 2014-01-21 | OHD-CSS-B4-F1-1090 | 464.89d | 0d | Concrete [1489 M3]; Mason-Concrete [2978 h]; Helper-Concrete [1276 h] |
|  | 2 | **PART F2 STAGE 09** |  | 2013-11-27 | 2014-01-27 |  |  |  |  |
| OHD-CSS-B4-F2-1010 |  | Site Preparation | 2.22d | 2013-11-27 | 2013-11-29 |  | 432.67d | 0d | Excavation [991 M3]; Excavator [40 h] |
| OHD-CSS-B4-F2-1020 |  | Compaction & Anti -termite under Blinding | 1.11d | 2013-11-29 | 2013-11-30 | OHD-CSS-B4-F2-1010 | 432.67d | 0d | Anti -termite [3125.75 M2]; TECH-Anti -termite [50 h] |
| OHD-CSS-B4-F2-1030 |  | Casting of Blinding | 1.11d | 2013-11-30 | 2013-12-01 | OHD-CSS-B4-F2-1020 | 432.67d | 0d | Blinding [223 M3]; Mason-Concrete [468 h]; Helper-Blinding [200.7 h] |
| OHD-CSS-B4-F2-1040 |  | Water Proofing System | 11.11d | 2013-12-01 | 2013-12-12 | OHD-CSS-B4-F2-1030 | 432.67d | 0d | TECH-Water Proofing [605 h]; Helper-Water Proofing [259 h]; Water Proofing [8645.75 M2] |
| OHD-CSS-B4-F2-1050 |  | MEP Under Ground Service | 5.56d | 2013-12-12 | 2013-12-18 | OHD-CSS-B4-F2-1040 | 432.67d | 0d | MEP Mnhrs [250 h] |
| OHD-CSS-B4-F2-1060 |  | Pile Head treatments | 2.22d | 2013-12-18 | 2013-12-20 | OHD-CSS-B4-F2-1050 | 432.67d | 0d | Pile [25 No]; TECH-Water Proofing [36 h] |
| OHD-CSS-B4-F2-1070 |  | Protection Screed | 1.11d | 2013-12-20 | 2013-12-21 | OHD-CSS-B4-F2-1060 | 432.67d | 0d | Screed [148.67 M2]; Mason-Concrete [416 h]; Helper-Screed [178.4 h] |
| OHD-CSS-B4-F2-1080 |  | Steel Reinforcement | 21.11d | 2013-12-21 | 2014-01-11 | OHD-CSS-B4-F2-1070 | 432.67d | 0d | Steel Reinforcement [234.58 Ton]; Steel Fixer [5865 h]; Helper-Steel Fixer [5864.56 h] |
| OHD-CSS-B4-F2-1090 |  | Shuttering For Slab - Formwork | 14.44d | 2014-01-11 | 2014-01-25 | OHD-CSS-B4-F2-1080 | 432.67d | 0d | Formwork [1316.86 M2]; Carpenter [3871.58 h]; Helper-Carpenter [1659.25 h] |
| OHD-CSS-B4-F2-1100 |  | Casting of Slab | 1.11d | 2014-01-26 | 2014-01-27 | OHD-CSS-B4-F2-1090 | 432.67d | 0d | Concrete [1681 M3]; Mason-Concrete [3362 h]; Helper-Concrete [1441 h] |

| ID | WBS | Activity | Duration | Start | Finish | Predecessors | Total float | Free float | Resources |
| --- | --- | --- | --- | --- | --- | --- | --- | --- | --- |
|  | 2 | **BASEMENT LEVEL 3 @ SSL -07.45 M** |  | 2014-01-24 | 2014-05-05 |  |  |  |  |
|  | 1 | **PART E** |  | 2014-02-02 | 2014-05-05 |  |  |  |  |
|  | 1 | **PART E1** |  | 2014-02-17 | 2014-05-05 |  |  |  |  |
| OHD-CSS-B3-E1-1000 |  | Reinforcement for Columns & Wall | 7.78d | 2014-02-17 | 2014-02-24 | OHD-CSS-B4-E1-1100 FS+3.33d | 348.22d | 0d | Steel Reinforcement [56.8 Ton]; Steel Fixer [1420 h]; Helper-Steel Fixer [1419.91 h] |
| OHD-CSS-B3-E1-1010 |  | Shuttering for Verticals- Formwork | 13.33d | 2014-02-19 | 2014-03-04 | OHD-CSS-B3-E1-1000 SS+2.22d, OHD-CSS-B3-E1-1000 FF+3.33d | 348.22d | 0d | Formwork [1180.54 M2]; Carpenter [3470.77 h]; Helper-Carpenter [1487.47 h] |
| OHD-CSS-B3-E1-1020 |  | Casting of Columns & wall | 4.44d | 2014-03-02 | 2014-03-06 | OHD-CSS-B3-E1-1010 SS+3.33d, OHD-CSS-B3-E1-1010 FF+2.22d | 348.22d | 0d | Concrete [407 M3]; Mason-Concrete [611 h]; Helper-Concrete [262 h] |
| OHD-CSS-B3-E1-1030 |  | De-Shuttering of Columns & wall | 14.44d | 2014-03-05 | 2014-03-20 | OHD-CSS-B3-E1-1020 SS+3.33d, OHD-CSS-B3-E1-1020 FF+2.22d | 348.22d | 0d | Formwork [1310.12 M2]; Carpenter [3852 h]; Helper-Carpenter [1651 h] |
| OHD-CSS-B3-E1-1040 |  | Shuttering For Slab & Beams | 13.33d | 2014-03-09 | 2014-03-22 | OHD-CSS-B3-E1-1030 SS+3.33d, OHD-CSS-B3-E1-1030 FF+2.22d | 348.22d | 0d | Formwork [1218.24 M2]; Carpenter [3581.63 h]; Helper-Carpenter [1534.99 h] |
| OHD-CSS-B3-E1-1050 |  | Reinforcement for Slab & Beams | 7.78d | 2014-03-17 | 2014-03-24 | OHD-CSS-B3-E1-1040 SS+3.33d, OHD-CSS-B3-E1-1040 FF+2.22d | 348.22d | 0d | Steel Reinforcement [58.61 Ton]; Steel Fixer [1465 h]; Helper-Steel Fixer [1465.27 h] |
| OHD-CSS-B3-E1-1060 |  | MEP embedded works in Slab | 5.56d | 2014-03-21 | 2014-03-26 | OHD-CSS-B3-E1-1050 SS+3.33d, OHD-CSS-B3-E1-1050 FF+2.22d | 348.22d | 0d | MEP Mnhrs [250 h] |
| OHD-CSS-B3-E1-1070 |  | Casting of Slab & Beams | 1.11d | 2014-03-28 | 2014-03-29 | OHD-CSS-B3-E1-1060 SS+3.33d, OHD-CSS-B3-E1-1060 FF+2.22d | 348.22d | 0d | Concrete [420 M3]; Mason-Concrete [840 h]; Helper-Concrete [360 h] |
| OHD-CSS-B3-E1-1080 |  | De-Shuttering For Slab | 14.44d | 2014-04-21 | 2014-05-05 | OHD-CSS-B3-E1-1070 FS+23.33d | 560.44d | 0d | Formwork [1351.97 M2]; Carpenter [3975 h]; Helper-Carpenter [1703 h] |
|  | 2 | **PART E2** |  | 2014-02-02 | 2014-04-25 |  |  |  |  |
| OHD-CSS-B3-E2-1000 |  | Reinforcement for Columns & Wall | 8.89d | 2014-02-02 | 2014-02-11 | OHD-CSS-B4-E2-1100 FS+3.33d | 431.56d | 0d | Steel Reinforcement [63.63 Ton]; Steel Fixer [1591 h]; Helper-Steel Fixer [1590.86 h] |
| OHD-CSS-B3-E2-1010 |  | Shuttering for Verticals- Formwork | 14.44d | 2014-02-05 | 2014-02-19 | OHD-CSS-B3-E2-1000 SS+2.22d, OHD-CSS-B3-E2-1000 FF+3.33d | 431.56d | 0d | Formwork [1322.66 M2]; Carpenter [3888.63 h]; Helper-Carpenter [1666.56 h] |
| OHD-CSS-B3-E2-1020 |  | Casting of Columns & wall | 4.44d | 2014-02-17 | 2014-02-21 | OHD-CSS-B3-E2-1010 SS+3.33d, OHD-CSS-B3-E2-1010 FF+2.22d | 431.56d | 0d | Concrete [456 M3]; Mason-Concrete [684 h]; Helper-Concrete [293 h] |
| OHD-CSS-B3-E2-1030 |  | De-Shuttering of Columns & wall | 15.56d | 2014-02-20 | 2014-03-08 | OHD-CSS-B3-E2-1020 SS+3.33d, OHD-CSS-B3-E2-1020 FF+2.22d | 431.56d | 0d | Formwork [1467.85 M2]; Carpenter [4315 h]; Helper-Carpenter [1849 h] |
| OHD-CSS-B3-E2-1040 |  | Shuttering For Slab & Beams | 14.44d | 2014-02-23 | 2014-03-10 | OHD-CSS-B3-E2-1030 SS+3.33d, OHD-CSS-B3-E2-1030 FF+2.22d | 431.56d | 0d | Formwork [1363.27 M2]; Carpenter [4008.02 h]; Helper-Carpenter [1717.72 h] |
| OHD-CSS-B3-E2-1050 |  | Reinforcement for Slab & Beams | 8.89d | 2014-03-03 | 2014-03-12 | OHD-CSS-B3-E2-1040 SS+3.33d, OHD-CSS-B3-E2-1040 FF+2.22d | 431.56d | 0d | Steel Reinforcement [65.59 Ton]; Steel Fixer [1640 h]; Helper-Steel Fixer [1639.7 h] |
| OHD-CSS-B3-E2-1060 |  | MEP embedded works in Slab | 5.56d | 2014-03-09 | 2014-03-14 | OHD-CSS-B3-E2-1050 SS+3.33d, OHD-CSS-B3-E2-1050 FF+2.22d | 431.56d | 0d | MEP Mnhrs [250 h] |
| OHD-CSS-B3-E2-1070 |  | Casting of Slab & Beams | 1.11d | 2014-03-15 | 2014-03-16 | OHD-CSS-B3-E2-1060 SS+3.33d, OHD-CSS-B3-E2-1060 FF+2.22d | 431.56d | 0d | Concrete [470 M3]; Mason-Concrete [705 h]; Helper-Concrete [302 h] |
| OHD-CSS-B3-E2-1080 |  | De-Shuttering For Slab | 16.67d | 2014-04-09 | 2014-04-25 | OHD-CSS-B3-E2-1070 FS+23.33d | 570.44d | 10d | Formwork [1512.92 M2]; Carpenter [4448 h]; Helper-Carpenter [1906 h] |
|  | 2 | **PART F** |  | 2014-01-24 | 2014-04-21 |  |  |  |  |
|  | 1 | **PART F1** |  | 2014-01-24 | 2014-04-10 |  |  |  |  |
| OHD-CSS-B3-F1-1000 |  | Reinforcement for Columns & Wall | 7.78d | 2014-01-24 | 2014-02-01 | OHD-CSS-B4-F1-1100 FS+3.33d | 464.89d | 0d | Steel Reinforcement [54.15 Ton]; Steel Fixer [1354 h]; Helper-Steel Fixer [1353.63 h] |
| OHD-CSS-B3-F1-1010 |  | Shuttering for Verticals- Formwork | 12.22d | 2014-01-27 | 2014-02-08 | OHD-CSS-B3-F1-1000 SS+2.22d, OHD-CSS-B3-F1-1000 FF+3.33d | 464.89d | 0d | Formwork [1125.42 M2]; Carpenter [3308.75 h]; Helper-Carpenter [1418.03 h] |
| OHD-CSS-B3-F1-1020 |  | Casting of Columns & wall | 4.44d | 2014-02-06 | 2014-02-10 | OHD-CSS-B3-F1-1010 SS+3.33d, OHD-CSS-B3-F1-1010 FF+2.22d | 464.89d | 0d | Concrete [388 M3]; Mason-Concrete [582 h]; Helper-Concrete [249 h] |
| OHD-CSS-B3-F1-1030 |  | De-Shuttering of Columns & wall | 13.33d | 2014-02-09 | 2014-02-22 | OHD-CSS-B3-F1-1020 SS+3.33d, OHD-CSS-B3-F1-1020 FF+2.22d | 464.89d | 0d | Formwork [1248.96 M2]; Carpenter [3672 h]; Helper-Carpenter [1574 h] |
| OHD-CSS-B3-F1-1040 |  | Shuttering For Slab & Beams | 12.22d | 2014-02-12 | 2014-02-24 | OHD-CSS-B3-F1-1030 SS+3.33d, OHD-CSS-B3-F1-1030 FF+2.22d | 464.89d | 0d | Formwork [1160.23 M2]; Carpenter [3411.08 h]; Helper-Carpenter [1461.89 h] |
| OHD-CSS-B3-F1-1050 |  | Reinforcement for Slab & Beams | 7.78d | 2014-02-19 | 2014-02-27 | OHD-CSS-B3-F1-1040 SS+3.33d, OHD-CSS-B3-F1-1040 FF+2.22d | 464.89d | 0d | Steel Reinforcement [55.82 Ton]; Steel Fixer [1395 h]; Helper-Steel Fixer [1395.49 h] |
| OHD-CSS-B3-F1-1060 |  | MEP embedded works in Slab | 5.56d | 2014-02-23 | 2014-03-01 | OHD-CSS-B3-F1-1050 SS+3.33d, OHD-CSS-B3-F1-1050 FF+2.22d | 464.89d | 0d | MEP Mnhrs [250 h] |
| OHD-CSS-B3-F1-1070 |  | Casting of Slab & Beams | 1.11d | 2014-03-02 | 2014-03-03 | OHD-CSS-B3-F1-1060 SS+3.33d, OHD-CSS-B3-F1-1060 FF+2.22d | 464.89d | 0d | Concrete [400 M3]; Mason-Concrete [600 h]; Helper-Concrete [257 h] |
| OHD-CSS-B3-F1-1080 |  | De-Shuttering For Slab | 14.44d | 2014-03-27 | 2014-04-10 | OHD-CSS-B3-F1-1070 FS+23.33d | 588.22d | 11.11d | Formwork [1287.59 M2]; Carpenter [3786 h]; Helper-Carpenter [1622 h] |

| ID | WBS | Activity | Duration | Start | Finish | Predecessors | Total float | Free float | Resources |
| --- | --- | --- | --- | --- | --- | --- | --- | --- | --- |
|  | 2 | **PART F2** |  | 2014-01-30 | 2014-04-21 |  |  |  |  |
| OHD-CSS-B3-F2-1000 |  | Reinforcement for Columns & Wall | 8.89d | 2014-01-30 | 2014-02-08 | OHD-CSS-B4-F2-1100 FS+3.33d | 432.67d | 0d | Steel Reinforcement [61.4 Ton]; Steel Fixer [1535 h]; Helper-Steel Fixer [1535.04 h] |
| OHD-CSS-B3-F2-1010 |  | Shuttering for Verticals- Formwork | 14.44d | 2014-02-01 | 2014-02-16 | OHD-CSS-B3-F2-1000 SS+2.22d, OHD-CSS-B3-F2-1000 FF+3.33d | 432.67d | 0d | Formwork [1276.25 M2]; Carpenter [3752.19 h]; Helper-Carpenter [1608.08 h] |
| OHD-CSS-B3-F2-1020 |  | Casting of Columns & wall | 4.44d | 2014-02-13 | 2014-02-18 | OHD-CSS-B3-F2-1010 SS+3.33d, OHD-CSS-B3-F2-1010 FF+2.22d | 432.67d | 0d | Concrete [440 M3]; Mason-Concrete [660 h]; Helper-Concrete [283 h] |
| OHD-CSS-B3-F2-1030 |  | De-Shuttering of Columns & wall | 15.56d | 2014-02-17 | 2014-03-04 | OHD-CSS-B3-F2-1020 SS+3.33d, OHD-CSS-B3-F2-1020 FF+2.22d | 432.67d | 0d | Formwork [1416.35 M2]; Carpenter [4164 h]; Helper-Carpenter [1785 h] |
| OHD-CSS-B3-F2-1040 |  | Shuttering For Slab & Beams | 14.44d | 2014-02-20 | 2014-03-06 | OHD-CSS-B3-F2-1030 SS+3.33d, OHD-CSS-B3-F2-1030 FF+2.22d | 432.67d | 0d | Formwork [1316.86 M2]; Carpenter [3871.58 h]; Helper-Carpenter [1659.25 h] |
| OHD-CSS-B3-F2-1050 |  | Reinforcement for Slab & Beams | 8.89d | 2014-02-28 | 2014-03-09 | OHD-CSS-B3-F2-1040 SS+3.33d, OHD-CSS-B3-F2-1040 FF+2.22d | 432.67d | 0d | Steel Reinforcement [63.36 Ton]; Steel Fixer [1584 h]; Helper-Steel Fixer [1583.88 h] |
| OHD-CSS-B3-F2-1060 |  | MEP embedded works in Slab | 5.56d | 2014-03-05 | 2014-03-11 | OHD-CSS-B3-F2-1050 SS+3.33d, OHD-CSS-B3-F2-1050 FF+2.22d | 432.67d | 0d | MEP Mnhrs [250 h] |
| OHD-CSS-B3-F2-1070 |  | Casting of Slab & Beams | 1.11d | 2014-03-12 | 2014-03-13 | OHD-CSS-B3-F2-1060 SS+3.33d, OHD-CSS-B3-F2-1060 FF+2.22d | 432.67d | 0d | Concrete [454 M3]; Mason-Concrete [681 h]; Helper-Concrete [292 h] |
| OHD-CSS-B3-F2-1080 |  | De-Shuttering For Slab | 15.56d | 2014-04-06 | 2014-04-21 | OHD-CSS-B3-F2-1070 FS+23.33d | 577.11d | 0d | Formwork [1461.41 M2]; Carpenter [4297 h]; Helper-Carpenter [1841 h] |
|  | 3 | **BASEMENT LEVEL 2 @ SSL -03.95 M** |  | 2014-03-07 | 2014-06-18 |  |  |  |  |
|  | 1 | **PART E** |  | 2014-03-20 | 2014-06-18 |  |  |  |  |
|  | 1 | **PART E1** |  | 2014-04-01 | 2014-06-18 |  |  |  |  |
| OHD-CSS-B2-E1-1000 |  | Reinforcement for Columns & Wall | 7.78d | 2014-04-01 | 2014-04-09 | OHD-CSS-B3-E1-1070 FS+3.33d | 348.22d | 0d | Steel Reinforcement [56.8 Ton]; Steel Fixer [1420 h]; Helper-Steel Fixer [1419.91 h] |
| OHD-CSS-B2-E1-1010 |  | Shuttering for Verticals- Formwork | 13.33d | 2014-04-03 | 2014-04-17 | OHD-CSS-B2-E1-1000 SS+2.22d, OHD-CSS-B2-E1-1000 FF+3.33d | 348.22d | 0d | Formwork [1180.54 M2]; Carpenter [3470.77 h]; Helper-Carpenter [1487.47 h] |
| OHD-CSS-B2-E1-1020 |  | Casting of Columns & wall | 4.44d | 2014-04-14 | 2014-04-19 | OHD-CSS-B2-E1-1010 SS+3.33d, OHD-CSS-B2-E1-1010 FF+2.22d | 348.22d | 0d | Concrete [407 M3]; Mason-Concrete [611 h]; Helper-Concrete [262 h] |
| OHD-CSS-B2-E1-1030 |  | De-Shuttering of Columns & wall | 14.44d | 2014-04-18 | 2014-05-02 | OHD-CSS-B2-E1-1020 SS+3.33d, OHD-CSS-B2-E1-1020 FF+2.22d | 348.22d | 0d | Formwork [1310.12 M2]; Carpenter [3852 h]; Helper-Carpenter [1651 h] |
| OHD-CSS-B2-E1-1040 |  | Shuttering For Slab & Beams | 13.33d | 2014-04-21 | 2014-05-04 | OHD-CSS-B2-E1-1030 SS+3.33d, OHD-CSS-B2-E1-1030 FF+2.22d | 348.22d | 0d | Formwork [1218.24 M2]; Carpenter [3581.63 h]; Helper-Carpenter [1534.99 h] |
| OHD-CSS-B2-E1-1050 |  | Reinforcement for Slab & Beams | 7.78d | 2014-04-29 | 2014-05-07 | OHD-CSS-B2-E1-1040 SS+3.33d, OHD-CSS-B2-E1-1040 FF+2.22d | 348.22d | 0d | Steel Reinforcement [58.61 Ton]; Steel Fixer [1465 h]; Helper-Steel Fixer [1465.27 h] |
| OHD-CSS-B2-E1-1060 |  | MEP embedded works in Slab | 5.56d | 2014-05-03 | 2014-05-09 | OHD-CSS-B2-E1-1050 SS+3.33d, OHD-CSS-B2-E1-1050 FF+2.22d | 348.22d | 0d | MEP Mnhrs [250 h] |
| OHD-CSS-B2-E1-1070 |  | Casting of Slab & Beams | 1.11d | 2014-05-10 | 2014-05-11 | OHD-CSS-B2-E1-1060 SS+3.33d, OHD-CSS-B2-E1-1060 FF+2.22d | 348.22d | 0d | Concrete [420 M3]; Mason-Concrete [630 h]; Helper-Concrete [270 h] |
| OHD-CSS-B2-E1-1080 |  | De-Shuttering For Slab | 14.44d | 2014-06-03 | 2014-06-18 | OHD-CSS-B2-E1-1070 FS+23.33d | 519.33d | 0d | Formwork [1351.97 M2]; Carpenter [3975 h]; Helper-Carpenter [1703 h] |
|  | 2 | **PART E2** |  | 2014-03-20 | 2014-06-10 |  |  |  |  |
| OHD-CSS-B2-E2-1000 |  | Reinforcement for Columns & Wall | 8.89d | 2014-03-20 | 2014-03-29 | OHD-CSS-B3-E2-1070 FS+3.33d | 431.56d | 0d | Steel Reinforcement [63.63 Ton]; Steel Fixer [1591 h]; Helper-Steel Fixer [1590.86 h] |
| OHD-CSS-B2-E2-1010 |  | Shuttering for Verticals- Formwork | 14.44d | 2014-03-22 | 2014-04-05 | OHD-CSS-B2-E2-1000 SS+2.22d, OHD-CSS-B2-E2-1000 FF+3.33d | 431.56d | 0d | Formwork [1322.66 M2]; Carpenter [3888.63 h]; Helper-Carpenter [1666.56 h] |
| OHD-CSS-B2-E2-1020 |  | Casting of Columns & wall | 4.44d | 2014-04-03 | 2014-04-08 | OHD-CSS-B2-E2-1010 SS+3.33d, OHD-CSS-B2-E2-1010 FF+2.22d | 431.56d | 0d | Concrete [456 M3]; Mason-Concrete [684 h]; Helper-Concrete [293 h] |
| OHD-CSS-B2-E2-1030 |  | De-Shuttering of Columns & wall | 15.56d | 2014-04-07 | 2014-04-22 | OHD-CSS-B2-E2-1020 SS+3.33d, OHD-CSS-B2-E2-1020 FF+2.22d | 431.56d | 0d | Formwork [1467.85 M2]; Carpenter [4315 h]; Helper-Carpenter [1849 h] |
| OHD-CSS-B2-E2-1040 |  | Shuttering For Slab & Beams | 14.44d | 2014-04-10 | 2014-04-24 | OHD-CSS-B2-E2-1030 SS+3.33d, OHD-CSS-B2-E2-1030 FF+2.22d | 431.56d | 0d | Formwork [1363.27 M2]; Carpenter [4008.02 h]; Helper-Carpenter [1717.72 h] |
| OHD-CSS-B2-E2-1050 |  | Reinforcement for Slab & Beams | 8.89d | 2014-04-18 | 2014-04-27 | OHD-CSS-B2-E2-1040 SS+3.33d, OHD-CSS-B2-E2-1040 FF+2.22d | 431.56d | 0d | Steel Reinforcement [65.59 Ton]; Steel Fixer [1640 h]; Helper-Steel Fixer [1639.7 h] |
| OHD-CSS-B2-E2-1060 |  | MEP embedded works in Slab | 5.56d | 2014-04-23 | 2014-04-29 | OHD-CSS-B2-E2-1050 SS+3.33d, OHD-CSS-B2-E2-1050 FF+2.22d | 431.56d | 0d | MEP Mnhrs [250 h] |
| OHD-CSS-B2-E2-1070 |  | Casting of Slab & Beams | 1.11d | 2014-04-30 | 2014-05-01 | OHD-CSS-B2-E2-1060 SS+3.33d, OHD-CSS-B2-E2-1060 FF+2.22d | 431.56d | 0d | Concrete [470 M3]; Mason-Concrete [705 h]; Helper-Concrete [302 h] |
| OHD-CSS-B2-E2-1080 |  | De-Shuttering For Slab | 16.67d | 2014-05-24 | 2014-06-10 | OHD-CSS-B2-E2-1070 FS+23.33d | 527.11d | 7.78d | Formwork [1512.92 M2]; Carpenter [4448 h]; Helper-Carpenter [1906 h] |

| ID | WBS | Activity | Duration | Start | Finish | Predecessors | Total float | Free float | Resources |
| --- | --- | --- | --- | --- | --- | --- | --- | --- | --- |
|  | 2 | **PART F** |  | 2014-03-07 | 2014-06-06 |  |  |  |  |
|  | 1 | **PART F1** |  | 2014-03-07 | 2014-05-21 |  |  |  |  |
| OHD-CSS-B2-F1-1000 |  | Reinforcement for Columns & Wall | 7.78d | 2014-03-07 | 2014-03-14 | OHD-CSS-B3-F1-1070 FS+3.33d | 464.89d | 0d | Steel Reinforcement [54.15 Ton]; Steel Fixer [1354 h]; Helper-Steel Fixer [1353.63 h] |
| OHD-CSS-B2-F1-1010 |  | Shuttering for Verticals- Formwork | 12.22d | 2014-03-09 | 2014-03-21 | OHD-CSS-B2-F1-1000 SS+2.22d, OHD-CSS-B2-F1-1000 FF+3.33d | 464.89d | 0d | Formwork [1125.42 M2]; Carpenter [3308.75 h]; Helper-Carpenter [1418.03 h] |
| OHD-CSS-B2-F1-1020 |  | Casting of Columns & wall | 4.44d | 2014-03-19 | 2014-03-23 | OHD-CSS-B2-F1-1010 SS+3.33d, OHD-CSS-B2-F1-1010 FF+2.22d | 464.89d | 0d | Concrete [388 M3]; Mason-Concrete [582 h]; Helper-Concrete [249 h] |
| OHD-CSS-B2-F1-1030 |  | De-Shuttering of Columns & wall | 13.33d | 2014-03-22 | 2014-04-04 | OHD-CSS-B2-F1-1020 SS+3.33d, OHD-CSS-B2-F1-1020 FF+2.22d | 464.89d | 0d | Formwork [1248.96 M2]; Carpenter [3672 h]; Helper-Carpenter [1574 h] |
| OHD-CSS-B2-F1-1040 |  | Shuttering For Slab & Beams | 12.22d | 2014-03-25 | 2014-04-07 | OHD-CSS-B2-F1-1030 SS+3.33d, OHD-CSS-B2-F1-1030 FF+2.22d | 464.89d | 0d | Formwork [1160.23 M2]; Carpenter [3411.08 h]; Helper-Carpenter [1461.89 h] |
| OHD-CSS-B2-F1-1050 |  | Reinforcement for Slab & Beams | 7.78d | 2014-04-01 | 2014-04-09 | OHD-CSS-B2-F1-1040 SS+3.33d, OHD-CSS-B2-F1-1040 FF+2.22d | 464.89d | 0d | Steel Reinforcement [55.82 Ton]; Steel Fixer [1395 h]; Helper-Steel Fixer [1395.49 h] |
| OHD-CSS-B2-F1-1060 |  | MEP embedded works in Slab | 5.56d | 2014-04-06 | 2014-04-11 | OHD-CSS-B2-F1-1050 SS+3.33d, OHD-CSS-B2-F1-1050 FF+2.22d | 464.89d | 0d | MEP Mnhrs [250 h] |
| OHD-CSS-B2-F1-1070 |  | Casting of Slab & Beams | 1.11d | 2014-04-12 | 2014-04-13 | OHD-CSS-B2-F1-1060 SS+3.33d, OHD-CSS-B2-F1-1060 FF+2.22d | 464.89d | 0d | Concrete [400 M3]; Mason-Concrete [600 h]; Helper-Concrete [257 h] |
| OHD-CSS-B2-F1-1080 |  | De-Shuttering For Slab | 14.44d | 2014-05-07 | 2014-05-21 | OHD-CSS-B2-F1-1070 FS+23.33d | 547.11d | 15.56d | Formwork [1287.59 M2]; Carpenter [3786 h]; Helper-Carpenter [1622 h] |
|  | 2 | **PART F2** |  | 2014-03-17 | 2014-06-06 |  |  |  |  |
| OHD-CSS-B2-F2-1000 |  | Reinforcement for Columns & Wall | 8.89d | 2014-03-17 | 2014-03-25 | OHD-CSS-B3-F2-1070 FS+3.33d | 432.67d | 0d | Steel Reinforcement [61.4 Ton]; Steel Fixer [1535 h]; Helper-Steel Fixer [1535.04 h] |
| OHD-CSS-B2-F2-1010 |  | Shuttering for Verticals- Formwork | 14.44d | 2014-03-19 | 2014-04-02 | OHD-CSS-B2-F2-1000 SS+2.22d, OHD-CSS-B2-F2-1000 FF+3.33d | 432.67d | 0d | Formwork [1276.25 M2]; Carpenter [3752.19 h]; Helper-Carpenter [1608.08 h] |
| OHD-CSS-B2-F2-1020 |  | Casting of Columns & wall | 4.44d | 2014-03-31 | 2014-04-04 | OHD-CSS-B2-F2-1010 SS+3.33d, OHD-CSS-B2-F2-1010 FF+2.22d | 432.67d | 0d | Concrete [440 M3]; Mason-Concrete [660 h]; Helper-Concrete [283 h] |
| OHD-CSS-B2-F2-1030 |  | De-Shuttering of Columns & wall | 15.56d | 2014-04-03 | 2014-04-19 | OHD-CSS-B2-F2-1020 SS+3.33d, OHD-CSS-B2-F2-1020 FF+2.22d | 432.67d | 0d | Formwork [1416.35 M2]; Carpenter [4164 h]; Helper-Carpenter [1785 h] |
| OHD-CSS-B2-F2-1040 |  | Shuttering For Slab & Beams | 14.44d | 2014-04-07 | 2014-04-21 | OHD-CSS-B2-F2-1030 SS+3.33d, OHD-CSS-B2-F2-1030 FF+2.22d | 432.67d | 0d | Formwork [1316.86 M2]; Carpenter [3871.58 h]; Helper-Carpenter [1659.25 h] |
| OHD-CSS-B2-F2-1050 |  | Reinforcement for Slab & Beams | 8.89d | 2014-04-14 | 2014-04-23 | OHD-CSS-B2-F2-1040 SS+3.33d, OHD-CSS-B2-F2-1040 FF+2.22d | 432.67d | 0d | Steel Reinforcement [63.36 Ton]; Steel Fixer [1584 h]; Helper-Steel Fixer [1583.88 h] |
| OHD-CSS-B2-F2-1060 |  | MEP embedded works in Slab | 5.56d | 2014-04-20 | 2014-04-25 | OHD-CSS-B2-F2-1050 SS+3.33d, OHD-CSS-B2-F2-1050 FF+2.22d | 432.67d | 0d | MEP Mnhrs [250 h] |
| OHD-CSS-B2-F2-1070 |  | Casting of Slab & Beams | 1.11d | 2014-04-27 | 2014-04-28 | OHD-CSS-B2-F2-1060 SS+3.33d, OHD-CSS-B2-F2-1060 FF+2.22d | 432.67d | 0d | Concrete [454 M3]; Mason-Concrete [681 h]; Helper-Concrete [292 h] |
| OHD-CSS-B2-F2-1080 |  | De-Shuttering For Slab | 15.56d | 2014-05-21 | 2014-06-06 | OHD-CSS-B2-F2-1070 FS+23.33d | 531.56d | 0d | Formwork [1461.41 M2]; Carpenter [4297 h]; Helper-Carpenter [1841 h] |
|  | 4 | **BASEMENT LEVEL 1 @ SSL -0.35 M** |  | 2014-04-13 | 2014-07-31 |  |  |  |  |
|  | 1 | **PART E** |  | 2014-05-01 | 2014-07-31 |  |  |  |  |
|  | 1 | **PART E1** |  | 2014-05-14 | 2014-07-31 |  |  |  |  |
| OHD-CSS-B1-E1-1000 |  | Reinforcement for Columns & Wall | 7.78d | 2014-05-14 | 2014-05-22 | OHD-CSS-B2-E1-1070 FS+3.33d | 348.22d | 0d | Steel Reinforcement [56.8 Ton]; Steel Fixer [1420 h]; Helper-Steel Fixer [1419.91 h] |
| OHD-CSS-B1-E1-1010 |  | Shuttering for Verticals- Formwork | 13.33d | 2014-05-17 | 2014-05-30 | OHD-CSS-B1-E1-1000 SS+2.22d, OHD-CSS-B1-E1-1000 FF+3.33d | 348.22d | 0d | Formwork [1180.54 M2]; Carpenter [3470.77 h]; Helper-Carpenter [1487.47 h] |
| OHD-CSS-B1-E1-1020 |  | Casting of Columns & wall | 4.44d | 2014-05-28 | 2014-06-01 | OHD-CSS-B1-E1-1010 SS+3.33d, OHD-CSS-B1-E1-1010 FF+2.22d | 348.22d | 0d | Concrete [407 M3]; Mason-Concrete [611 h]; Helper-Concrete [262 h] |
| OHD-CSS-B1-E1-1030 |  | De-Shuttering of Columns & wall | 14.44d | 2014-05-31 | 2014-06-14 | OHD-CSS-B1-E1-1020 SS+3.33d, OHD-CSS-B1-E1-1020 FF+2.22d | 348.22d | 0d | Formwork [1310.12 M2]; Carpenter [3852 h]; Helper-Carpenter [1651 h] |
| OHD-CSS-B1-E1-1040 |  | Shuttering For Slab & Beams | 13.33d | 2014-06-03 | 2014-06-17 | OHD-CSS-B1-E1-1030 SS+3.33d, OHD-CSS-B1-E1-1030 FF+2.22d | 348.22d | 0d | Formwork [1218.24 M2]; Carpenter [3581.63 h]; Helper-Carpenter [1534.99 h] |
| OHD-CSS-B1-E1-1050 |  | Reinforcement for Slab & Beams | 7.78d | 2014-06-11 | 2014-06-19 | OHD-CSS-B1-E1-1040 SS+3.33d, OHD-CSS-B1-E1-1040 FF+2.22d | 348.22d | 0d | Steel Reinforcement [58.61 Ton]; Steel Fixer [1465 h]; Helper-Steel Fixer [1465.27 h] |
| OHD-CSS-B1-E1-1060 |  | MEP embedded works in Slab | 5.56d | 2014-06-16 | 2014-06-21 | OHD-CSS-B1-E1-1050 SS+3.33d, OHD-CSS-B1-E1-1050 FF+2.22d | 348.22d | 0d | MEP Mnhrs [250 h] |
| OHD-CSS-B1-E1-1070 |  | Casting of Slab & Beams | 1.11d | 2014-06-22 | 2014-06-23 | OHD-CSS-B1-E1-1060 SS+3.33d, OHD-CSS-B1-E1-1060 FF+2.22d | 348.22d | 0d | Concrete [420 M3]; Mason-Concrete [630 h]; Helper-Concrete [270 h] |
| OHD-CSS-B1-E1-1080 |  | De-Shuttering For Slab | 14.44d | 2014-07-17 | 2014-07-31 | OHD-CSS-B1-E1-1070 FS+23.33d | 476d | 0d | Formwork [1351.97 M2]; Carpenter [3975 h]; Helper-Carpenter [1703 h] |

| ID | WBS | Activity | Duration | Start | Finish | Predecessors | Total float | Free float | Resources |
| --- | --- | --- | --- | --- | --- | --- | --- | --- | --- |
|  | 2 | **PART E2** |  | 2014-05-01 | 2014-07-22 |  |  |  |  |
| OHD-CSS-B1-E2-1000 |  | Reinforcement for Columns & Wall | 8.89d | 2014-05-01 | 2014-05-10 | OHD-CSS-B2-E2-1070 | 431.56d | 0d | Steel Reinforcement [63.63 Ton]; Steel Fixer [1591 h]; Helper-Steel Fixer [1590.86 h] |
| OHD-CSS-B1-E2-1010 |  | Shuttering for Verticals- Formwork | 14.44d | 2014-05-03 | 2014-05-18 | OHD-CSS-B1-E2-1000 SS+2.22d, OHD-CSS-B1-E2-1000 FF+3.33d | 431.56d | 0d | Formwork [1322.66 M2]; Carpenter [3888.63 h]; Helper-Carpenter [1666.56 h] |
| OHD-CSS-B1-E2-1020 |  | Casting of Columns & wall | 4.44d | 2014-05-16 | 2014-05-20 | OHD-CSS-B1-E2-1010 SS+3.33d, OHD-CSS-B1-E2-1010 FF+2.22d | 431.56d | 0d | Concrete [456 M3]; Mason-Concrete [684 h]; Helper-Concrete [293 h] |
| OHD-CSS-B1-E2-1030 |  | De-Shuttering of Columns & wall | 15.56d | 2014-05-19 | 2014-06-03 | OHD-CSS-B1-E2-1020 SS+3.33d, OHD-CSS-B1-E2-1020 FF+2.22d | 431.56d | 0d | Formwork [1467.85 M2]; Carpenter [4315 h]; Helper-Carpenter [1849 h] |
| OHD-CSS-B1-E2-1040 |  | Shuttering For Slab & Beams | 14.44d | 2014-05-22 | 2014-06-06 | OHD-CSS-B1-E2-1030 SS+3.33d, OHD-CSS-B1-E2-1030 FF+2.22d | 431.56d | 0d | Formwork [1363.27 M2]; Carpenter [4008.02 h]; Helper-Carpenter [1717.72 h] |
| OHD-CSS-B1-E2-1050 |  | Reinforcement for Slab & Beams | 8.89d | 2014-05-30 | 2014-06-08 | OHD-CSS-B1-E2-1040 SS+3.33d, OHD-CSS-B1-E2-1040 FF+2.22d | 431.56d | 0d | Steel Reinforcement [65.59 Ton]; Steel Fixer [1640 h]; Helper-Steel Fixer [1639.7 h] |
| OHD-CSS-B1-E2-1060 |  | MEP embedded works in Slab | 5.56d | 2014-06-05 | 2014-06-10 | OHD-CSS-B1-E2-1050 SS+3.33d, OHD-CSS-B1-E2-1050 FF+2.22d | 431.56d | 0d | MEP Mnhrs [250 h] |
| OHD-CSS-B1-E2-1070 |  | Casting of Slab & Beams | 1.11d | 2014-06-11 | 2014-06-12 | OHD-CSS-B1-E2-1060 SS+3.33d, OHD-CSS-B1-E2-1060 FF+2.22d | 431.56d | 0d | Concrete [470 M3]; Mason-Concrete [705 h]; Helper-Concrete [302 h] |
| OHD-CSS-B1-E2-1080 |  | De-Shuttering For Slab | 16.67d | 2014-07-06 | 2014-07-22 | OHD-CSS-B1-E2-1070 FS+23.33d | 484.89d | 8.89d | Formwork [1512.92 M2]; Carpenter [4448 h]; Helper-Carpenter [1906 h] |
|  | 2 | **PART F** |  | 2014-04-13 | 2014-07-21 |  |  |  |  |
|  | 1 | **PART F1** |  | 2014-04-13 | 2014-06-28 |  |  |  |  |
| OHD-CSS-B1-F1-1000 |  | Reinforcement for Columns & Wall | 7.78d | 2014-04-13 | 2014-04-21 | OHD-CSS-B2-F1-1070 | 464.89d | 0d | Steel Reinforcement [54.15 Ton]; Steel Fixer [1354 h]; Helper-Steel Fixer [1353.63 h] |
| OHD-CSS-B1-F1-1010 |  | Shuttering for Verticals- Formwork | 12.22d | 2014-04-16 | 2014-04-28 | OHD-CSS-B1-F1-1000 SS+2.22d, OHD-CSS-B1-F1-1000 FF+3.33d | 464.89d | 0d | Formwork [1125.42 M2]; Carpenter [3308.75 h]; Helper-Carpenter [1418.03 h] |
| OHD-CSS-B1-F1-1020 |  | Casting of Columns & wall | 4.44d | 2014-04-26 | 2014-04-30 | OHD-CSS-B1-F1-1010 SS+3.33d, OHD-CSS-B1-F1-1010 FF+2.22d | 464.89d | 0d | Concrete [388 M3]; Mason-Concrete [582 h]; Helper-Concrete [249 h] |
| OHD-CSS-B1-F1-1030 |  | De-Shuttering of Columns & wall | 13.33d | 2014-04-29 | 2014-05-12 | OHD-CSS-B1-F1-1020 SS+3.33d, OHD-CSS-B1-F1-1020 FF+2.22d | 464.89d | 0d | Formwork [1248.96 M2]; Carpenter [3672 h]; Helper-Carpenter [1574 h] |
| OHD-CSS-B1-F1-1040 |  | Shuttering For Slab & Beams | 12.22d | 2014-05-02 | 2014-05-14 | OHD-CSS-B1-F1-1030 SS+3.33d, OHD-CSS-B1-F1-1030 FF+2.22d | 464.89d | 0d | Formwork [1160.23 M2]; Carpenter [3411.08 h]; Helper-Carpenter [1461.89 h] |
| OHD-CSS-B1-F1-1050 |  | Reinforcement for Slab & Beams | 7.78d | 2014-05-09 | 2014-05-17 | OHD-CSS-B1-F1-1040 SS+3.33d, OHD-CSS-B1-F1-1040 FF+2.22d | 464.89d | 0d | Steel Reinforcement [55.82 Ton]; Steel Fixer [1395 h]; Helper-Steel Fixer [1395.49 h] |
| OHD-CSS-B1-F1-1060 |  | MEP embedded works in Slab | 5.56d | 2014-05-13 | 2014-05-19 | OHD-CSS-B1-F1-1050 SS+3.33d, OHD-CSS-B1-F1-1050 FF+2.22d | 464.89d | 0d | MEP Mnhrs [250 h] |
| OHD-CSS-B1-F1-1070 |  | Casting of Slab & Beams | 1.11d | 2014-05-20 | 2014-05-21 | OHD-CSS-B1-F1-1060 SS+3.33d, OHD-CSS-B1-F1-1060 FF+2.22d | 464.89d | 0d | Concrete [400 M3]; Mason-Concrete [600 h]; Helper-Concrete [257 h] |
| OHD-CSS-B1-F1-1080 |  | De-Shuttering For Slab | 14.44d | 2014-06-13 | 2014-06-28 | OHD-CSS-B1-F1-1070 FS+23.33d | 509.33d | 23.33d | Formwork [1287.59 M2]; Carpenter [3786 h]; Helper-Carpenter [1622 h] |
|  | 2 | **PART F2** |  | 2014-05-01 | 2014-07-21 |  |  |  |  |
| OHD-CSS-B1-F2-1000 |  | Reinforcement for Columns & Wall | 8.89d | 2014-05-01 | 2014-05-10 | OHD-CSS-B2-F2-1070 FS+3.33d | 432.67d | 0d | Steel Reinforcement [61.4 Ton]; Steel Fixer [1535 h]; Helper-Steel Fixer [1535.04 h] |
| OHD-CSS-B1-F2-1010 |  | Shuttering for Verticals- Formwork | 14.44d | 2014-05-03 | 2014-05-18 | OHD-CSS-B1-F2-1000 SS+2.22d, OHD-CSS-B1-F2-1000 FF+3.33d | 432.67d | 0d | Formwork [1276.25 M2]; Carpenter [3752.19 h]; Helper-Carpenter [1608.08 h] |
| OHD-CSS-B1-F2-1020 |  | Casting of Columns & wall | 4.44d | 2014-05-16 | 2014-05-20 | OHD-CSS-B1-F2-1010 SS+3.33d, OHD-CSS-B1-F2-1010 FF+2.22d | 432.67d | 0d | Concrete [440 M3]; Mason-Concrete [660 h]; Helper-Concrete [283 h] |
| OHD-CSS-B1-F2-1030 |  | De-Shuttering of Columns & wall | 15.56d | 2014-05-19 | 2014-06-03 | OHD-CSS-B1-F2-1020 SS+3.33d, OHD-CSS-B1-F2-1020 FF+2.22d | 432.67d | 0d | Formwork [1416.35 M2]; Carpenter [4164 h]; Helper-Carpenter [1785 h] |
| OHD-CSS-B1-F2-1040 |  | Shuttering For Slab & Beams | 14.44d | 2014-05-22 | 2014-06-06 | OHD-CSS-B1-F2-1030 SS+3.33d, OHD-CSS-B1-F2-1030 FF+2.22d | 432.67d | 0d | Formwork [1316.86 M2]; Carpenter [3871.58 h]; Helper-Carpenter [1659.25 h] |
| OHD-CSS-B1-F2-1050 |  | Reinforcement for Slab & Beams | 8.89d | 2014-05-30 | 2014-06-08 | OHD-CSS-B1-F2-1040 SS+3.33d, OHD-CSS-B1-F2-1040 FF+2.22d | 432.67d | 0d | Steel Reinforcement [63.36 Ton]; Steel Fixer [1584 h]; Helper-Steel Fixer [1583.88 h] |
| OHD-CSS-B1-F2-1060 |  | MEP embedded works in Slab | 5.56d | 2014-06-05 | 2014-06-10 | OHD-CSS-B1-F2-1050 SS+3.33d, OHD-CSS-B1-F2-1050 FF+2.22d | 432.67d | 0d | MEP Mnhrs [250 h] |
| OHD-CSS-B1-F2-1070 |  | Casting of Slab & Beams | 1.11d | 2014-06-11 | 2014-06-12 | OHD-CSS-B1-F2-1060 SS+3.33d, OHD-CSS-B1-F2-1060 FF+2.22d | 432.67d | 0d | Concrete [454 M3]; Mason-Concrete [681 h]; Helper-Concrete [292 h] |
| OHD-CSS-B1-F2-1080 |  | De-Shuttering For Slab | 15.56d | 2014-07-06 | 2014-07-21 | OHD-CSS-B1-F2-1070 FS+23.33d | 486d | 0d | Formwork [1461.41 M2]; Carpenter [4297 h]; Helper-Carpenter [1841 h] |

| ID | WBS | Activity | Duration | Start | Finish | Predecessors | Total float | Free float | Resources |
| --- | --- | --- | --- | --- | --- | --- | --- | --- | --- |
|  | 5 | **PLAZA LEVEL- GROUND FLOOR SLAB @ SSL +6.05 M** |  | 2014-05-21 | 2014-09-19 |  |  |  |  |
|  | 1 | **PART E** |  | 2014-06-16 | 2014-09-19 |  |  |  |  |
|  | 1 | **PART E1** |  | 2014-06-27 | 2014-09-19 |  |  |  |  |
| OHD-CSS-GF-E1-1000 |  | Reinforcement for Columns & Wall | 8.89d | 2014-06-27 | 2014-07-06 | OHD-CSS-B1-E1-1070 FS+3.33d | 348.22d | 0d | Steel Reinforcement [66.29 Ton]; Steel Fixer [1657 h]; Helper-Steel Fixer [1657.15 h] |
| OHD-CSS-GF-E1-1010 |  | Shuttering for Verticals- Formwork | 15.56d | 2014-06-29 | 2014-07-14 | OHD-CSS-GF-E1-1000 SS+2.22d, OHD-CSS-GF-E1-1000 FF+3.33d | 348.22d | 0d | Formwork [1377.77 M2]; Carpenter [4050.66 h]; Helper-Carpenter [1736 h] |
| OHD-CSS-GF-E1-1020 |  | Casting of Columns & wall | 4.44d | 2014-07-12 | 2014-07-17 | OHD-CSS-GF-E1-1010 SS+3.33d, OHD-CSS-GF-E1-1010 FF+2.22d | 348.22d | 0d | Concrete [475 M3]; Mason-Concrete [713 h]; Helper-Concrete [305 h] |
| OHD-CSS-GF-E1-1030 |  | De-Shuttering of Columns & wall | 16.67d | 2014-07-16 | 2014-08-01 | OHD-CSS-GF-E1-1020 SS+3.33d, OHD-CSS-GF-E1-1020 FF+2.22d | 348.22d | 0d | Formwork [1529.01 M2]; Carpenter [4495 h]; Helper-Carpenter [1927 h] |
| OHD-CSS-GF-E1-1040 |  | Shuttering For Slab & Beams | 15.56d | 2014-07-19 | 2014-08-03 | OHD-CSS-GF-E1-1030 SS+3.33d, OHD-CSS-GF-E1-1030 FF+2.22d | 348.22d | 0d | Formwork [1421.28 M2]; Carpenter [4178.57 h]; Helper-Carpenter [1790.82 h] |
| OHD-CSS-GF-E1-1050 |  | Reinforcement for Slab & Beams | 10d | 2014-07-27 | 2014-08-06 | OHD-CSS-GF-E1-1040 SS+3.33d, OHD-CSS-GF-E1-1040 FF+2.22d | 348.22d | 0d | Steel Reinforcement [68.38 Ton]; Steel Fixer [1709 h]; Helper-Steel Fixer [1709.48 h] |
| OHD-CSS-GF-E1-1060 |  | MEP embedded works in Slab | 5.56d | 2014-08-02 | 2014-08-08 | OHD-CSS-GF-E1-1050 SS+3.33d, OHD-CSS-GF-E1-1050 FF+2.22d | 348.22d | 0d | MEP Mnhrs [250 h] |
| OHD-CSS-GF-E1-1070 |  | Casting of Slab & Beams | 1.11d | 2014-08-09 | 2014-08-10 | OHD-CSS-GF-E1-1060 SS+3.33d, OHD-CSS-GF-E1-1060 FF+2.22d | 348.22d | 0d | Concrete [490 M3]; Mason-Concrete [735 h]; Helper-Concrete [315 h] |
| OHD-CSS-GF-E1-1080 |  | De-Shuttering For Slab | 16.67d | 2014-09-03 | 2014-09-19 | OHD-CSS-GF-E1-1070 FS+23.33d | 426d | 0d | Formwork [1577.3 M2]; Carpenter [4637 h]; Helper-Carpenter [1987 h] |
|  | 2 | **PART E2** |  | 2014-06-16 | 2014-09-14 |  |  |  |  |
| OHD-CSS-GF-E2-1000 |  | Reinforcement for Columns & Wall | 10d | 2014-06-16 | 2014-06-26 | OHD-CSS-B1-E2-1070 FS+3.33d | 431.56d | 0d | Steel Reinforcement [74.24 Ton]; Steel Fixer [1856 h]; Helper-Steel Fixer [1856 h] |
| OHD-CSS-GF-E2-1010 |  | Shuttering for Verticals- Formwork | 16.67d | 2014-06-18 | 2014-07-04 | OHD-CSS-GF-E2-1000 SS+2.22d, OHD-CSS-GF-E2-1000 FF+3.33d | 431.56d | 0d | Formwork [1543.11 M2]; Carpenter [4536.74 h]; Helper-Carpenter [1944.32 h] |
| OHD-CSS-GF-E2-1020 |  | Casting of Columns & wall | 4.44d | 2014-07-02 | 2014-07-07 | OHD-CSS-GF-E2-1010 SS+3.33d, OHD-CSS-GF-E2-1010 FF+2.22d | 431.56d | 0d | Concrete [532 M3]; Mason-Concrete [798 h]; Helper-Concrete [342 h] |
| OHD-CSS-GF-E2-1030 |  | De-Shuttering of Columns & wall | 18.89d | 2014-07-06 | 2014-07-24 | OHD-CSS-GF-E2-1020 SS+3.33d, OHD-CSS-GF-E2-1020 FF+2.22d | 431.56d | 0d | Formwork [1712.49 M2]; Carpenter [5035 h]; Helper-Carpenter [2158 h] |
| OHD-CSS-GF-E2-1040 |  | Shuttering For Slab & Beams | 17.78d | 2014-07-09 | 2014-07-27 | OHD-CSS-GF-E2-1030 SS+3.33d, OHD-CSS-GF-E2-1030 FF+2.22d | 431.56d | 0d | Formwork [1589.52 M2]; Carpenter [4673.18 h]; Helper-Carpenter [2002.79 h] |
| OHD-CSS-GF-E2-1050 |  | Reinforcement for Slab & Beams | 11.11d | 2014-07-18 | 2014-07-29 | OHD-CSS-GF-E2-1040 SS+3.33d, OHD-CSS-GF-E2-1040 FF+2.22d | 431.56d | 0d | Steel Reinforcement [76.47 Ton]; Steel Fixer [1912 h]; Helper-Steel Fixer [1911.82 h] |
| OHD-CSS-GF-E2-1060 |  | MEP embedded works in Slab | 5.56d | 2014-07-26 | 2014-07-31 | OHD-CSS-GF-E2-1050 SS+3.33d, OHD-CSS-GF-E2-1050 FF+2.22d | 431.56d | 0d | MEP Mnhrs [250 h] |
| OHD-CSS-GF-E2-1070 |  | Casting of Slab & Beams | 1.11d | 2014-08-01 | 2014-08-02 | OHD-CSS-GF-E2-1060 SS+3.33d, OHD-CSS-GF-E2-1060 FF+2.22d | 431.56d | 0d | Concrete [548 M3]; Mason-Concrete [822 h]; Helper-Concrete [352 h] |
| OHD-CSS-GF-E2-1080 |  | De-Shuttering For Slab | 18.89d | 2014-08-26 | 2014-09-14 | OHD-CSS-GF-E2-1070 FS+23.33d | 431.56d | 5.56d | Formwork [1764 M2]; Carpenter [5186 h]; Helper-Carpenter [2223 h] |
|  | 2 | **PART F** |  | 2014-05-21 | 2014-09-12 |  |  |  |  |
|  | 1 | **PART F1** |  | 2014-05-21 | 2014-08-11 |  |  |  |  |
| OHD-CSS-GF-F1-1000 |  | Reinforcement for Columns & Wall | 8.89d | 2014-05-21 | 2014-05-30 | OHD-CSS-B1-F1-1070 | 464.89d | 0d | Steel Reinforcement [63.08 Ton]; Steel Fixer [1577 h]; Helper-Steel Fixer [1576.91 h] |
| OHD-CSS-GF-F1-1010 |  | Shuttering for Verticals- Formwork | 14.44d | 2014-05-23 | 2014-06-07 | OHD-CSS-GF-F1-1000 SS+2.22d, OHD-CSS-GF-F1-1000 FF+3.33d | 464.89d | 0d | Formwork [1311.06 M2]; Carpenter [3854.52 h]; Helper-Carpenter [1651.94 h] |
| OHD-CSS-GF-F1-1020 |  | Casting of Columns & wall | 4.44d | 2014-06-05 | 2014-06-09 | OHD-CSS-GF-F1-1010 SS+3.33d, OHD-CSS-GF-F1-1010 FF+2.22d | 464.89d | 0d | Concrete [452 M3]; Mason-Concrete [678 h]; Helper-Concrete [291 h] |
| OHD-CSS-GF-F1-1030 |  | De-Shuttering of Columns & wall | 15.56d | 2014-06-08 | 2014-06-23 | OHD-CSS-GF-F1-1020 SS+3.33d, OHD-CSS-GF-F1-1020 FF+2.22d | 464.89d | 0d | Formwork [1454.97 M2]; Carpenter [4278 h]; Helper-Carpenter [1833 h] |
| OHD-CSS-GF-F1-1040 |  | Shuttering For Slab & Beams | 14.44d | 2014-06-11 | 2014-06-26 | OHD-CSS-GF-F1-1030 SS+3.33d, OHD-CSS-GF-F1-1030 FF+2.22d | 464.89d | 0d | Formwork [1351.67 M2]; Carpenter [3973.91 h]; Helper-Carpenter [1703.1 h] |
| OHD-CSS-GF-F1-1050 |  | Reinforcement for Slab & Beams | 8.89d | 2014-06-19 | 2014-06-28 | OHD-CSS-GF-F1-1040 SS+3.33d, OHD-CSS-GF-F1-1040 FF+2.22d | 464.89d | 0d | Steel Reinforcement [65.03 Ton]; Steel Fixer [1626 h]; Helper-Steel Fixer [1625.75 h] |
| OHD-CSS-GF-F1-1060 |  | MEP embedded works in Slab | 5.56d | 2014-06-25 | 2014-06-30 | OHD-CSS-GF-F1-1050 SS+3.33d, OHD-CSS-GF-F1-1050 FF+2.22d | 464.89d | 0d | MEP Mnhrs [250 h] |
| OHD-CSS-GF-F1-1070 |  | Casting of Slab & Beams | 1.11d | 2014-07-01 | 2014-07-02 | OHD-CSS-GF-F1-1060 SS+3.33d, OHD-CSS-GF-F1-1060 FF+2.22d | 464.89d | 0d | Concrete [466 M3]; Mason-Concrete [699 h]; Helper-Concrete [300 h] |
| OHD-CSS-GF-F1-1080 |  | De-Shuttering For Slab | 16.67d | 2014-07-26 | 2014-08-11 | OHD-CSS-GF-F1-1070 FS+23.33d | 464.89d | 32.22d | Formwork [1500.04 M2]; Carpenter [4410 h]; Helper-Carpenter [1890 h] |

| ID | WBS | Activity | Duration | Start | Finish | Predecessors | Total float | Free float | Resources |
| --- | --- | --- | --- | --- | --- | --- | --- | --- | --- |
|  | 2 | **PART F2** |  | 2014-06-16 | 2014-09-12 |  |  |  |  |
| OHD-CSS-GF-F2-1000 |  | Reinforcement for Columns & Wall | 10d | 2014-06-16 | 2014-06-26 | OHD-CSS-B1-F2-1070 FS+3.33d | 432.67d | 0d | Steel Reinforcement [71.73 Ton]; Steel Fixer [1793 h]; Helper-Steel Fixer [1793.21 h] |
| OHD-CSS-GF-F2-1010 |  | Shuttering for Verticals- Formwork | 16.67d | 2014-06-18 | 2014-07-04 | OHD-CSS-GF-F2-1000 SS+2.22d, OHD-CSS-GF-F2-1000 FF+3.33d | 432.67d | 0d | Formwork [1490.9 M2]; Carpenter [4383.24 h]; Helper-Carpenter [1878.53 h] |
| OHD-CSS-GF-F2-1020 |  | Casting of Columns & wall | 4.44d | 2014-07-02 | 2014-07-07 | OHD-CSS-GF-F2-1010 SS+3.33d, OHD-CSS-GF-F2-1010 FF+2.22d | 432.67d | 0d | Concrete [514 M3]; Mason-Concrete [771 h]; Helper-Concrete [330 h] |
| OHD-CSS-GF-F2-1030 |  | De-Shuttering of Columns & wall | 17.78d | 2014-07-06 | 2014-07-23 | OHD-CSS-GF-F2-1020 SS+3.33d, OHD-CSS-GF-F2-1020 FF+2.22d | 432.67d | 0d | Formwork [1654.55 M2]; Carpenter [4864 h]; Helper-Carpenter [2085 h] |
| OHD-CSS-GF-F2-1040 |  | Shuttering For Slab & Beams | 16.67d | 2014-07-09 | 2014-07-26 | OHD-CSS-GF-F2-1030 SS+3.33d, OHD-CSS-GF-F2-1030 FF+2.22d | 432.67d | 0d | Formwork [1537.31 M2]; Carpenter [4519.68 h]; Helper-Carpenter [1937.01 h] |
| OHD-CSS-GF-F2-1050 |  | Reinforcement for Slab & Beams | 10d | 2014-07-18 | 2014-07-28 | OHD-CSS-GF-F2-1040 SS+3.33d, OHD-CSS-GF-F2-1040 FF+2.22d | 432.67d | 0d | Steel Reinforcement [73.96 Ton]; Steel Fixer [1849 h]; Helper-Steel Fixer [1849.03 h] |
| OHD-CSS-GF-F2-1060 |  | MEP embedded works in Slab | 5.56d | 2014-07-25 | 2014-07-30 | OHD-CSS-GF-F2-1050 SS+3.33d, OHD-CSS-GF-F2-1050 FF+2.22d | 432.67d | 0d | MEP Mnhrs [250 h] |
| OHD-CSS-GF-F2-1070 |  | Casting of Slab & Beams | 1.11d | 2014-07-31 | 2014-08-01 | OHD-CSS-GF-F2-1060 SS+3.33d, OHD-CSS-GF-F2-1060 FF+2.22d | 432.67d | 0d | Concrete [530 M3]; Mason-Concrete [795 h]; Helper-Concrete [341 h] |
| OHD-CSS-GF-F2-1080 |  | De-Shuttering For Slab | 18.89d | 2014-08-25 | 2014-09-12 | OHD-CSS-GF-F2-1070 FS+23.33d | 432.67d | 0d | Formwork [1706.05 M2]; Carpenter [5016 h]; Helper-Carpenter [2150 h] |
|  | 6 | **PLAZA -BUILDINGS ROOF** |  | 2014-08-14 | 2014-12-06 |  |  |  |  |
| OHD-CSS-RF-PL-1000 |  | Reinforcement for Columns & Wall | 15.56d | 2014-08-14 | 2014-08-29 | OHD-CSS-GF-E1-1070 FS+3.33d | 348.22d | 0d | Steel Reinforcement [108.29 Ton]; Steel Fixer [2707 h]; Helper-Steel Fixer [2707.26 h] |
| OHD-CSS-RF-PL-1010 |  | Shuttering for Verticals- Formwork | 24.44d | 2014-08-16 | 2014-09-09 | OHD-CSS-RF-PL-1000 SS+2.22d, OHD-CSS-RF-PL-1000 FF+3.33d | 348.22d | 0d | Formwork [2250.85 M2]; Carpenter [6617.5 h]; Helper-Carpenter [2836.07 h] |
| OHD-CSS-RF-PL-1020 |  | Casting of Columns & wall | 4.44d | 2014-09-07 | 2014-09-11 | OHD-CSS-RF-PL-1010 SS+3.33d, OHD-CSS-RF-PL-1010 FF+2.22d | 348.22d | 0d | Concrete [776 M3]; Mason-Concrete [1164 h]; Helper-Concrete [499 h] |
| OHD-CSS-RF-PL-1030 |  | De-Shuttering of Columns & wall | 26.67d | 2014-09-10 | 2014-10-07 | OHD-CSS-RF-PL-1020 SS+3.33d, OHD-CSS-RF-PL-1020 FF+2.22d | 348.22d | 0d | Formwork [2497.92 M2]; Carpenter [7344 h]; Helper-Carpenter [3147 h] |
| OHD-CSS-RF-PL-1040 |  | Shuttering For Slab & Beams | 25.56d | 2014-09-14 | 2014-10-09 | OHD-CSS-RF-PL-1030 SS+3.33d, OHD-CSS-RF-PL-1030 FF+2.22d | 348.22d | 0d | Formwork [2320.46 M2]; Carpenter [6822.16 h]; Helper-Carpenter [2923.78 h] |
| OHD-CSS-RF-PL-1050 |  | Reinforcement for Slab & Beams | 15.56d | 2014-09-26 | 2014-10-11 | OHD-CSS-RF-PL-1040 SS+3.33d, OHD-CSS-RF-PL-1040 FF+2.22d | 348.22d | 0d | Steel Reinforcement [111.64 Ton]; Steel Fixer [2791 h]; Helper-Steel Fixer [2790.98 h] |
| OHD-CSS-RF-PL-1060 |  | MEP embedded works in Slab | 5.56d | 2014-10-08 | 2014-10-14 | OHD-CSS-RF-PL-1050 SS+3.33d, OHD-CSS-RF-PL-1050 FF+2.22d | 348.22d | 0d | MEP Mnhrs [250 h] |
| OHD-CSS-RF-PL-1070 |  | Casting of Slab & Beams | 1.11d | 2014-10-15 | 2014-10-16 | OHD-CSS-RF-PL-1060 SS+3.33d, OHD-CSS-RF-PL-1060 FF+2.22d | 348.22d | 0d | Concrete [800 M3]; Mason-Concrete [1200 h]; Helper-Concrete [514 h] |
| OHD-CSS-RF-PL-1080 |  | De-Shuttering For Slab | 27.78d | 2014-11-08 | 2014-12-06 | OHD-CSS-RF-PL-1070 FS+23.33d | 348.22d | 0d | Formwork [2575.18 M2]; Carpenter [7571 h]; Helper-Carpenter [3245 h] |
|  | 1 | **FINISHING** |  | 2013-11-27 | 2015-01-18 |  |  |  |  |
|  | 1 | **BASEMENT LEVEL 4** |  | 2013-11-27 | 2014-06-20 |  |  |  |  |
|  | 1 | **PART E** |  | 2013-11-27 | 2014-06-20 |  |  |  |  |
|  | 1 | **MASONRY WORK** |  | 2013-11-27 | 2014-05-18 |  |  |  |  |
| OHD-CFN-B4-E-1020 |  | Partitions | 4.44d | 2013-11-27 | 2013-12-01 |  | 761.56d | 735.56d | Partitions; TECH-Partitions; Helper-Partitions |
| OHD-CFN-B4-E-1000 |  | Block works | 4.44d | 2014-05-08 | 2014-05-12 | OHD-CSS-B3-E1-1080 FS+2.22d, OHD-CSS-B3-E2-1080 FS+2.22d | 560.44d | 0d | Block; TECH-Block; Helper-Block |
| OHD-CFN-B4-E-1010 |  | Plastering works | 4.44d | 2014-05-13 | 2014-05-18 | OHD-CFN-B4-E-1000 SS+5.56d, OHD-CFN-B4-E-1000 FF+5.56d | 560.44d | 0d | Plaster; TECH-Plaster; Helper-Plaster |

| ID | WBS | Activity | Duration | Start | Finish | Predecessors | Total float | Free float | Resources |
| --- | --- | --- | --- | --- | --- | --- | --- | --- | --- |
|  | 2 | **CEILING** |  | 2014-05-19 | 2014-05-29 |  |  |  |  |
| OHD-CFN-B4-E-1030 |  | Painting & Coating | 4.44d | 2014-05-19 | 2014-05-23 | OHD-CFN-B4-E-1010 SS+5.56d, OHD-CFN-B4-E-1010 FF+5.56d | 560.44d | 0d | Paint; Painter; Helper-Paint |
| OHD-CFN-B4-E-1040 |  | False Ceiling | 4.44d | 2014-05-24 | 2014-05-29 | OHD-CFN-B4-E-1030 SS+5.56d, OHD-CFN-B4-E-1030 FF+5.56d | 560.44d | 0d | False Ceiling; TECH-False Ceiling; Helper-False Ceiling |
|  | 3 | **WALL** |  | 2014-05-30 | 2014-06-09 |  |  |  |  |
| OHD-CFN-B4-E-1050 |  | Painting & Coating | 4.44d | 2014-05-30 | 2014-06-03 | OHD-CFN-B4-E-1040 SS+5.56d, OHD-CFN-B4-E-1040 FF+5.56d | 560.44d | 0d | Paint; Painter; Helper-Paint |
| OHD-CFN-B4-E-1060 |  | Ceramic Tiles | 4.44d | 2014-06-05 | 2014-06-09 | OHD-CFN-B4-E-1050 SS+5.56d, OHD-CFN-B4-E-1050 FF+5.56d | 560.44d | 0d | Ceramic Tiles; TECH-Ceramic Tiles; Helper-Ceramic Tiles |
|  | 4 | **FLOOR** |  | 2014-06-10 | 2014-06-20 |  |  |  |  |
| OHD-CFN-B4-E-1090 |  | Floor Screed | 4.44d | 2014-06-10 | 2014-06-14 | OHD-CFN-B4-E-1060 FF+5.56d, OHD-CFN-B4-E-1060 SS+5.56d | 560.44d | 0d | Screed; Mason-Concrete; Helper-Screed |
| OHD-CFN-B4-E-1070 |  | Granite Tiles | 4.44d | 2014-06-16 | 2014-06-20 | OHD-CFN-B4-E-1090 SS+5.56d, OHD-CFN-B4-E-1090 FF+5.56d | 560.44d | 534.44d | Granite Tiles; TECH-Granite Tiles; Helper-Granite Tiles |
| OHD-CFN-B4-E-1080 |  | Vinyle Tile | 4.44d | 2014-06-16 | 2014-06-20 | OHD-CFN-B4-E-1090 SS+5.56d, OHD-CFN-B4-E-1090 FF+5.56d | 560.44d | 534.44d | Vinyle Tile; TECH-Vinyle Tile; Helper-Vinyle Tile |
|  | 2 | **PART F** |  | 2013-11-27 | 2014-06-03 |  |  |  |  |
|  | 1 | **MASONRY WORK** |  | 2013-11-27 | 2014-05-01 |  |  |  |  |
| OHD-CFN-B4-F-1020 |  | Partitions | 4.44d | 2013-11-27 | 2013-12-01 |  | 761.56d | 735.56d | Partitions; TECH-Partitions; Helper-Partitions |
| OHD-CFN-B4-F-1000 |  | Block works | 4.44d | 2014-04-21 | 2014-04-25 | OHD-CSS-B3-F1-1080, OHD-CSS-B3-F2-1080 | 577.11d | 0d | Block; TECH-Block; Helper-Block |
| OHD-CFN-B4-F-1010 |  | Plastering works | 4.44d | 2014-04-27 | 2014-05-01 | OHD-CFN-B4-F-1000 SS+5.56d, OHD-CFN-B4-F-1000 FF+5.56d | 577.11d | 0d | Plaster; TECH-Plaster; Helper-Plaster |
|  | 2 | **CEILING** |  | 2014-05-02 | 2014-05-12 |  |  |  |  |
| OHD-CFN-B4-F-1030 |  | Painting & Coating | 4.44d | 2014-05-02 | 2014-05-07 | OHD-CFN-B4-F-1010 SS+5.56d, OHD-CFN-B4-F-1010 FF+5.56d | 577.11d | 0d | Paint; Painter; Helper-Paint |
| OHD-CFN-B4-F-1040 |  | False Ceiling | 4.44d | 2014-05-08 | 2014-05-12 | OHD-CFN-B4-F-1030 SS+5.56d, OHD-CFN-B4-F-1030 FF+5.56d | 577.11d | 0d | False Ceiling; TECH-False Ceiling; Helper-False Ceiling |
|  | 3 | **WALL** |  | 2014-05-13 | 2014-05-23 |  |  |  |  |
| OHD-CFN-B4-F-1050 |  | Painting & Coating | 4.44d | 2014-05-13 | 2014-05-18 | OHD-CFN-B4-F-1040 SS+5.56d, OHD-CFN-B4-F-1040 FF+5.56d | 577.11d | 0d | Paint; Painter; Helper-Paint |
| OHD-CFN-B4-F-1060 |  | Ceramic Tiles | 4.44d | 2014-05-19 | 2014-05-23 | OHD-CFN-B4-F-1050 SS+5.56d, OHD-CFN-B4-F-1050 FF+5.56d | 577.11d | 0d | Ceramic Tiles; TECH-Ceramic Tiles; Helper-Ceramic Tiles |
|  | 4 | **FLOOR** |  | 2014-05-24 | 2014-06-03 |  |  |  |  |
| OHD-CFN-B4-F-1090 |  | Floor Screed | 4.44d | 2014-05-24 | 2014-05-29 | OHD-CFN-B4-F-1060 FF+5.56d, OHD-CFN-B4-F-1060 SS+5.56d | 577.11d | 0d | Screed; Mason-Concrete; Helper-Screed |
| OHD-CFN-B4-F-1070 |  | Granite Tiles | 4.44d | 2014-05-30 | 2014-06-03 | OHD-CFN-B4-F-1090 SS+5.56d, OHD-CFN-B4-F-1090 FF+5.56d | 577.11d | 551.11d | Granite Tiles; TECH-Granite Tiles; Helper-Granite Tiles |
| OHD-CFN-B4-F-1080 |  | Vinyle Tile | 4.44d | 2014-05-30 | 2014-06-03 | OHD-CFN-B4-F-1090 SS+5.56d, OHD-CFN-B4-F-1090 FF+5.56d | 577.11d | 551.11d | Vinyle Tile; TECH-Vinyle Tile; Helper-Vinyle Tile |

| ID | WBS | Activity | Duration | Start | Finish | Predecessors | Total float | Free float | Resources |
| --- | --- | --- | --- | --- | --- | --- | --- | --- | --- |
|  | 2 | **BASEMENT LEVEL 3** |  | 2013-11-27 | 2014-07-31 |  |  |  |  |
|  | 1 | **PART E** |  | 2013-11-27 | 2014-07-31 |  |  |  |  |
|  | 1 | **MASONRY WORK** |  | 2013-11-27 | 2014-06-28 |  |  |  |  |
| OHD-CFN-B3-E-1020 |  | Partitions | 4.44d | 2013-11-27 | 2013-12-01 |  | 761.56d | 735.56d | Partitions; TECH-Partitions; Helper-Partitions |
| OHD-CFN-B3-E-1000 |  | Block works | 4.44d | 2014-06-18 | 2014-06-22 | OHD-CSS-B2-E1-1080, OHD-CSS-B2-E2-1080 | 519.33d | 0d | Block; TECH-Block; Helper-Block |
| OHD-CFN-B3-E-1010 |  | Plastering works | 4.44d | 2014-06-23 | 2014-06-28 | OHD-CFN-B3-E-1000 SS+5.56d, OHD-CFN-B3-E-1000 FF+5.56d | 519.33d | 0d | Plaster; TECH-Plaster; Helper-Plaster |
|  | 2 | **CEILING** |  | 2014-06-29 | 2014-07-09 |  |  |  |  |
| OHD-CFN-B3-E-1030 |  | Painting & Coating | 4.44d | 2014-06-29 | 2014-07-03 | OHD-CFN-B3-E-1010 SS+5.56d, OHD-CFN-B3-E-1010 FF+5.56d | 519.33d | 0d | Paint; Painter; Helper-Paint |
| OHD-CFN-B3-E-1040 |  | False Ceiling | 4.44d | 2014-07-05 | 2014-07-09 | OHD-CFN-B3-E-1030 SS+5.56d, OHD-CFN-B3-E-1030 FF+5.56d | 519.33d | 0d | False Ceiling; TECH-False Ceiling; Helper-False Ceiling |
|  | 3 | **WALL** |  | 2014-07-10 | 2014-07-20 |  |  |  |  |
| OHD-CFN-B3-E-1050 |  | Painting & Coating | 4.44d | 2014-07-10 | 2014-07-14 | OHD-CFN-B3-E-1040 SS+5.56d, OHD-CFN-B3-E-1040 FF+5.56d | 519.33d | 0d | Paint; Painter; Helper-Paint |
| OHD-CFN-B3-E-1060 |  | Ceramic Tiles | 4.44d | 2014-07-16 | 2014-07-20 | OHD-CFN-B3-E-1050 SS+5.56d, OHD-CFN-B3-E-1050 FF+5.56d | 519.33d | 0d | Ceramic Tiles; TECH-Ceramic Tiles; Helper-Ceramic Tiles |
|  | 4 | **FLOOR** |  | 2014-07-21 | 2014-07-31 |  |  |  |  |
| OHD-CFN-B3-E-1090 |  | Floor Screed | 4.44d | 2014-07-21 | 2014-07-26 | OHD-CFN-B3-E-1060 FF+5.56d, OHD-CFN-B3-E-1060 SS+5.56d | 519.33d | 0d | Screed; Mason-Concrete; Helper-Screed |
| OHD-CFN-B3-E-1070 |  | Granite Tiles | 4.44d | 2014-07-27 | 2014-07-31 | OHD-CFN-B3-E-1090 SS+5.56d, OHD-CFN-B3-E-1090 FF+5.56d | 519.33d | 493.33d | Granite Tiles; TECH-Granite Tiles; Helper-Granite Tiles |
| OHD-CFN-B3-E-1080 |  | Vinyle Tile | 4.44d | 2014-07-27 | 2014-07-31 | OHD-CFN-B3-E-1090 SS+5.56d, OHD-CFN-B3-E-1090 FF+5.56d | 519.33d | 493.33d | Vinyle Tile; TECH-Vinyle Tile; Helper-Vinyle Tile |
|  | 2 | **PART F** |  | 2013-11-27 | 2014-07-19 |  |  |  |  |
|  | 1 | **MASONRY WORK** |  | 2013-11-27 | 2014-06-16 |  |  |  |  |
| OHD-CFN-B3-F-1020 |  | Partitions | 4.44d | 2013-11-27 | 2013-12-01 |  | 761.56d | 735.56d | Partitions; TECH-Partitions; Helper-Partitions |
| OHD-CFN-B3-F-1000 |  | Block works | 4.44d | 2014-06-06 | 2014-06-10 | OHD-CSS-B2-F1-1080, OHD-CSS-B2-F2-1080 | 531.56d | 0d | Block; TECH-Block; Helper-Block |
| OHD-CFN-B3-F-1010 |  | Plastering works | 4.44d | 2014-06-11 | 2014-06-16 | OHD-CFN-B3-F-1000 SS+5.56d, OHD-CFN-B3-F-1000 FF+5.56d | 531.56d | 0d | Plaster; TECH-Plaster; Helper-Plaster |
|  | 2 | **CEILING** |  | 2014-06-17 | 2014-06-27 |  |  |  |  |
| OHD-CFN-B3-F-1030 |  | Painting & Coating | 4.44d | 2014-06-17 | 2014-06-21 | OHD-CFN-B3-F-1010 SS+5.56d, OHD-CFN-B3-F-1010 FF+5.56d | 531.56d | 0d | Paint; Painter; Helper-Paint |
| OHD-CFN-B3-F-1040 |  | False Ceiling | 4.44d | 2014-06-22 | 2014-06-27 | OHD-CFN-B3-F-1030 SS+5.56d, OHD-CFN-B3-F-1030 FF+5.56d | 531.56d | 0d | False Ceiling; TECH-False Ceiling; Helper-False Ceiling |

| ID | WBS | Activity | Duration | Start | Finish | Predecessors | Total float | Free float | Resources |
| --- | --- | --- | --- | --- | --- | --- | --- | --- | --- |
|  | 3 | **WALL** |  | 2014-06-28 | 2014-07-08 |  |  |  |  |
| OHD-CFN-B3-F-1050 |  | Painting & Coating | 4.44d | 2014-06-28 | 2014-07-02 | OHD-CFN-B3-F-1040 SS+5.56d, OHD-CFN-B3-F-1040 FF+5.56d | 531.56d | 0d | Paint; Painter; Helper-Paint |
| OHD-CFN-B3-F-1060 |  | Ceramic Tiles | 4.44d | 2014-07-03 | 2014-07-08 | OHD-CFN-B3-F-1050 SS+5.56d, OHD-CFN-B3-F-1050 FF+5.56d | 531.56d | 0d | Ceramic Tiles; TECH-Ceramic Tiles; Helper-Ceramic Tiles |
|  | 4 | **FLOOR** |  | 2014-07-09 | 2014-07-19 |  |  |  |  |
| OHD-CFN-B3-F-1090 |  | Floor Screed | 4.44d | 2014-07-09 | 2014-07-13 | OHD-CFN-B3-F-1060 FF+5.56d, OHD-CFN-B3-F-1060 SS+5.56d | 531.56d | 0d | Screed; Mason-Concrete; Helper-Screed |
| OHD-CFN-B3-F-1070 |  | Granite Tiles | 4.44d | 2014-07-15 | 2014-07-19 | OHD-CFN-B3-F-1090 SS+5.56d, OHD-CFN-B3-F-1090 FF+5.56d | 531.56d | 505.56d | Granite Tiles; TECH-Granite Tiles; Helper-Granite Tiles |
| OHD-CFN-B3-F-1080 |  | Vinyle Tile | 4.44d | 2014-07-15 | 2014-07-19 | OHD-CFN-B3-F-1090 SS+5.56d, OHD-CFN-B3-F-1090 FF+5.56d | 531.56d | 505.56d | Vinyle Tile; TECH-Vinyle Tile; Helper-Vinyle Tile |
|  | 3 | **BASEMENT LEVEL 2** |  | 2013-11-27 | 2014-09-12 |  |  |  |  |
|  | 1 | **PART E** |  | 2013-11-27 | 2014-09-12 |  |  |  |  |
|  | 1 | **MASONRY WORK** |  | 2013-11-27 | 2014-08-10 |  |  |  |  |
| OHD-CFN-B2-E-1020 |  | Partitions | 4.44d | 2013-11-27 | 2013-12-01 |  | 761.56d | 735.56d | Partitions; TECH-Partitions; Helper-Partitions |
| OHD-CFN-B2-E-1000 |  | Block works | 4.44d | 2014-07-31 | 2014-08-05 | OHD-CSS-B1-E1-1080, OHD-CSS-B1-E2-1080 | 476d | 0d | Block; TECH-Block; Helper-Block |
| OHD-CFN-B2-E-1010 |  | Plastering works | 4.44d | 2014-08-06 | 2014-08-10 | OHD-CFN-B2-E-1000 SS+5.56d, OHD-CFN-B2-E-1000 FF+5.56d | 476d | 0d | Plaster; TECH-Plaster; Helper-Plaster |
|  | 2 | **CEILING** |  | 2014-08-11 | 2014-08-21 |  |  |  |  |
| OHD-CFN-B2-E-1030 |  | Painting & Coating | 4.44d | 2014-08-11 | 2014-08-16 | OHD-CFN-B2-E-1010 SS+5.56d, OHD-CFN-B2-E-1010 FF+5.56d | 476d | 0d | Paint; Painter; Helper-Paint |
| OHD-CFN-B2-E-1040 |  | False Ceiling | 4.44d | 2014-08-17 | 2014-08-21 | OHD-CFN-B2-E-1030 SS+5.56d, OHD-CFN-B2-E-1030 FF+5.56d | 476d | 0d | False Ceiling; TECH-False Ceiling; Helper-False Ceiling |
|  | 3 | **WALL** |  | 2014-08-22 | 2014-09-01 |  |  |  |  |
| OHD-CFN-B2-E-1050 |  | Painting & Coating | 4.44d | 2014-08-22 | 2014-08-27 | OHD-CFN-B2-E-1040 SS+5.56d, OHD-CFN-B2-E-1040 FF+5.56d | 476d | 0d | Paint; Painter; Helper-Paint |
| OHD-CFN-B2-E-1060 |  | Ceramic Tiles | 4.44d | 2014-08-28 | 2014-09-01 | OHD-CFN-B2-E-1050 SS+5.56d, OHD-CFN-B2-E-1050 FF+5.56d | 476d | 0d | Ceramic Tiles; TECH-Ceramic Tiles; Helper-Ceramic Tiles |
|  | 4 | **FLOOR** |  | 2014-09-03 | 2014-09-12 |  |  |  |  |
| OHD-CFN-B2-E-1090 |  | Floor Screed | 4.44d | 2014-09-03 | 2014-09-07 | OHD-CFN-B2-E-1060 FF+5.56d, OHD-CFN-B2-E-1060 SS+5.56d | 476d | 0d | Screed; Mason-Concrete; Helper-Screed |
| OHD-CFN-B2-E-1070 |  | Granite Tiles | 4.44d | 2014-09-08 | 2014-09-12 | OHD-CFN-B2-E-1090 SS+5.56d, OHD-CFN-B2-E-1090 FF+5.56d | 476d | 450d | Granite Tiles; TECH-Granite Tiles; Helper-Granite Tiles |
| OHD-CFN-B2-E-1080 |  | Vinyle Tile | 4.44d | 2014-09-08 | 2014-09-12 | OHD-CFN-B2-E-1090 SS+5.56d, OHD-CFN-B2-E-1090 FF+5.56d | 476d | 450d | Vinyle Tile; TECH-Vinyle Tile; Helper-Vinyle Tile |
|  | 2 | **PART F** |  | 2013-11-27 | 2014-09-02 |  |  |  |  |
|  | 1 | **MASONRY WORK** |  | 2013-11-27 | 2014-07-31 |  |  |  |  |
| OHD-CFN-B2-F-1020 |  | Partitions | 4.44d | 2013-11-27 | 2013-12-01 |  | 761.56d | 735.56d | Partitions; TECH-Partitions; Helper-Partitions |
| OHD-CFN-B2-F-1000 |  | Block works | 4.44d | 2014-07-21 | 2014-07-26 | OHD-CSS-B1-F1-1080, OHD-CSS-B1-F2-1080 | 486d | 0d | Block; TECH-Block; Helper-Block |
| OHD-CFN-B2-F-1010 |  | Plastering works | 4.44d | 2014-07-27 | 2014-07-31 | OHD-CFN-B2-F-1000 SS+5.56d, OHD-CFN-B2-F-1000 FF+5.56d | 486d | 0d | Plaster; TECH-Plaster; Helper-Plaster |

| ID | WBS | Activity | Duration | Start | Finish | Predecessors | Total float | Free float | Resources |
| --- | --- | --- | --- | --- | --- | --- | --- | --- | --- |
|  | 2 | **CEILING** |  | 2014-08-01 | 2014-08-11 |  |  |  |  |
| OHD-CFN-B2-F-1030 |  | Painting & Coating | 4.44d | 2014-08-01 | 2014-08-06 | OHD-CFN-B2-F-1010 SS+5.56d, OHD-CFN-B2-F-1010 FF+5.56d | 486d | 0d | Paint; Painter; Helper-Paint |
| OHD-CFN-B2-F-1040 |  | False Ceiling | 4.44d | 2014-08-07 | 2014-08-11 | OHD-CFN-B2-F-1030 SS+5.56d, OHD-CFN-B2-F-1030 FF+5.56d | 486d | 0d | False Ceiling; TECH-False Ceiling; Helper-False Ceiling |
|  | 3 | **WALL** |  | 2014-08-12 | 2014-08-22 |  |  |  |  |
| OHD-CFN-B2-F-1050 |  | Painting & Coating | 4.44d | 2014-08-12 | 2014-08-17 | OHD-CFN-B2-F-1040 SS+5.56d, OHD-CFN-B2-F-1040 FF+5.56d | 486d | 0d | Paint; Painter; Helper-Paint |
| OHD-CFN-B2-F-1060 |  | Ceramic Tiles | 4.44d | 2014-08-18 | 2014-08-22 | OHD-CFN-B2-F-1050 SS+5.56d, OHD-CFN-B2-F-1050 FF+5.56d | 486d | 0d | Ceramic Tiles; TECH-Ceramic Tiles; Helper-Ceramic Tiles |
|  | 4 | **FLOOR** |  | 2014-08-24 | 2014-09-02 |  |  |  |  |
| OHD-CFN-B2-F-1090 |  | Floor Screed | 4.44d | 2014-08-24 | 2014-08-28 | OHD-CFN-B2-F-1060 FF+5.56d, OHD-CFN-B2-F-1060 SS+5.56d | 486d | 0d | Screed; Mason-Concrete; Helper-Screed |
| OHD-CFN-B2-F-1070 |  | Granite Tiles | 4.44d | 2014-08-29 | 2014-09-02 | OHD-CFN-B2-F-1090 SS+5.56d, OHD-CFN-B2-F-1090 FF+5.56d | 486d | 460d | Granite Tiles; TECH-Granite Tiles; Helper-Granite Tiles |
| OHD-CFN-B2-F-1080 |  | Vinyle Tile | 4.44d | 2014-08-29 | 2014-09-02 | OHD-CFN-B2-F-1090 SS+5.56d, OHD-CFN-B2-F-1090 FF+5.56d | 486d | 460d | Vinyle Tile; TECH-Vinyle Tile; Helper-Vinyle Tile |
|  | 4 | **BASEMENT LEVEL 1** |  | 2013-11-27 | 2014-11-01 |  |  |  |  |
|  | 1 | **PART E** |  | 2013-11-27 | 2014-11-01 |  |  |  |  |
|  | 1 | **MASONRY WORK** |  | 2013-11-27 | 2014-09-29 |  |  |  |  |
| OHD-CFN-B1-E-1020 |  | Partitions | 4.44d | 2013-11-27 | 2013-12-01 |  | 761.56d | 735.56d | Partitions; TECH-Partitions; Helper-Partitions |
| OHD-CFN-B1-E-1000 |  | Block works | 4.44d | 2014-09-19 | 2014-09-24 | OHD-CSS-GF-E1-1080, OHD-CSS-GF-E2-1080 | 426d | 0d | Block; TECH-Block; Helper-Block |
| OHD-CFN-B1-E-1010 |  | Plastering works | 4.44d | 2014-09-25 | 2014-09-29 | OHD-CFN-B1-E-1000 SS+5.56d, OHD-CFN-B1-E-1000 FF+5.56d | 426d | 0d | Plaster; TECH-Plaster; Helper-Plaster |
|  | 2 | **CEILING** |  | 2014-09-30 | 2014-10-10 |  |  |  |  |
| OHD-CFN-B1-E-1030 |  | Painting & Coating | 4.44d | 2014-09-30 | 2014-10-05 | OHD-CFN-B1-E-1010 SS+5.56d, OHD-CFN-B1-E-1010 FF+5.56d | 426d | 0d | Paint; Painter; Helper-Paint |
| OHD-CFN-B1-E-1040 |  | False Ceiling | 4.44d | 2014-10-06 | 2014-10-10 | OHD-CFN-B1-E-1030 SS+5.56d, OHD-CFN-B1-E-1030 FF+5.56d | 426d | 0d | False Ceiling; TECH-False Ceiling; Helper-False Ceiling |
|  | 3 | **WALL** |  | 2014-10-11 | 2014-10-21 |  |  |  |  |
| OHD-CFN-B1-E-1050 |  | Painting & Coating | 4.44d | 2014-10-11 | 2014-10-16 | OHD-CFN-B1-E-1040 SS+5.56d, OHD-CFN-B1-E-1040 FF+5.56d | 426d | 0d | Paint; Painter; Helper-Paint |
| OHD-CFN-B1-E-1060 |  | Ceramic Tiles | 4.44d | 2014-10-17 | 2014-10-21 | OHD-CFN-B1-E-1050 SS+5.56d, OHD-CFN-B1-E-1050 FF+5.56d | 426d | 0d | Ceramic Tiles; TECH-Ceramic Tiles; Helper-Ceramic Tiles |
|  | 4 | **FLOOR** |  | 2014-10-23 | 2014-11-01 |  |  |  |  |
| OHD-CFN-B1-E-1090 |  | Floor Screed | 4.44d | 2014-10-23 | 2014-10-27 | OHD-CFN-B1-E-1060 FF+5.56d, OHD-CFN-B1-E-1060 SS+5.56d | 426d | 0d | Screed; Mason-Concrete; Helper-Screed |
| OHD-CFN-B1-E-1070 |  | Granite Tiles | 4.44d | 2014-10-28 | 2014-11-01 | OHD-CFN-B1-E-1090 SS+5.56d, OHD-CFN-B1-E-1090 FF+5.56d | 426d | 400d | Granite Tiles; TECH-Granite Tiles; Helper-Granite Tiles |
| OHD-CFN-B1-E-1080 |  | Vinyle Tile | 4.44d | 2014-10-28 | 2014-11-01 | OHD-CFN-B1-E-1090 SS+5.56d, OHD-CFN-B1-E-1090 FF+5.56d | 426d | 400d | Vinyle Tile; TECH-Vinyle Tile; Helper-Vinyle Tile |

| ID | WBS | Activity | Duration | Start | Finish | Predecessors | Total float | Free float | Resources |
| --- | --- | --- | --- | --- | --- | --- | --- | --- | --- |
|  | 2 | **PART F** |  | 2013-11-27 | 2014-10-26 |  |  |  |  |
|  | 1 | **MASONRY WORK** |  | 2013-11-27 | 2014-09-22 |  |  |  |  |
| OHD-CFN-B1-F-1020 |  | Partitions | 4.44d | 2013-11-27 | 2013-12-01 |  | 761.56d | 735.56d | Partitions; TECH-Partitions; Helper-Partitions |
| OHD-CFN-B1-F-1000 |  | Block works | 4.44d | 2014-09-13 | 2014-09-17 | OHD-CSS-GF-F1-1080, OHD-CSS-GF-F2-1080 | 432.67d | 0d | Block; TECH-Block; Helper-Block |
| OHD-CFN-B1-F-1010 |  | Plastering works | 4.44d | 2014-09-18 | 2014-09-22 | OHD-CFN-B1-F-1000 SS+5.56d, OHD-CFN-B1-F-1000 FF+5.56d | 432.67d | 0d | Plaster; TECH-Plaster; Helper-Plaster |
|  | 2 | **CEILING** |  | 2014-09-24 | 2014-10-04 |  |  |  |  |
| OHD-CFN-B1-F-1030 |  | Painting & Coating | 4.44d | 2014-09-24 | 2014-09-28 | OHD-CFN-B1-F-1010 SS+5.56d, OHD-CFN-B1-F-1010 FF+5.56d | 432.67d | 0d | Paint; Painter; Helper-Paint |
| OHD-CFN-B1-F-1040 |  | False Ceiling | 4.44d | 2014-09-29 | 2014-10-04 | OHD-CFN-B1-F-1030 SS+5.56d, OHD-CFN-B1-F-1030 FF+5.56d | 432.67d | 0d | False Ceiling; TECH-False Ceiling; Helper-False Ceiling |
|  | 3 | **WALL** |  | 2014-10-05 | 2014-10-15 |  |  |  |  |
| OHD-CFN-B1-F-1050 |  | Painting & Coating | 4.44d | 2014-10-05 | 2014-10-09 | OHD-CFN-B1-F-1040 SS+5.56d, OHD-CFN-B1-F-1040 FF+5.56d | 432.67d | 0d | Paint; Painter; Helper-Paint |
| OHD-CFN-B1-F-1060 |  | Ceramic Tiles | 4.44d | 2014-10-10 | 2014-10-15 | OHD-CFN-B1-F-1050 SS+5.56d, OHD-CFN-B1-F-1050 FF+5.56d | 432.67d | 0d | Ceramic Tiles; TECH-Ceramic Tiles; Helper-Ceramic Tiles |
|  | 4 | **FLOOR** |  | 2014-10-16 | 2014-10-26 |  |  |  |  |
| OHD-CFN-B1-F-1090 |  | Floor Screed | 4.44d | 2014-10-16 | 2014-10-20 | OHD-CFN-B1-F-1060 FF+5.56d, OHD-CFN-B1-F-1060 SS+5.56d | 432.67d | 0d | Screed; Mason-Concrete; Helper-Screed |
| OHD-CFN-B1-F-1070 |  | Granite Tiles | 4.44d | 2014-10-21 | 2014-10-26 | OHD-CFN-B1-F-1090 SS+5.56d, OHD-CFN-B1-F-1090 FF+5.56d | 432.67d | 406.67d | Granite Tiles; TECH-Granite Tiles; Helper-Granite Tiles |
| OHD-CFN-B1-F-1080 |  | Vinyle Tile | 4.44d | 2014-10-21 | 2014-10-26 | OHD-CFN-B1-F-1090 SS+5.56d, OHD-CFN-B1-F-1090 FF+5.56d | 432.67d | 406.67d | Vinyle Tile; TECH-Vinyle Tile; Helper-Vinyle Tile |
|  | 5 | **PLAZA LEVEL- BUILDINGS** |  | 2013-11-27 | 2015-01-18 |  |  |  |  |
|  | 1 | **PART E** |  | 2013-11-27 | 2015-01-18 |  |  |  |  |
|  | 1 | **MASONRY WORK** |  | 2013-11-27 | 2014-12-16 |  |  |  |  |
| OHD-CFN-PL-E-1020 |  | Partitions | 4.44d | 2013-11-27 | 2013-12-01 |  | 761.56d | 735.56d | Partitions; TECH-Partitions; Helper-Partitions |
| OHD-CFN-PL-E-1000 |  | Block works | 4.44d | 2014-12-06 | 2014-12-10 | OHD-CSS-RF-PL-1080 | 348.22d | 0d | Block; TECH-Block; Helper-Block |
| OHD-CFN-PL-E-1010 |  | Plastering works | 4.44d | 2014-12-12 | 2014-12-16 | OHD-CFN-PL-E-1000 SS+5.56d, OHD-CFN-PL-E-1000 FF+5.56d | 348.22d | 0d | Plaster; TECH-Plaster; Helper-Plaster |
|  | 2 | **CEILING** |  | 2014-12-17 | 2014-12-27 |  |  |  |  |
| OHD-CFN-PL-E-1030 |  | Painting & Coating | 4.44d | 2014-12-17 | 2014-12-21 | OHD-CFN-PL-E-1010 SS+5.56d, OHD-CFN-PL-E-1010 FF+5.56d | 348.22d | 0d | Paint; Painter; Helper-Paint |
| OHD-CFN-PL-E-1040 |  | False Ceiling | 4.44d | 2014-12-23 | 2014-12-27 | OHD-CFN-PL-E-1030 SS+5.56d, OHD-CFN-PL-E-1030 FF+5.56d | 348.22d | 0d | False Ceiling; TECH-False Ceiling; Helper-False Ceiling |

| ID | WBS | Activity | Duration | Start | Finish | Predecessors | Total float | Free float | Resources |
| --- | --- | --- | --- | --- | --- | --- | --- | --- | --- |
|  | 3 | **WALL** |  | 2014-12-28 | 2015-01-07 |  |  |  |  |
| OHD-CFN-PL-E-1050 |  | Painting & Coating | 4.44d | 2014-12-28 | 2015-01-02 | OHD-CFN-PL-E-1040 SS+5.56d, OHD-CFN-PL-E-1040 FF+5.56d | 348.22d | 0d | Paint; Painter; Helper-Paint |
| OHD-CFN-PL-E-1060 |  | Ceramic Tiles | 4.44d | 2015-01-03 | 2015-01-07 | OHD-CFN-PL-E-1050 SS+5.56d, OHD-CFN-PL-E-1050 FF+5.56d | 348.22d | 0d | Ceramic Tiles; TECH-Ceramic Tiles; Helper-Ceramic Tiles |
|  | 4 | **FLOOR** |  | 2015-01-08 | 2015-01-18 |  |  |  |  |
| OHD-CFN-PL-E-1090 |  | Floor Screed | 4.44d | 2015-01-08 | 2015-01-13 | OHD-CFN-PL-E-1060 FF+5.56d, OHD-CFN-PL-E-1060 SS+5.56d | 348.22d | 0d | Screed; Mason-Concrete; Helper-Screed |
| OHD-CFN-PL-E-1070 |  | Granite Tiles | 4.44d | 2015-01-14 | 2015-01-18 | OHD-CFN-PL-E-1090 SS+5.56d, OHD-CFN-PL-E-1090 FF+5.56d | 348.22d | 322.22d | Granite Tiles; TECH-Granite Tiles; Helper-Granite Tiles |
| OHD-CFN-PL-E-1080 |  | Vinyle Tile | 4.44d | 2015-01-14 | 2015-01-18 | OHD-CFN-PL-E-1090 SS+5.56d, OHD-CFN-PL-E-1090 FF+5.56d | 348.22d | 322.22d | Vinyle Tile; TECH-Vinyle Tile; Helper-Vinyle Tile |
|  | 2 | **PART F** |  | 2013-11-27 | 2015-01-18 |  |  |  |  |
|  | 1 | **MASONRY WORK** |  | 2013-11-27 | 2014-12-16 |  |  |  |  |
| OHD-CFN-PL-F-1020 |  | Partitions | 4.44d | 2013-11-27 | 2013-12-01 |  | 761.56d | 735.56d | Partitions; TECH-Partitions; Helper-Partitions |
| OHD-CFN-PL-F-1000 |  | Block works | 4.44d | 2014-12-06 | 2014-12-10 | OHD-CSS-RF-PL-1080 | 348.22d | 0d | Block; TECH-Block; Helper-Block |
| OHD-CFN-PL-F-1010 |  | Plastering works | 4.44d | 2014-12-12 | 2014-12-16 | OHD-CFN-PL-F-1000 SS+5.56d, OHD-CFN-PL-F-1000 FF+5.56d | 348.22d | 0d | Plaster; TECH-Plaster; Helper-Plaster |
|  | 2 | **CEILING** |  | 2014-12-17 | 2014-12-27 |  |  |  |  |
| OHD-CFN-PL-F-1030 |  | Painting & Coating | 4.44d | 2014-12-17 | 2014-12-21 | OHD-CFN-PL-F-1010 SS+5.56d, OHD-CFN-PL-F-1010 FF+5.56d | 348.22d | 0d | Paint; Painter; Helper-Paint |
| OHD-CFN-PL-F-1040 |  | False Ceiling | 4.44d | 2014-12-23 | 2014-12-27 | OHD-CFN-PL-F-1030 SS+5.56d, OHD-CFN-PL-F-1030 FF+5.56d | 348.22d | 0d | False Ceiling; TECH-False Ceiling; Helper-False Ceiling |
|  | 3 | **WALL** |  | 2014-12-28 | 2015-01-07 |  |  |  |  |
| OHD-CFN-PL-F-1050 |  | Painting & Coating | 4.44d | 2014-12-28 | 2015-01-02 | OHD-CFN-PL-F-1040 SS+5.56d, OHD-CFN-PL-F-1040 FF+5.56d | 348.22d | 0d | Paint; Painter; Helper-Paint |
| OHD-CFN-PL-F-1060 |  | Ceramic Tiles | 4.44d | 2015-01-03 | 2015-01-07 | OHD-CFN-PL-F-1050 SS+5.56d, OHD-CFN-PL-F-1050 FF+5.56d | 348.22d | 0d | Ceramic Tiles; TECH-Ceramic Tiles; Helper-Ceramic Tiles |
|  | 4 | **FLOOR** |  | 2015-01-08 | 2015-01-18 |  |  |  |  |
| OHD-CFN-PL-F-1090 |  | Floor Screed | 4.44d | 2015-01-08 | 2015-01-13 | OHD-CFN-PL-F-1060 FF+5.56d, OHD-CFN-PL-F-1060 SS+5.56d | 348.22d | 0d | Screed; Mason-Concrete; Helper-Screed |
| OHD-CFN-PL-F-1070 |  | Granite Tiles | 4.44d | 2015-01-14 | 2015-01-18 | OHD-CFN-PL-F-1090 SS+5.56d, OHD-CFN-PL-F-1090 FF+5.56d | 348.22d | 322.22d | Granite Tiles; TECH-Granite Tiles; Helper-Granite Tiles |
| OHD-CFN-PL-F-1080 |  | Vinyle Tile | 4.44d | 2015-01-14 | 2015-01-18 | OHD-CFN-PL-F-1090 SS+5.56d, OHD-CFN-PL-F-1090 FF+5.56d | 348.22d | 322.22d | Vinyle Tile; TECH-Vinyle Tile; Helper-Vinyle Tile |
|  | 4 | **MEP** |  | 2013-11-27 | 2014-05-18 |  |  |  |  |
|  | 6 | **BASEMENT LEVEL 4** |  | 2013-11-27 | 2014-05-18 |  |  |  |  |
|  | 2 | **PLUMBING** |  | 2013-11-27 | 2014-03-12 |  |  |  |  |
| OHD-CMP-B4PL-1000 |  | First Fix | 88.89d | 2013-11-27 | 2014-02-23 |  | 640.44d | 0d |  |
| OHD-CMP-B4PL-1010 |  | Second Fix | 100d | 2013-11-27 | 2014-03-06 |  | 599.33d | 0d |  |
| OHD-CMP-B4PL-1020 |  | Third Fix | 105.56d | 2013-11-27 | 2014-03-12 |  | 593.78d | 0d |  |

| ID | WBS | Activity | Duration | Start | Finish | Predecessors | Total float | Free float |
| --- | --- | --- | --- | --- | --- | --- | --- | --- |
|  | 3 | **MECHANICAL** |  | 2013-12-13 | 2014-04-03 |  |  |  |
| OHD-CMP-B4PL-1030 |  | First Fix | 88.89d | 2013-12-13 | 2014-03-12 | OHD-CMP-B4PL-1000 SS+11.11d, OHD-CMP-B4PL-1000 FF+16.67d | 640.44d | 0d |
| OHD-CMP-B4PL-1040 |  | Second Fix | 100d | 2013-12-19 | 2014-03-29 | OHD-CMP-B4PL-1010 SS+22.22d, OHD-CMP-B4PL-1010 FF+22.22d | 599.33d | 0d |
| OHD-CMP-B4PL-1050 |  | Third Fix | 105.56d | 2013-12-19 | 2014-04-03 | OHD-CMP-B4PL-1020 SS+22.22d, OHD-CMP-B4PL-1020 FF+11.11d | 593.78d | 0d |
|  | 5 | **FIRE FIGHTING** |  | 2013-12-24 | 2014-04-25 |  |  |  |
| OHD-CMP-B4PL-1060 |  | First Fix | 88.89d | 2013-12-24 | 2014-03-23 | OHD-CMP-B4PL-1030 SS+8.89d, OHD-CMP-B4PL-1030 FF+11.11d | 640.44d | 0d |
| OHD-CMP-B4PL-1080 |  | Second Fix | 100d | 2014-01-10 | 2014-04-20 | OHD-CMP-B4PL-1040 SS+22.22d, OHD-CMP-B4PL-1040 FF+22.22d | 599.33d | 0d |
| OHD-CMP-B4PL-1090 |  | Third Fix | 105.56d | 2014-01-10 | 2014-04-25 | OHD-CMP-B4PL-1050 SS+22.22d, OHD-CMP-B4PL-1050 FF+22.22d | 593.78d | 0d |
|  | 4 | **ELECTRICAL** |  | 2014-01-02 | 2014-05-18 |  |  |  |
| OHD-CMP-B4PL-1070 |  | First Fix | 88.89d | 2014-01-02 | 2014-04-01 | OHD-CMP-B4PL-1060 SS+4.44d, OHD-CMP-B4PL-1060 FF+8.89d | 640.44d | 614.44d |
| OHD-CMP-B4PL-1100 |  | Second Fix | 100d | 2014-02-01 | 2014-05-12 | OHD-CMP-B4PL-1080 SS+22.22d, OHD-CMP-B4PL-1080 FF+22.22d | 599.33d | 573.33d |
| OHD-CMP-B4PL-1110 |  | Third Fix | 105.56d | 2014-02-01 | 2014-05-18 | OHD-CMP-B4PL-1090 SS+22.22d, OHD-CMP-B4PL-1090 FF+22.22d | 593.78d | 567.78d |
|  | 7 | **BASEMENT LEVEL 3** |  | 2013-11-27 | 2014-05-18 |  |  |  |
|  | 2 | **PLUMBING** |  | 2013-11-27 | 2014-03-12 |  |  |  |
| OHD-CMP-B3PL-1000 |  | First Fix | 88.89d | 2013-11-27 | 2014-02-23 |  | 640.44d | 0d |
| OHD-CMP-B3PL-1010 |  | Second Fix | 100d | 2013-11-27 | 2014-03-06 |  | 599.33d | 0d |
| OHD-CMP-B3PL-1020 |  | Third Fix | 105.56d | 2013-11-27 | 2014-03-12 |  | 593.78d | 0d |
|  | 3 | **MECHANICAL** |  | 2013-12-13 | 2014-04-03 |  |  |  |
| OHD-CMP-B3PL-1030 |  | First Fix | 88.89d | 2013-12-13 | 2014-03-12 | OHD-CMP-B3PL-1000 SS+11.11d, OHD-CMP-B3PL-1000 FF+16.67d | 640.44d | 0d |
| OHD-CMP-B3PL-1040 |  | Second Fix | 100d | 2013-12-19 | 2014-03-29 | OHD-CMP-B3PL-1010 SS+22.22d, OHD-CMP-B3PL-1010 FF+22.22d | 599.33d | 0d |
| OHD-CMP-B3PL-1050 |  | Third Fix | 105.56d | 2013-12-19 | 2014-04-03 | OHD-CMP-B3PL-1020 SS+22.22d, OHD-CMP-B3PL-1020 FF+11.11d | 593.78d | 0d |
|  | 5 | **FIRE FIGHTING** |  | 2013-12-24 | 2014-04-25 |  |  |  |
| OHD-CMP-B3PL-1060 |  | First Fix | 88.89d | 2013-12-24 | 2014-03-23 | OHD-CMP-B3PL-1030 SS+8.89d, OHD-CMP-B3PL-1030 FF+11.11d | 640.44d | 0d |
| OHD-CMP-B3PL-1080 |  | Second Fix | 100d | 2014-01-10 | 2014-04-20 | OHD-CMP-B3PL-1040 SS+22.22d, OHD-CMP-B3PL-1040 FF+22.22d | 599.33d | 0d |
| OHD-CMP-B3PL-1090 |  | Third Fix | 105.56d | 2014-01-10 | 2014-04-25 | OHD-CMP-B3PL-1050 SS+22.22d, OHD-CMP-B3PL-1050 FF+22.22d | 593.78d | 0d |

| ID | WBS | Activity | Duration | Start | Finish | Predecessors | Total float | Free float |
| --- | --- | --- | --- | --- | --- | --- | --- | --- |
|  | 4 | **ELECTRICAL** |  | 2014-01-02 | 2014-05-18 |  |  |  |
| OHD-CMP-B3PL-1070 |  | First Fix | 88.89d | 2014-01-02 | 2014-04-01 | OHD-CMP-B3PL-1060 SS+4.44d, OHD-CMP-B3PL-1060 FF+8.89d | 640.44d | 614.44d |
| OHD-CMP-B3PL-1100 |  | Second Fix | 100d | 2014-02-01 | 2014-05-12 | OHD-CMP-B3PL-1080 SS+22.22d, OHD-CMP-B3PL-1080 FF+22.22d | 599.33d | 573.33d |
| OHD-CMP-B3PL-1110 |  | Third Fix | 105.56d | 2014-02-01 | 2014-05-18 | OHD-CMP-B3PL-1090 SS+22.22d, OHD-CMP-B3PL-1090 FF+22.22d | 593.78d | 567.78d |
|  | 8 | **BASEMENT LEVEL 2** |  | 2013-11-27 | 2014-05-18 |  |  |  |
|  | 2 | **PLUMBING** |  | 2013-11-27 | 2014-03-12 |  |  |  |
| OHD-CMP-B2PL-1000 |  | First Fix | 88.89d | 2013-11-27 | 2014-02-23 |  | 640.44d | 0d |
| OHD-CMP-B2PL-1010 |  | Second Fix | 100d | 2013-11-27 | 2014-03-06 |  | 599.33d | 0d |
| OHD-CMP-B2PL-1020 |  | Third Fix | 105.56d | 2013-11-27 | 2014-03-12 |  | 593.78d | 0d |
|  | 3 | **MECHANICAL** |  | 2013-12-13 | 2014-04-03 |  |  |  |
| OHD-CMP-B2PL-1030 |  | First Fix | 88.89d | 2013-12-13 | 2014-03-12 | OHD-CMP-B2PL-1000 SS+11.11d, OHD-CMP-B2PL-1000 FF+16.67d | 640.44d | 0d |
| OHD-CMP-B2PL-1040 |  | Second Fix | 100d | 2013-12-19 | 2014-03-29 | OHD-CMP-B2PL-1010 SS+22.22d, OHD-CMP-B2PL-1010 FF+22.22d | 599.33d | 0d |
| OHD-CMP-B2PL-1050 |  | Third Fix | 105.56d | 2013-12-19 | 2014-04-03 | OHD-CMP-B2PL-1020 SS+22.22d, OHD-CMP-B2PL-1020 FF+11.11d | 593.78d | 0d |
|  | 5 | **FIRE FIGHTING** |  | 2013-12-24 | 2014-04-25 |  |  |  |
| OHD-CMP-B2PL-1060 |  | First Fix | 88.89d | 2013-12-24 | 2014-03-23 | OHD-CMP-B2PL-1030 SS+8.89d, OHD-CMP-B2PL-1030 FF+11.11d | 640.44d | 0d |
| OHD-CMP-B2PL-1080 |  | Second Fix | 100d | 2014-01-10 | 2014-04-20 | OHD-CMP-B2PL-1040 SS+22.22d, OHD-CMP-B2PL-1040 FF+22.22d | 599.33d | 0d |
| OHD-CMP-B2PL-1090 |  | Third Fix | 105.56d | 2014-01-10 | 2014-04-25 | OHD-CMP-B2PL-1050 SS+22.22d, OHD-CMP-B2PL-1050 FF+22.22d | 593.78d | 0d |
|  | 4 | **ELECTRICAL** |  | 2014-01-02 | 2014-05-18 |  |  |  |
| OHD-CMP-B2PL-1070 |  | First Fix | 88.89d | 2014-01-02 | 2014-04-01 | OHD-CMP-B2PL-1060 SS+4.44d, OHD-CMP-B2PL-1060 FF+8.89d | 640.44d | 614.44d |
| OHD-CMP-B2PL-1100 |  | Second Fix | 100d | 2014-02-01 | 2014-05-12 | OHD-CMP-B2PL-1080 SS+22.22d, OHD-CMP-B2PL-1080 FF+22.22d | 599.33d | 573.33d |
| OHD-CMP-B2PL-1110 |  | Third Fix | 105.56d | 2014-02-01 | 2014-05-18 | OHD-CMP-B2PL-1090 SS+22.22d, OHD-CMP-B2PL-1090 FF+22.22d | 593.78d | 567.78d |
|  | 9 | **BASEMENT LEVEL 1** |  | 2013-11-27 | 2014-05-18 |  |  |  |
|  | 2 | **PLUMBING** |  | 2013-11-27 | 2014-03-12 |  |  |  |
| OHD-CMP-B1PL-1000 |  | First Fix | 88.89d | 2013-11-27 | 2014-02-23 |  | 640.44d | 0d |
| OHD-CMP-B1PL-1010 |  | Second Fix | 100d | 2013-11-27 | 2014-03-06 |  | 599.33d | 0d |
| OHD-CMP-B1PL-1020 |  | Third Fix | 105.56d | 2013-11-27 | 2014-03-12 |  | 593.78d | 0d |

| ID | WBS | Activity | Duration | Start | Finish | Predecessors | Total float | Free float |
| --- | --- | --- | --- | --- | --- | --- | --- | --- |
|  | 3 | **MECHANICAL** |  | 2013-12-13 | 2014-04-03 |  |  |  |
| OHD-CMP-B1PL-1030 |  | First Fix | 88.89d | 2013-12-13 | 2014-03-12 | OHD-CMP-B1PL-1000 SS+11.11d, OHD-CMP-B1PL-1000 FF+16.67d | 640.44d | 0d |
| OHD-CMP-B1PL-1040 |  | Second Fix | 100d | 2013-12-19 | 2014-03-29 | OHD-CMP-B1PL-1010 SS+22.22d, OHD-CMP-B1PL-1010 FF+22.22d | 599.33d | 0d |
| OHD-CMP-B1PL-1050 |  | Third Fix | 105.56d | 2013-12-19 | 2014-04-03 | OHD-CMP-B1PL-1020 SS+22.22d, OHD-CMP-B1PL-1020 FF+11.11d | 593.78d | 0d |
|  | 5 | **FIRE FIGHTING** |  | 2013-12-24 | 2014-04-25 |  |  |  |
| OHD-CMP-B1PL-1060 |  | First Fix | 88.89d | 2013-12-24 | 2014-03-23 | OHD-CMP-B1PL-1030 SS+8.89d, OHD-CMP-B1PL-1030 FF+11.11d | 640.44d | 0d |
| OHD-CMP-B1PL-1080 |  | Second Fix | 100d | 2014-01-10 | 2014-04-20 | OHD-CMP-B1PL-1040 SS+22.22d, OHD-CMP-B1PL-1040 FF+22.22d | 599.33d | 0d |
| OHD-CMP-B1PL-1090 |  | Third Fix | 105.56d | 2014-01-10 | 2014-04-25 | OHD-CMP-B1PL-1050 SS+22.22d, OHD-CMP-B1PL-1050 FF+22.22d | 593.78d | 0d |
|  | 4 | **ELECTRICAL** |  | 2014-01-02 | 2014-05-18 |  |  |  |
| OHD-CMP-B1PL-1070 |  | First Fix | 88.89d | 2014-01-02 | 2014-04-01 | OHD-CMP-B1PL-1060 SS+4.44d, OHD-CMP-B1PL-1060 FF+8.89d | 640.44d | 614.44d |
| OHD-CMP-B1PL-1100 |  | Second Fix | 100d | 2014-02-01 | 2014-05-12 | OHD-CMP-B1PL-1080 SS+22.22d, OHD-CMP-B1PL-1080 FF+22.22d | 599.33d | 573.33d |
| OHD-CMP-B1PL-1110 |  | Third Fix | 105.56d | 2014-02-01 | 2014-05-18 | OHD-CMP-B1PL-1090 SS+22.22d, OHD-CMP-B1PL-1090 FF+22.22d | 593.78d | 567.78d |
|  | 5 | **PLAZA LEVEL- BUILDINGS** |  | 2013-11-27 | 2014-05-18 |  |  |  |
|  | 2 | **PLUMBING** |  | 2013-11-27 | 2014-03-12 |  |  |  |
| OHD-CMP-BUPL-1000 |  | First Fix | 88.89d | 2013-11-27 | 2014-02-23 |  | 640.44d | 0d |
| OHD-CMP-BUPL-1010 |  | Second Fix | 100d | 2013-11-27 | 2014-03-06 |  | 599.33d | 0d |
| OHD-CMP-BUPL-1020 |  | Third Fix | 105.56d | 2013-11-27 | 2014-03-12 |  | 593.78d | 0d |
|  | 3 | **MECHANICAL** |  | 2013-12-13 | 2014-04-03 |  |  |  |
| OHD-CMP-BUPL-1030 |  | First Fix | 88.89d | 2013-12-13 | 2014-03-12 | OHD-CMP-BUPL-1000 SS+11.11d, OHD-CMP-BUPL-1000 FF+16.67d | 640.44d | 0d |
| OHD-CMP-BUPL-1040 |  | Second Fix | 100d | 2013-12-19 | 2014-03-29 | OHD-CMP-BUPL-1010 SS+22.22d, OHD-CMP-BUPL-1010 FF+22.22d | 599.33d | 0d |
| OHD-CMP-BUPL-1050 |  | Third Fix | 105.56d | 2013-12-19 | 2014-04-03 | OHD-CMP-BUPL-1020 SS+22.22d, OHD-CMP-BUPL-1020 FF+11.11d | 593.78d | 0d |
|  | 5 | **FIRE FIGHTING** |  | 2013-12-24 | 2014-04-25 |  |  |  |
| OHD-CMP-BUPL-1060 |  | First Fix | 88.89d | 2013-12-24 | 2014-03-23 | OHD-CMP-BUPL-1030 SS+8.89d, OHD-CMP-BUPL-1030 FF+11.11d | 640.44d | 0d |
| OHD-CMP-BUPL-1080 |  | Second Fix | 100d | 2014-01-10 | 2014-04-20 | OHD-CMP-BUPL-1040 SS+22.22d, OHD-CMP-BUPL-1040 FF+22.22d | 599.33d | 0d |
| OHD-CMP-BUPL-1090 |  | Third Fix | 105.56d | 2014-01-10 | 2014-04-25 | OHD-CMP-BUPL-1050 SS+22.22d, OHD-CMP-BUPL-1050 FF+22.22d | 593.78d | 0d |

| ID | WBS | Activity | Duration | Start | Finish | Predecessors | Total float | Free float | Resources |
| --- | --- | --- | --- | --- | --- | --- | --- | --- | --- |
|  | 4 | **ELECTRICAL** |  | 2014-01-02 | 2014-05-18 |  |  |  |  |
| OHD-CMP-BUPL-1070 |  | First Fix | 88.89d | 2014-01-02 | 2014-04-01 | OHD-CMP-BUPL-1060 SS+4.44d, OHD-CMP-BUPL-1060 FF+8.89d | 640.44d | 614.44d |  |
| OHD-CMP-BUPL-1100 |  | Second Fix | 100d | 2014-02-01 | 2014-05-12 | OHD-CMP-BUPL-1080 SS+22.22d, OHD-CMP-BUPL-1080 FF+22.22d | 599.33d | 573.33d |  |
| OHD-CMP-BUPL-1110 |  | Third Fix | 105.56d | 2014-02-01 | 2014-05-18 | OHD-CMP-BUPL-1090 SS+22.22d, OHD-CMP-BUPL-1090 FF+22.22d | 593.78d | 567.78d |  |
|  | 7 | **OPERA HOUSE** |  | 2013-11-27 | 2014-12-28 |  |  |  |  |
|  | 1 | **PARKING STRUCTURAL** |  | 2013-11-27 | 2014-11-10 |  |  |  |  |
|  | 13 | **STRUCTURAL** |  | 2013-11-27 | 2014-09-17 |  |  |  |  |
|  | 1 | **BASEMENT LEVEL 4** |  | 2013-11-27 | 2014-02-03 |  |  |  |  |
|  | 1 | **PART A @ -10.95 M - RAFT SLAB -PARKING** |  | 2013-11-27 | 2014-02-03 |  |  |  |  |
|  | 1 | **PART A1 STAGE 01** |  | 2013-11-27 | 2014-02-03 |  |  |  |  |
| OHD-CSS-B4-A1-1010 |  | Site Preparation | 2.22d | 2013-11-27 | 2013-11-29 |  | 417.11d | 0d | Excavation [530 M3]; Excavator [40 h] |
| OHD-CSS-B4-A1-1020 |  | Compaction & Anti -termite under Blinding | 1.11d | 2013-11-29 | 2013-11-30 | OHD-CSS-B4-A1-1010 | 417.11d | 0d | Anti -termite [2110.71 M2]; TECH-Anti -termite [50 h] |
| OHD-CSS-B4-A1-1030 |  | Casting of Blinding | 1.11d | 2013-11-30 | 2013-12-01 | OHD-CSS-B4-A1-1020 | 417.11d | 0d | Blinding [181.77 M3]; Mason-Concrete [382 h]; Helper-Blinding [163.6 h] |
| OHD-CSS-B4-A1-1040 |  | Water Proofing System | 6.67d | 2013-12-01 | 2013-12-08 | OHD-CSS-B4-A1-1030 | 417.11d | 0d | TECH-Water Proofing [355 h]; Helper-Water Proofing [152 h]; Water Proofing [5066.51 M2] |
| OHD-CSS-B4-A1-1050 |  | MEP Under Ground Service | 5.56d | 2013-12-08 | 2013-12-13 | OHD-CSS-B4-A1-1040 | 417.11d | 0d | MEP Mnhrs [250 h] |
| OHD-CSS-B4-A1-1060 |  | Pile Head treatments | 3.33d | 2013-12-13 | 2013-12-16 | OHD-CSS-B4-A1-1050 | 417.11d | 0d | Pile [25 No]; TECH-Water Proofing [36 h] |
| OHD-CSS-B4-A1-1070 |  | Protection Screed | 1.11d | 2013-12-17 | 2013-12-18 | OHD-CSS-B4-A1-1060 | 417.11d | 0d | Screed [121.18 M2]; Mason-Concrete [339 h]; Helper-Screed [145.42 h] |
| OHD-CSS-B4-A1-1080 |  | Steel Reinforcement | 30d | 2013-12-18 | 2014-01-17 | OHD-CSS-B4-A1-1070 | 417.11d | 0d | Steel Reinforcement [216.03 Ton]; Steel Fixer [5401 h]; Helper-Steel Fixer [5400.85 h] |
| OHD-CSS-B4-A1-1090 |  | Shuttering For Slab - Formwork | 16.67d | 2014-01-17 | 2014-02-02 | OHD-CSS-B4-A1-1080 | 417.11d | 0d | Formwork [4451.09 M2]; Carpenter [4362.06 h]; Helper-Carpenter [1869.46 h] |
| OHD-CSS-B4-A1-1100 |  | Casting of Slab | 1.11d | 2014-02-02 | 2014-02-03 | OHD-CSS-B4-A1-1090 | 417.11d | 0d | Concrete [1697 M3]; Mason-Concrete [3394 h]; Helper-Concrete [1455 h] |
|  | 2 | **PART A2 STAGE 02** |  | 2013-11-27 | 2014-01-24 |  |  |  |  |
| OHD-CSS-B4-A2-1010 |  | Site Preparation | 2.22d | 2013-11-27 | 2013-11-29 |  | 457.11d | 0d | Excavation [530 M3]; Excavator [40 h] |
| OHD-CSS-B4-A2-1020 |  | Compaction & Anti -termite under Blinding | 1.11d | 2013-11-29 | 2013-11-30 | OHD-CSS-B4-A2-1010 | 457.11d | 0d | Anti -termite [1716.43 M2]; TECH-Anti -termite [50 h] |
| OHD-CSS-B4-A2-1030 |  | Casting of Blinding | 1.11d | 2013-11-30 | 2013-12-01 | OHD-CSS-B4-A2-1020 | 457.11d | 0d | Blinding [147.82 M3]; Mason-Concrete [310 h]; Helper-Blinding [133.04 h] |
| OHD-CSS-B4-A2-1040 |  | Water Proofing System | 5.56d | 2013-12-01 | 2013-12-06 | OHD-CSS-B4-A2-1030 | 457.11d | 0d | TECH-Water Proofing [288 h]; Helper-Water Proofing [124 h]; Water Proofing [4120.09 M2] |
| OHD-CSS-B4-A2-1050 |  | MEP Under Ground Service | 5.56d | 2013-12-07 | 2013-12-12 | OHD-CSS-B4-A2-1040 | 457.11d | 0d | MEP Mnhrs [250 h] |
| OHD-CSS-B4-A2-1060 |  | Pile Head treatments | 3.33d | 2013-12-12 | 2013-12-15 | OHD-CSS-B4-A2-1050 | 457.11d | 0d | Pile [20 No]; TECH-Water Proofing [36 h] |
| OHD-CSS-B4-A2-1070 |  | Protection Screed | 1.11d | 2013-12-15 | 2013-12-16 | OHD-CSS-B4-A2-1060 | 457.11d | 0d | Screed [98.55 M2]; Mason-Concrete [276 h]; Helper-Screed [118.25 h] |
| OHD-CSS-B4-A2-1080 |  | Steel Reinforcement | 24.44d | 2013-12-17 | 2014-01-10 | OHD-CSS-B4-A2-1070 | 457.11d | 0d | Steel Reinforcement [175.68 Ton]; Steel Fixer [4392 h]; Helper-Steel Fixer [4391.97 h] |
| OHD-CSS-B4-A2-1090 |  | Shuttering For Slab - Formwork | 13.33d | 2014-01-10 | 2014-01-23 | OHD-CSS-B4-A2-1080 | 457.11d | 0d | Formwork [3619.62 M2]; Carpenter [3547.23 h]; Helper-Carpenter [1520.24 h] |
| OHD-CSS-B4-A2-1100 |  | Casting of Slab | 1.11d | 2014-01-23 | 2014-01-24 | OHD-CSS-B4-A2-1090 | 457.11d | 0d | Concrete [1380 M3]; Mason-Concrete [2760 h]; Helper-Concrete [1183 h] |

| ID | WBS | Activity | Duration | Start | Finish | Predecessors | Total float | Free float | Resources |
| --- | --- | --- | --- | --- | --- | --- | --- | --- | --- |
|  | 2 | **BASEMENT LEVEL 3** |  | 2014-01-28 | 2014-04-24 |  |  |  |  |
|  | 1 | **PART A @ -07.45 M** |  | 2014-01-28 | 2014-04-24 |  |  |  |  |
|  | 1 | **PART A1** |  | 2014-02-07 | 2014-04-24 |  |  |  |  |
| OHD-CSS-B3-A1-1000 |  | Reinforcement for Columns & Wall | 10d | 2014-02-07 | 2014-02-17 | OHD-CSS-B4-A1-1100 FS+3.33d | 417.11d | 0d | Steel Reinforcement [67.85 Ton]; Steel Fixer [1696 h]; Helper-Steel Fixer [1696.32 h] |
| OHD-CSS-B3-A1-1010 |  | Shuttering for Verticals- Formwork | 15.56d | 2014-02-09 | 2014-02-24 | OHD-CSS-B3-A1-1000 SS+2.22d, OHD-CSS-B3-A1-1000 FF+3.33d | 417.11d | 0d | Formwork [1398.01 M2]; Carpenter [4110.16 h]; Helper-Carpenter [1761.5 h] |
| OHD-CSS-B3-A1-1020 |  | Casting of Columns & wall | 4.44d | 2014-02-22 | 2014-02-27 | OHD-CSS-B3-A1-1010 SS+3.33d, OHD-CSS-B3-A1-1010 FF+2.22d | 417.11d | 0d | Concrete [533 M3]; Mason-Concrete [800 h]; Helper-Concrete [343 h] |
| OHD-CSS-B3-A1-1030 |  | De-Shuttering of Columns & wall | 10d | 2014-02-26 | 2014-03-08 | OHD-CSS-B3-A1-1020 SS+3.33d, OHD-CSS-B3-A1-1020 FF+2.22d | 417.11d | 0d | Formwork [927.23 M2]; Carpenter [2726 h]; Helper-Carpenter [1168 h] |
| OHD-CSS-B3-A1-1040 |  | Shuttering For Slab & Beams | 4.44d | 2014-03-05 | 2014-03-10 | OHD-CSS-B3-A1-1030 SS+3.33d, OHD-CSS-B3-A1-1030 FF+2.22d | 417.11d | 0d | Formwork [1303.59 M2]; Carpenter [1277.52 h]; Helper-Carpenter [547.51 h] |
| OHD-CSS-B3-A1-1050 |  | Reinforcement for Slab & Beams | 8.89d | 2014-03-09 | 2014-03-18 | OHD-CSS-B3-A1-1040 SS+3.33d, OHD-CSS-B3-A1-1040 FF+2.22d | 417.11d | 0d | Steel Reinforcement [63.27 Ton]; Steel Fixer [1582 h]; Helper-Steel Fixer [1581.74 h] |
| OHD-CSS-B3-A1-1060 |  | MEP embedded works in Slab | 5.56d | 2014-03-14 | 2014-03-20 | OHD-CSS-B3-A1-1050 SS+3.33d, OHD-CSS-B3-A1-1050 FF+2.22d | 417.11d | 0d | MEP Mnhrs [250 h] |
| OHD-CSS-B3-A1-1070 |  | Casting of Slab & Beams | 1.11d | 2014-03-21 | 2014-03-22 | OHD-CSS-B3-A1-1060 SS+3.33d, OHD-CSS-B3-A1-1060 FF+2.22d | 417.11d | 0d | Concrete [497 M3]; Mason-Concrete [746 h]; Helper-Concrete [320 h] |
| OHD-CSS-B3-A1-1080 |  | De-Shuttering For Slab | 10d | 2014-04-14 | 2014-04-24 | OHD-CSS-B3-A1-1070 FS+23.33d | 573.78d | 0d | Formwork [864.6 M2]; Carpenter [2542 h]; Helper-Carpenter [1089 h] |
|  | 2 | **PART A2** |  | 2014-01-28 | 2014-04-04 |  |  |  |  |
| OHD-CSS-B3-A2-1000 |  | Reinforcement for Columns & Wall | 7.78d | 2014-01-28 | 2014-02-04 | OHD-CSS-B4-A2-1100 FS+3.33d | 457.11d | 0d | Steel Reinforcement [53.47 Ton]; Steel Fixer [1337 h]; Helper-Steel Fixer [1336.69 h] |
| OHD-CSS-B3-A2-1010 |  | Shuttering for Verticals- Formwork | 12.22d | 2014-01-30 | 2014-02-11 | OHD-CSS-B3-A2-1000 SS+2.22d, OHD-CSS-B3-A2-1000 FF+3.33d | 457.11d | 0d | Formwork [1101.62 M2]; Carpenter [3238.77 h]; Helper-Carpenter [1388.05 h] |
| OHD-CSS-B3-A2-1020 |  | Casting of Columns & wall | 4.44d | 2014-02-09 | 2014-02-13 | OHD-CSS-B3-A2-1010 SS+3.33d, OHD-CSS-B3-A2-1010 FF+2.22d | 457.11d | 0d | Concrete [420 M3]; Mason-Concrete [630 h]; Helper-Concrete [270 h] |
| OHD-CSS-B3-A2-1030 |  | De-Shuttering of Columns & wall | 7.78d | 2014-02-12 | 2014-02-20 | OHD-CSS-B3-A2-1020 SS+3.33d, OHD-CSS-B3-A2-1020 FF+2.22d | 457.11d | 0d | Formwork [730.65 M2]; Carpenter [2148 h]; Helper-Carpenter [921 h] |
| OHD-CSS-B3-A2-1040 |  | Shuttering For Slab & Beams | 4.44d | 2014-02-18 | 2014-02-22 | OHD-CSS-B3-A2-1030 SS+3.33d, OHD-CSS-B3-A2-1030 FF+2.22d | 457.11d | 0d | Formwork [1028.18 M2]; Carpenter [1007.62 h]; Helper-Carpenter [431.84 h] |
| OHD-CSS-B3-A2-1050 |  | Reinforcement for Slab & Beams | 6.67d | 2014-02-21 | 2014-02-28 | OHD-CSS-B3-A2-1040 SS+3.33d, OHD-CSS-B3-A2-1040 FF+2.22d | 457.11d | 0d | Steel Reinforcement [49.9 Ton]; Steel Fixer [1248 h]; Helper-Steel Fixer [1247.57 h] |
| OHD-CSS-B3-A2-1060 |  | MEP embedded works in Slab | 5.56d | 2014-02-25 | 2014-03-02 | OHD-CSS-B3-A2-1050 SS+3.33d, OHD-CSS-B3-A2-1050 FF+2.22d | 457.11d | 0d | MEP Mnhrs [250 h] |
| OHD-CSS-B3-A2-1070 |  | Casting of Slab & Beams | 1.11d | 2014-03-03 | 2014-03-04 | OHD-CSS-B3-A2-1060 SS+3.33d, OHD-CSS-B3-A2-1060 FF+2.22d | 457.11d | 0d | Concrete [392 M3]; Mason-Concrete [588 h]; Helper-Concrete [252 h] |
| OHD-CSS-B3-A2-1080 |  | De-Shuttering For Slab | 7.78d | 2014-03-28 | 2014-04-04 | OHD-CSS-B3-A2-1070 FS+23.33d | 593.78d | 20d | Formwork [681.94 M2]; Carpenter [2005 h]; Helper-Carpenter [859 h] |
|  | 3 | **BASEMENT LEVEL 2** |  | 2014-03-08 | 2014-06-10 |  |  |  |  |
|  | 1 | **PART A @ -03.95 M** |  | 2014-03-08 | 2014-06-10 |  |  |  |  |
|  | 1 | **PART A1** |  | 2014-03-25 | 2014-06-10 |  |  |  |  |
| OHD-CSS-B2-A1-1000 |  | Reinforcement for Columns & Wall | 10d | 2014-03-25 | 2014-04-04 | OHD-CSS-B3-A1-1070 FS+3.33d | 417.11d | 0d | Steel Reinforcement [67.85 Ton]; Steel Fixer [1696 h]; Helper-Steel Fixer [1696.32 h] |
| OHD-CSS-B2-A1-1010 |  | Shuttering for Verticals- Formwork | 15.56d | 2014-03-28 | 2014-04-12 | OHD-CSS-B2-A1-1000 SS+2.22d, OHD-CSS-B2-A1-1000 FF+3.33d | 417.11d | 0d | Formwork [1398.01 M2]; Carpenter [4110.16 h]; Helper-Carpenter [1761.5 h] |
| OHD-CSS-B2-A1-1020 |  | Casting of Columns & wall | 4.44d | 2014-04-10 | 2014-04-14 | OHD-CSS-B2-A1-1010 SS+3.33d, OHD-CSS-B2-A1-1010 FF+2.22d | 417.11d | 0d | Concrete [533 M3]; Mason-Concrete [800 h]; Helper-Concrete [343 h] |
| OHD-CSS-B2-A1-1030 |  | De-Shuttering of Columns & wall | 10d | 2014-04-13 | 2014-04-23 | OHD-CSS-B2-A1-1020 SS+3.33d, OHD-CSS-B2-A1-1020 FF+2.22d | 417.11d | 0d | Formwork [927.23 M2]; Carpenter [2726 h]; Helper-Carpenter [1168 h] |
| OHD-CSS-B2-A1-1040 |  | Shuttering For Slab & Beams | 14.44d | 2014-04-17 | 2014-05-01 | OHD-CSS-B2-A1-1030 SS+3.33d, OHD-CSS-B2-A1-1030 FF+2.22d | 417.11d | 0d | Formwork [1303.59 M2]; Carpenter [3832.55 h]; Helper-Carpenter [1642.52 h] |
| OHD-CSS-B2-A1-1050 |  | Reinforcement for Slab & Beams | 8.89d | 2014-04-24 | 2014-05-03 | OHD-CSS-B2-A1-1040 SS+3.33d, OHD-CSS-B2-A1-1040 FF+2.22d | 417.11d | 0d | Steel Reinforcement [63.27 Ton]; Steel Fixer [1582 h]; Helper-Steel Fixer [1581.74 h] |
| OHD-CSS-B2-A1-1060 |  | MEP embedded works in Slab | 5.56d | 2014-04-30 | 2014-05-05 | OHD-CSS-B2-A1-1050 SS+3.33d, OHD-CSS-B2-A1-1050 FF+2.22d | 417.11d | 0d | MEP Mnhrs [250 h] |
| OHD-CSS-B2-A1-1070 |  | Casting of Slab & Beams | 1.11d | 2014-05-07 | 2014-05-08 | OHD-CSS-B2-A1-1060 SS+3.33d, OHD-CSS-B2-A1-1060 FF+2.22d | 417.11d | 0d | Concrete [497 M3]; Mason-Concrete [746 h]; Helper-Concrete [320 h] |
| OHD-CSS-B2-A1-1080 |  | De-Shuttering For Slab | 10d | 2014-05-31 | 2014-06-10 | OHD-CSS-B2-A1-1070 FS+23.33d | 527.11d | 0d | Formwork [864.6 M2]; Carpenter [2542 h]; Helper-Carpenter [1089 h] |

| ID | WBS | Activity | Duration | Start | Finish | Predecessors | Total float | Free float | Resources |
| --- | --- | --- | --- | --- | --- | --- | --- | --- | --- |
|  | 2 | **PART A2** |  | 2014-03-08 | 2014-05-14 |  |  |  |  |
| OHD-CSS-B2-A2-1000 |  | Reinforcement for Columns & Wall | 7.78d | 2014-03-08 | 2014-03-15 | OHD-CSS-B3-A2-1070 FS+3.33d | 457.11d | 0d | Steel Reinforcement [53.47 Ton]; Steel Fixer [1337 h]; Helper-Steel Fixer [1336.69 h] |
| OHD-CSS-B2-A2-1010 |  | Shuttering for Verticals- Formwork | 12.22d | 2014-03-10 | 2014-03-22 | OHD-CSS-B2-A2-1000 SS+2.22d, OHD-CSS-B2-A2-1000 FF+3.33d | 457.11d | 0d | Formwork [1101.62 M2]; Carpenter [3238.77 h]; Helper-Carpenter [1388.05 h] |
| OHD-CSS-B2-A2-1020 |  | Casting of Columns & wall | 4.44d | 2014-03-20 | 2014-03-24 | OHD-CSS-B2-A2-1010 SS+3.33d, OHD-CSS-B2-A2-1010 FF+2.22d | 457.11d | 0d | Concrete [420 M3]; Mason-Concrete [630 h]; Helper-Concrete [270 h] |
| OHD-CSS-B2-A2-1030 |  | De-Shuttering of Columns & wall | 7.78d | 2014-03-23 | 2014-03-31 | OHD-CSS-B2-A2-1020 SS+3.33d, OHD-CSS-B2-A2-1020 FF+2.22d | 457.11d | 0d | Formwork [730.65 M2]; Carpenter [2148 h]; Helper-Carpenter [921 h] |
| OHD-CSS-B2-A2-1040 |  | Shuttering For Slab & Beams | 11.11d | 2014-03-27 | 2014-04-07 | OHD-CSS-B2-A2-1030 SS+3.33d, OHD-CSS-B2-A2-1030 FF+2.22d | 457.11d | 0d | Formwork [1028.18 M2]; Carpenter [3022.86 h]; Helper-Carpenter [1295.51 h] |
| OHD-CSS-B2-A2-1050 |  | Reinforcement for Slab & Beams | 6.67d | 2014-04-02 | 2014-04-09 | OHD-CSS-B2-A2-1040 SS+3.33d, OHD-CSS-B2-A2-1040 FF+2.22d | 457.11d | 0d | Steel Reinforcement [49.9 Ton]; Steel Fixer [1248 h]; Helper-Steel Fixer [1247.57 h] |
| OHD-CSS-B2-A2-1060 |  | MEP embedded works in Slab | 5.56d | 2014-04-06 | 2014-04-11 | OHD-CSS-B2-A2-1050 SS+3.33d, OHD-CSS-B2-A2-1050 FF+2.22d | 457.11d | 0d | MEP Mnhrs [250 h] |
| OHD-CSS-B2-A2-1070 |  | Casting of Slab & Beams | 1.11d | 2014-04-12 | 2014-04-13 | OHD-CSS-B2-A2-1060 SS+3.33d, OHD-CSS-B2-A2-1060 FF+2.22d | 457.11d | 0d | Concrete [392 M3]; Mason-Concrete [588 h]; Helper-Concrete [252 h] |
| OHD-CSS-B2-A2-1080 |  | De-Shuttering For Slab | 7.78d | 2014-05-07 | 2014-05-14 | OHD-CSS-B2-A2-1070 FS+23.33d | 553.78d | 26.67d | Formwork [681.94 M2]; Carpenter [2005 h]; Helper-Carpenter [859 h] |
|  | 4 | **BASEMENT LEVEL 1** |  | 2014-04-17 | 2014-07-27 |  |  |  |  |
|  | 1 | **PART A @ -0.35 M** |  | 2014-04-17 | 2014-07-27 |  |  |  |  |
|  | 1 | **PART A1** |  | 2014-05-11 | 2014-07-27 |  |  |  |  |
| OHD-CSS-B1-A1-1000 |  | Reinforcement for Columns & Wall | 10d | 2014-05-11 | 2014-05-21 | OHD-CSS-B2-A1-1070 FS+3.33d | 417.11d | 0d | Steel Reinforcement [67.85 Ton]; Steel Fixer [1696 h]; Helper-Steel Fixer [1696.32 h] |
| OHD-CSS-B1-A1-1010 |  | Shuttering for Verticals- Formwork | 15.56d | 2014-05-13 | 2014-05-29 | OHD-CSS-B1-A1-1000 SS+2.22d, OHD-CSS-B1-A1-1000 FF+3.33d | 417.11d | 0d | Formwork [1398.01 M2]; Carpenter [4110.16 h]; Helper-Carpenter [1761.5 h] |
| OHD-CSS-B1-A1-1020 |  | Casting of Columns & wall | 4.44d | 2014-05-27 | 2014-05-31 | OHD-CSS-B1-A1-1010 SS+3.33d, OHD-CSS-B1-A1-1010 FF+2.22d | 417.11d | 0d | Concrete [533 M3]; Mason-Concrete [800 h]; Helper-Concrete [343 h] |
| OHD-CSS-B1-A1-1030 |  | De-Shuttering of Columns & wall | 10d | 2014-05-30 | 2014-06-09 | OHD-CSS-B1-A1-1020 SS+3.33d, OHD-CSS-B1-A1-1020 FF+2.22d | 417.11d | 0d | Formwork [927.23 M2]; Carpenter [2726 h]; Helper-Carpenter [1168 h] |
| OHD-CSS-B1-A1-1040 |  | Shuttering For Slab & Beams | 14.44d | 2014-06-02 | 2014-06-17 | OHD-CSS-B1-A1-1030 SS+3.33d, OHD-CSS-B1-A1-1030 FF+2.22d | 417.11d | 0d | Formwork [1303.59 M2]; Carpenter [3832.55 h]; Helper-Carpenter [1642.52 h] |
| OHD-CSS-B1-A1-1050 |  | Reinforcement for Slab & Beams | 8.89d | 2014-06-10 | 2014-06-19 | OHD-CSS-B1-A1-1040 SS+3.33d, OHD-CSS-B1-A1-1040 FF+2.22d | 417.11d | 0d | Steel Reinforcement [63.27 Ton]; Steel Fixer [1582 h]; Helper-Steel Fixer [1581.74 h] |
| OHD-CSS-B1-A1-1060 |  | MEP embedded works in Slab | 5.56d | 2014-06-16 | 2014-06-21 | OHD-CSS-B1-A1-1050 SS+3.33d, OHD-CSS-B1-A1-1050 FF+2.22d | 417.11d | 0d | MEP Mnhrs [250 h] |
| OHD-CSS-B1-A1-1070 |  | Casting of Slab & Beams | 1.11d | 2014-06-22 | 2014-06-23 | OHD-CSS-B1-A1-1060 SS+3.33d, OHD-CSS-B1-A1-1060 FF+2.22d | 417.11d | 0d | Concrete [497 M3]; Mason-Concrete [746 h]; Helper-Concrete [320 h] |
| OHD-CSS-B1-A1-1080 |  | De-Shuttering For Slab | 10d | 2014-07-17 | 2014-07-27 | OHD-CSS-B1-A1-1070 FS+23.33d | 480.44d | 0d | Formwork [864.6 M2]; Carpenter [2542 h]; Helper-Carpenter [1089 h] |
|  | 2 | **PART A2** |  | 2014-04-17 | 2014-06-23 |  |  |  |  |
| OHD-CSS-B1-A2-1000 |  | Reinforcement for Columns & Wall | 7.78d | 2014-04-17 | 2014-04-24 | OHD-CSS-B2-A2-1070 FS+3.33d | 457.11d | 0d | Steel Reinforcement [53.47 Ton]; Steel Fixer [1337 h]; Helper-Steel Fixer [1336.69 h] |
| OHD-CSS-B1-A2-1010 |  | Shuttering for Verticals- Formwork | 12.22d | 2014-04-19 | 2014-05-01 | OHD-CSS-B1-A2-1000 SS+2.22d, OHD-CSS-B1-A2-1000 FF+3.33d | 457.11d | 0d | Formwork [1101.62 M2]; Carpenter [3238.77 h]; Helper-Carpenter [1388.05 h] |
| OHD-CSS-B1-A2-1020 |  | Casting of Columns & wall | 4.44d | 2014-04-29 | 2014-05-03 | OHD-CSS-B1-A2-1010 SS+3.33d, OHD-CSS-B1-A2-1010 FF+2.22d | 457.11d | 0d | Concrete [420 M3]; Mason-Concrete [630 h]; Helper-Concrete [270 h] |
| OHD-CSS-B1-A2-1030 |  | De-Shuttering of Columns & wall | 7.78d | 2014-05-02 | 2014-05-10 | OHD-CSS-B1-A2-1020 SS+3.33d, OHD-CSS-B1-A2-1020 FF+2.22d | 457.11d | 0d | Formwork [730.65 M2]; Carpenter [2148 h]; Helper-Carpenter [921 h] |
| OHD-CSS-B1-A2-1040 |  | Shuttering For Slab & Beams | 11.11d | 2014-05-06 | 2014-05-17 | OHD-CSS-B1-A2-1030 SS+3.33d, OHD-CSS-B1-A2-1030 FF+2.22d | 457.11d | 0d | Formwork [1028.18 M2]; Carpenter [3022.86 h]; Helper-Carpenter [1295.51 h] |
| OHD-CSS-B1-A2-1050 |  | Reinforcement for Slab & Beams | 6.67d | 2014-05-12 | 2014-05-19 | OHD-CSS-B1-A2-1040 SS+3.33d, OHD-CSS-B1-A2-1040 FF+2.22d | 457.11d | 0d | Steel Reinforcement [49.9 Ton]; Steel Fixer [1248 h]; Helper-Steel Fixer [1247.57 h] |
| OHD-CSS-B1-A2-1060 |  | MEP embedded works in Slab | 5.56d | 2014-05-16 | 2014-05-21 | OHD-CSS-B1-A2-1050 SS+3.33d, OHD-CSS-B1-A2-1050 FF+2.22d | 457.11d | 0d | MEP Mnhrs [250 h] |
| OHD-CSS-B1-A2-1070 |  | Casting of Slab & Beams | 1.11d | 2014-05-22 | 2014-05-23 | OHD-CSS-B1-A2-1060 SS+3.33d, OHD-CSS-B1-A2-1060 FF+2.22d | 457.11d | 0d | Concrete [392 M3]; Mason-Concrete [588 h]; Helper-Concrete [252 h] |
| OHD-CSS-B1-A2-1080 |  | De-Shuttering For Slab | 7.78d | 2014-06-16 | 2014-06-23 | OHD-CSS-B1-A2-1070 FS+23.33d | 513.78d | 33.33d | Formwork [681.94 M2]; Carpenter [2005 h]; Helper-Carpenter [859 h] |

| ID | WBS | Activity | Duration | Start | Finish | Predecessors | Total float | Free float | Resources |
| --- | --- | --- | --- | --- | --- | --- | --- | --- | --- |
|  | 6 | **PROMENADE & PLAZA LOWER BALACONY LEVEL** |  | 2014-05-27 | 2014-09-17 |  |  |  |  |
|  | 3 | **PART A @ +7.450 M** |  | 2014-05-27 | 2014-09-17 |  |  |  |  |
|  | 1 | **PART A1** |  | 2014-06-27 | 2014-09-17 |  |  |  |  |
| OHD-CSS-LB-A1-1000 |  | Reinforcement for Columns & Wall | 11.11d | 2014-06-27 | 2014-07-08 | OHD-CSS-B1-A1-1070 FS+3.33d | 417.11d | 0d | Steel Reinforcement [79.18 Ton]; Steel Fixer [1980 h]; Helper-Steel Fixer [1979.57 h] |
| OHD-CSS-LB-A1-1010 |  | Shuttering for Verticals- Formwork | 17.78d | 2014-06-29 | 2014-07-17 | OHD-CSS-LB-A1-1000 SS+2.22d, OHD-CSS-LB-A1-1000 FF+3.33d | 417.11d | 0d | Formwork [1631.45 M2]; Carpenter [4796.47 h]; Helper-Carpenter [2055.63 h] |
| OHD-CSS-LB-A1-1020 |  | Casting of Columns & wall | 4.44d | 2014-07-15 | 2014-07-19 | OHD-CSS-LB-A1-1010 SS+3.33d, OHD-CSS-LB-A1-1010 FF+2.22d | 417.11d | 0d | Concrete [622 M3]; Mason-Concrete [933 h]; Helper-Concrete [400 h] |
| OHD-CSS-LB-A1-1030 |  | De-Shuttering of Columns & wall | 12.22d | 2014-07-18 | 2014-07-30 | OHD-CSS-LB-A1-1020 SS+3.33d, OHD-CSS-LB-A1-1020 FF+2.22d | 417.11d | 0d | Formwork [1082.05 M2]; Carpenter [3181 h]; Helper-Carpenter [1363 h] |
| OHD-CSS-LB-A1-1040 |  | Shuttering For Slab & Beams | 16.67d | 2014-07-21 | 2014-08-07 | OHD-CSS-LB-A1-1030 SS+3.33d, OHD-CSS-LB-A1-1030 FF+2.22d | 417.11d | 0d | Formwork [1521.29 M2]; Carpenter [4472.59 h]; Helper-Carpenter [1916.83 h] |
| OHD-CSS-LB-A1-1050 |  | Reinforcement for Slab & Beams | 10d | 2014-07-30 | 2014-08-09 | OHD-CSS-LB-A1-1040 SS+3.33d, OHD-CSS-LB-A1-1040 FF+2.22d | 417.11d | 0d | Steel Reinforcement [73.84 Ton]; Steel Fixer [1846 h]; Helper-Steel Fixer [1845.9 h] |
| OHD-CSS-LB-A1-1060 |  | MEP embedded works in Slab | 5.56d | 2014-08-06 | 2014-08-11 | OHD-CSS-LB-A1-1050 SS+3.33d, OHD-CSS-LB-A1-1050 FF+2.22d | 417.11d | 0d | MEP Mnhrs [250 h] |
| OHD-CSS-LB-A1-1070 |  | Casting of Slab & Beams | 1.11d | 2014-08-12 | 2014-08-13 | OHD-CSS-LB-A1-1060 SS+3.33d, OHD-CSS-LB-A1-1060 FF+2.22d | 417.11d | 0d | Concrete [580 M3]; Mason-Concrete [870 h]; Helper-Concrete [373 h] |
| OHD-CSS-LB-A1-1080 |  | De-Shuttering For Slab | 11.11d | 2014-09-06 | 2014-09-17 | OHD-CSS-LB-A1-1070 FS+23.33d | 417.11d | 0d | Formwork [1008.99 M2]; Carpenter [2966 h]; Helper-Carpenter [1271 h] |
|  | 2 | **PART A2** |  | 2014-05-27 | 2014-08-08 |  |  |  |  |
| OHD-CSS-LB-A2-1000 |  | Reinforcement for Columns & Wall | 8.89d | 2014-05-27 | 2014-06-04 | OHD-CSS-B1-A2-1070 FS+3.33d | 457.11d | 0d | Steel Reinforcement [62.38 Ton]; Steel Fixer [1559 h]; Helper-Steel Fixer [1559.47 h] |
| OHD-CSS-LB-A2-1010 |  | Shuttering for Verticals- Formwork | 14.44d | 2014-05-29 | 2014-06-12 | OHD-CSS-LB-A2-1000 SS+2.22d, OHD-CSS-LB-A2-1000 FF+3.33d | 457.11d | 0d | Formwork [1285.23 M2]; Carpenter [3778.57 h]; Helper-Carpenter [1619.39 h] |
| OHD-CSS-LB-A2-1020 |  | Casting of Columns & wall | 4.44d | 2014-06-10 | 2014-06-14 | OHD-CSS-LB-A2-1010 SS+3.33d, OHD-CSS-LB-A2-1010 FF+2.22d | 457.11d | 0d | Concrete [490 M3]; Mason-Concrete [735 h]; Helper-Concrete [315 h] |
| OHD-CSS-LB-A2-1030 |  | De-Shuttering of Columns & wall | 8.89d | 2014-06-13 | 2014-06-22 | OHD-CSS-LB-A2-1020 SS+3.33d, OHD-CSS-LB-A2-1020 FF+2.22d | 457.11d | 0d | Formwork [852.42 M2]; Carpenter [2506 h]; Helper-Carpenter [1074 h] |
| OHD-CSS-LB-A2-1040 |  | Shuttering For Slab & Beams | 13.33d | 2014-06-17 | 2014-06-30 | OHD-CSS-LB-A2-1030 SS+3.33d, OHD-CSS-LB-A2-1030 FF+2.22d | 457.11d | 0d | Formwork [1198.67 M2]; Carpenter [3524.09 h]; Helper-Carpenter [1510.33 h] |
| OHD-CSS-LB-A2-1050 |  | Reinforcement for Slab & Beams | 7.78d | 2014-06-25 | 2014-07-02 | OHD-CSS-LB-A2-1040 SS+3.33d, OHD-CSS-LB-A2-1040 FF+2.22d | 457.11d | 0d | Steel Reinforcement [58.18 Ton]; Steel Fixer [1454 h]; Helper-Steel Fixer [1454.44 h] |
| OHD-CSS-LB-A2-1060 |  | MEP embedded works in Slab | 5.56d | 2014-06-29 | 2014-07-04 | OHD-CSS-LB-A2-1050 SS+3.33d, OHD-CSS-LB-A2-1050 FF+2.22d | 457.11d | 0d | MEP Mnhrs [250 h] |
| OHD-CSS-LB-A2-1070 |  | Casting of Slab & Beams | 1.11d | 2014-07-06 | 2014-07-07 | OHD-CSS-LB-A2-1060 SS+3.33d, OHD-CSS-LB-A2-1060 FF+2.22d | 457.11d | 0d | Concrete [457 M3]; Mason-Concrete [686 h]; Helper-Concrete [294 h] |
| OHD-CSS-LB-A2-1080 |  | De-Shuttering For Slab | 8.89d | 2014-07-30 | 2014-08-08 | OHD-CSS-LB-A2-1070 FS+23.33d | 457.11d | 40d | Formwork [795.01 M2]; Carpenter [2337 h]; Helper-Carpenter [1002 h] |
|  | 1 | **FINISHING** |  | 2013-11-27 | 2014-11-10 |  |  |  |  |
|  | 1 | **BASEMENT LEVEL 4** |  | 2013-11-27 | 2014-06-07 |  |  |  |  |
|  | 1 | **PART A** |  | 2013-11-27 | 2014-06-07 |  |  |  |  |
|  | 1 | **MASONRY WORK** |  | 2013-11-27 | 2014-05-04 |  |  |  |  |
| OHD-CFN-B4-A-1020 |  | Partitions | 4.44d | 2013-11-27 | 2013-12-01 |  | 761.56d | 735.56d | Partitions; TECH-Partitions; Helper-Partitions |
| OHD-CFN-B4-A-1000 |  | Block works | 4.44d | 2014-04-24 | 2014-04-29 | OHD-CSS-B3-A1-1080, OHD-CSS-B3-A2-1080 | 573.78d | 0d | Block; TECH-Block; Helper-Block |
| OHD-CFN-B4-A-1010 |  | Plastering works | 4.44d | 2014-04-30 | 2014-05-04 | OHD-CFN-B4-A-1000 SS+5.56d, OHD-CFN-B4-A-1000 FF+5.56d | 573.78d | 0d | Plaster; TECH-Plaster; Helper-Plaster |

| ID | WBS | Activity | Duration | Start | Finish | Predecessors | Total float | Free float | Resources |
| --- | --- | --- | --- | --- | --- | --- | --- | --- | --- |
|  | 2 | **CEILING** |  | 2014-05-06 | 2014-05-15 |  |  |  |  |
| OHD-CFN-B4-A-1030 |  | Painting & Coating | 4.44d | 2014-05-06 | 2014-05-10 | OHD-CFN-B4-A-1010 SS+5.56d, OHD-CFN-B4-A-1010 FF+5.56d | 573.78d | 0d | Paint; Painter; Helper-Paint |
| OHD-CFN-B4-A-1040 |  | False Ceiling | 4.44d | 2014-05-11 | 2014-05-15 | OHD-CFN-B4-A-1030 SS+5.56d, OHD-CFN-B4-A-1030 FF+5.56d | 573.78d | 0d | False Ceiling; TECH-False Ceiling; Helper-False Ceiling |
|  | 3 | **WALL** |  | 2014-05-17 | 2014-05-27 |  |  |  |  |
| OHD-CFN-B4-A-1050 |  | Painting & Coating | 4.44d | 2014-05-17 | 2014-05-21 | OHD-CFN-B4-A-1040 SS+5.56d, OHD-CFN-B4-A-1040 FF+5.56d | 573.78d | 0d | Paint; Painter; Helper-Paint |
| OHD-CFN-B4-A-1060 |  | Ceramic Tiles | 4.44d | 2014-05-22 | 2014-05-27 | OHD-CFN-B4-A-1050 SS+5.56d, OHD-CFN-B4-A-1050 FF+5.56d | 573.78d | 0d | Ceramic Tiles; TECH-Ceramic Tiles; Helper-Ceramic Tiles |
|  | 4 | **FLOOR** |  | 2014-05-28 | 2014-06-07 |  |  |  |  |
| OHD-CFN-B4-A-1090 |  | Floor Screed | 4.44d | 2014-05-28 | 2014-06-01 | OHD-CFN-B4-A-1060 FF+5.56d, OHD-CFN-B4-A-1060 SS+5.56d | 573.78d | 0d | Screed; Mason-Concrete; Helper-Screed |
| OHD-CFN-B4-A-1070 |  | Granite Tiles | 4.44d | 2014-06-02 | 2014-06-07 | OHD-CFN-B4-A-1090 SS+5.56d, OHD-CFN-B4-A-1090 FF+5.56d | 573.78d | 547.78d | Granite Tiles; TECH-Granite Tiles; Helper-Granite Tiles |
| OHD-CFN-B4-A-1080 |  | Vinyle Tile | 4.44d | 2014-06-02 | 2014-06-07 | OHD-CFN-B4-A-1090 SS+5.56d, OHD-CFN-B4-A-1090 FF+5.56d | 573.78d | 547.78d | Vinyle Tile; TECH-Vinyle Tile; Helper-Vinyle Tile |
|  | 2 | **BASEMENT LEVEL 3** |  | 2013-11-27 | 2014-07-23 |  |  |  |  |
|  | 1 | **PART A** |  | 2013-11-27 | 2014-07-23 |  |  |  |  |
|  | 1 | **MASONRY WORK** |  | 2013-11-27 | 2014-06-20 |  |  |  |  |
| OHD-CFN-B3-A-1020 |  | Partitions | 4.44d | 2013-11-27 | 2013-12-01 |  | 761.56d | 735.56d | Partitions; TECH-Partitions; Helper-Partitions |
| OHD-CFN-B3-A-1000 |  | Block works | 4.44d | 2014-06-10 | 2014-06-14 | OHD-CSS-B2-A1-1080, OHD-CSS-B2-A2-1080 | 527.11d | 0d | Block; TECH-Block; Helper-Block |
| OHD-CFN-B3-A-1010 |  | Plastering works | 4.44d | 2014-06-16 | 2014-06-20 | OHD-CFN-B3-A-1000 SS+5.56d, OHD-CFN-B3-A-1000 FF+5.56d | 527.11d | 0d | Plaster; TECH-Plaster; Helper-Plaster |
|  | 2 | **CEILING** |  | 2014-06-21 | 2014-07-01 |  |  |  |  |
| OHD-CFN-B3-A-1030 |  | Painting & Coating | 4.44d | 2014-06-21 | 2014-06-26 | OHD-CFN-B3-A-1010 SS+5.56d, OHD-CFN-B3-A-1010 FF+5.56d | 527.11d | 0d | Paint; Painter; Helper-Paint |
| OHD-CFN-B3-A-1040 |  | False Ceiling | 4.44d | 2014-06-27 | 2014-07-01 | OHD-CFN-B3-A-1030 SS+5.56d, OHD-CFN-B3-A-1030 FF+5.56d | 527.11d | 0d | False Ceiling; TECH-False Ceiling; Helper-False Ceiling |
|  | 3 | **WALL** |  | 2014-07-02 | 2014-07-12 |  |  |  |  |
| OHD-CFN-B3-A-1050 |  | Painting & Coating | 4.44d | 2014-07-02 | 2014-07-07 | OHD-CFN-B3-A-1040 SS+5.56d, OHD-CFN-B3-A-1040 FF+5.56d | 527.11d | 0d | Paint; Painter; Helper-Paint |
| OHD-CFN-B3-A-1060 |  | Ceramic Tiles | 4.44d | 2014-07-08 | 2014-07-12 | OHD-CFN-B3-A-1050 SS+5.56d, OHD-CFN-B3-A-1050 FF+5.56d | 527.11d | 0d | Ceramic Tiles; TECH-Ceramic Tiles; Helper-Ceramic Tiles |
|  | 4 | **FLOOR** |  | 2014-07-13 | 2014-07-23 |  |  |  |  |
| OHD-CFN-B3-A-1090 |  | Floor Screed | 4.44d | 2014-07-13 | 2014-07-18 | OHD-CFN-B3-A-1060 FF+5.56d, OHD-CFN-B3-A-1060 SS+5.56d | 527.11d | 0d | Screed; Mason-Concrete; Helper-Screed |
| OHD-CFN-B3-A-1070 |  | Granite Tiles | 4.44d | 2014-07-19 | 2014-07-23 | OHD-CFN-B3-A-1090 SS+5.56d, OHD-CFN-B3-A-1090 FF+5.56d | 527.11d | 501.11d | Granite Tiles; TECH-Granite Tiles; Helper-Granite Tiles |
| OHD-CFN-B3-A-1080 |  | Vinyle Tile | 4.44d | 2014-07-19 | 2014-07-23 | OHD-CFN-B3-A-1090 SS+5.56d, OHD-CFN-B3-A-1090 FF+5.56d | 527.11d | 501.11d | Vinyle Tile; TECH-Vinyle Tile; Helper-Vinyle Tile |

| ID | WBS | Activity | Duration | Start | Finish | Predecessors | Total float | Free float | Resources |
| --- | --- | --- | --- | --- | --- | --- | --- | --- | --- |
|  | 3 | **BASEMENT LEVEL 2** |  | 2013-11-27 | 2014-09-08 |  |  |  |  |
|  | 1 | **PART A** |  | 2013-11-27 | 2014-09-08 |  |  |  |  |
|  | 1 | **MASONRY WORK** |  | 2013-11-27 | 2014-08-06 |  |  |  |  |
| OHD-CFN-B2-A-1020 |  | Partitions | 4.44d | 2013-11-27 | 2013-12-01 |  | 761.56d | 735.56d | Partitions; TECH-Partitions; Helper-Partitions |
| OHD-CFN-B2-A-1000 |  | Block works | 4.44d | 2014-07-27 | 2014-07-31 | OHD-CSS-B1-A1-1080, OHD-CSS-B1-A2-1080 | 480.44d | 0d | Block; TECH-Block; Helper-Block |
| OHD-CFN-B2-A-1010 |  | Plastering works | 4.44d | 2014-08-01 | 2014-08-06 | OHD-CFN-B2-A-1000 SS+5.56d, OHD-CFN-B2-A-1000 FF+5.56d | 480.44d | 0d | Plaster; TECH-Plaster; Helper-Plaster |
|  | 2 | **CEILING** |  | 2014-08-07 | 2014-08-17 |  |  |  |  |
| OHD-CFN-B2-A-1030 |  | Painting & Coating | 4.44d | 2014-08-07 | 2014-08-11 | OHD-CFN-B2-A-1010 SS+5.56d, OHD-CFN-B2-A-1010 FF+5.56d | 480.44d | 0d | Paint; Painter; Helper-Paint |
| OHD-CFN-B2-A-1040 |  | False Ceiling | 4.44d | 2014-08-12 | 2014-08-17 | OHD-CFN-B2-A-1030 SS+5.56d, OHD-CFN-B2-A-1030 FF+5.56d | 480.44d | 0d | False Ceiling; TECH-False Ceiling; Helper-False Ceiling |
|  | 3 | **WALL** |  | 2014-08-18 | 2014-08-28 |  |  |  |  |
| OHD-CFN-B2-A-1050 |  | Painting & Coating | 4.44d | 2014-08-18 | 2014-08-22 | OHD-CFN-B2-A-1040 SS+5.56d, OHD-CFN-B2-A-1040 FF+5.56d | 480.44d | 0d | Paint; Painter; Helper-Paint |
| OHD-CFN-B2-A-1060 |  | Ceramic Tiles | 4.44d | 2014-08-24 | 2014-08-28 | OHD-CFN-B2-A-1050 SS+5.56d, OHD-CFN-B2-A-1050 FF+5.56d | 480.44d | 0d | Ceramic Tiles; TECH-Ceramic Tiles; Helper-Ceramic Tiles |
|  | 4 | **FLOOR** |  | 2014-08-29 | 2014-09-08 |  |  |  |  |
| OHD-CFN-B2-A-1090 |  | Floor Screed | 4.44d | 2014-08-29 | 2014-09-02 | OHD-CFN-B2-A-1060 FF+5.56d, OHD-CFN-B2-A-1060 SS+5.56d | 480.44d | 0d | Screed; Mason-Concrete; Helper-Screed |
| OHD-CFN-B2-A-1070 |  | Granite Tiles | 4.44d | 2014-09-04 | 2014-09-08 | OHD-CFN-B2-A-1090 SS+5.56d, OHD-CFN-B2-A-1090 FF+5.56d | 480.44d | 454.44d | Granite Tiles; TECH-Granite Tiles; Helper-Granite Tiles |
| OHD-CFN-B2-A-1080 |  | Vinyle Tile | 4.44d | 2014-09-04 | 2014-09-08 | OHD-CFN-B2-A-1090 SS+5.56d, OHD-CFN-B2-A-1090 FF+5.56d | 480.44d | 454.44d | Vinyle Tile; TECH-Vinyle Tile; Helper-Vinyle Tile |
|  | 4 | **BASEMENT LEVEL 1** |  | 2013-11-27 | 2014-10-30 |  |  |  |  |
|  | 1 | **PART A** |  | 2013-11-27 | 2014-10-30 |  |  |  |  |
|  | 1 | **MASONRY WORK** |  | 2013-11-27 | 2014-09-27 |  |  |  |  |
| OHD-CFN-B1-A-1020 |  | Partitions | 4.44d | 2013-11-27 | 2013-12-01 |  | 761.56d | 735.56d | Partitions; TECH-Partitions; Helper-Partitions |
| OHD-CFN-B1-A-1000 |  | Block works | 4.44d | 2014-09-17 | 2014-09-21 | OHD-CSS-LB-A1-1080, OHD-CSS-LB-A2-1080 | 428.22d | 0d | Block; TECH-Block; Helper-Block |
| OHD-CFN-B1-A-1010 |  | Plastering works | 4.44d | 2014-09-23 | 2014-09-27 | OHD-CFN-B1-A-1000 SS+5.56d, OHD-CFN-B1-A-1000 FF+5.56d | 428.22d | 0d | Plaster; TECH-Plaster; Helper-Plaster |
|  | 2 | **CEILING** |  | 2014-09-28 | 2014-10-08 |  |  |  |  |
| OHD-CFN-B1-A-1030 |  | Painting & Coating | 4.44d | 2014-09-28 | 2014-10-02 | OHD-CFN-B1-A-1010 SS+5.56d, OHD-CFN-B1-A-1010 FF+5.56d | 428.22d | 0d | Paint; Painter; Helper-Paint |
| OHD-CFN-B1-A-1040 |  | False Ceiling | 4.44d | 2014-10-04 | 2014-10-08 | OHD-CFN-B1-A-1030 SS+5.56d, OHD-CFN-B1-A-1030 FF+5.56d | 428.22d | 0d | False Ceiling; TECH-False Ceiling; Helper-False Ceiling |

| ID | WBS | Activity | Duration | Start | Finish | Predecessors | Total float | Free float | Resources |
| --- | --- | --- | --- | --- | --- | --- | --- | --- | --- |
|  | 3 | **WALL** |  | 2014-10-09 | 2014-10-19 |  |  |  |  |
| OHD-CFN-B1-A-1050 |  | Painting & Coating | 4.44d | 2014-10-09 | 2014-10-14 | OHD-CFN-B1-A-1040 SS+5.56d, OHD-CFN-B1-A-1040 FF+5.56d | 428.22d | 0d | Paint; Painter; Helper-Paint |
| OHD-CFN-B1-A-1060 |  | Ceramic Tiles | 4.44d | 2014-10-15 | 2014-10-19 | OHD-CFN-B1-A-1050 SS+5.56d, OHD-CFN-B1-A-1050 FF+5.56d | 428.22d | 0d | Ceramic Tiles; TECH-Ceramic Tiles; Helper-Ceramic Tiles |
|  | 4 | **FLOOR** |  | 2014-10-20 | 2014-10-30 |  |  |  |  |
| OHD-CFN-B1-A-1090 |  | Floor Screed | 4.44d | 2014-10-20 | 2014-10-25 | OHD-CFN-B1-A-1060 FF+5.56d, OHD-CFN-B1-A-1060 SS+5.56d | 428.22d | 0d | Screed; Mason-Concrete; Helper-Screed |
| OHD-CFN-B1-A-1070 |  | Granite Tiles | 4.44d | 2014-10-26 | 2014-10-30 | OHD-CFN-B1-A-1090 SS+5.56d, OHD-CFN-B1-A-1090 FF+5.56d | 428.22d | 402.22d | Granite Tiles; TECH-Granite Tiles; Helper-Granite Tiles |
| OHD-CFN-B1-A-1080 |  | Vinyle Tile | 4.44d | 2014-10-26 | 2014-10-30 | OHD-CFN-B1-A-1090 SS+5.56d, OHD-CFN-B1-A-1090 FF+5.56d | 428.22d | 402.22d | Vinyle Tile; TECH-Vinyle Tile; Helper-Vinyle Tile |
|  | 6 | **PROMENADE & PLAZA LOWER BALACONY LEVEL** |  | 2013-11-27 | 2014-11-10 |  |  |  |  |
|  | 3 | **PART A** |  | 2013-11-27 | 2014-11-10 |  |  |  |  |
|  | 1 | **MASONRY WORK** |  | 2013-11-27 | 2014-10-08 |  |  |  |  |
| OHD-CFN-LB-A-1020 |  | Partitions | 4.44d | 2013-11-27 | 2013-12-01 |  | 761.56d | 735.56d | Partitions; TECH-Partitions; Helper-Partitions |
| OHD-CFN-LB-A-1000 |  | Block works | 4.44d | 2014-09-28 | 2014-10-02 | OHD-CSS-LB-A1-1080 FS+11.11d, OHD-CSS-LB-A2-1080 FS+11.11d | 417.11d | 0d | Block; TECH-Block; Helper-Block |
| OHD-CFN-LB-A-1010 |  | Plastering works | 4.44d | 2014-10-04 | 2014-10-08 | OHD-CFN-LB-A-1000 SS+5.56d, OHD-CFN-LB-A-1000 FF+5.56d | 417.11d | 0d | Plaster; TECH-Plaster; Helper-Plaster |
|  | 2 | **CEILING** |  | 2014-10-09 | 2014-10-19 |  |  |  |  |
| OHD-CFN-LB-A-1030 |  | Painting & Coating | 4.44d | 2014-10-09 | 2014-10-14 | OHD-CFN-LB-A-1010 SS+5.56d, OHD-CFN-LB-A-1010 FF+5.56d | 417.11d | 0d | Paint; Painter; Helper-Paint |
| OHD-CFN-LB-A-1040 |  | False Ceiling | 4.44d | 2014-10-15 | 2014-10-19 | OHD-CFN-LB-A-1030 SS+5.56d, OHD-CFN-LB-A-1030 FF+5.56d | 417.11d | 0d | False Ceiling; TECH-False Ceiling; Helper-False Ceiling |
|  | 3 | **WALL** |  | 2014-10-20 | 2014-10-30 |  |  |  |  |
| OHD-CFN-LB-A-1050 |  | Painting & Coating | 4.44d | 2014-10-20 | 2014-10-25 | OHD-CFN-LB-A-1040 SS+5.56d, OHD-CFN-LB-A-1040 FF+5.56d | 417.11d | 0d | Paint; Painter; Helper-Paint |
| OHD-CFN-LB-A-1060 |  | Ceramic Tiles | 4.44d | 2014-10-26 | 2014-10-30 | OHD-CFN-LB-A-1050 SS+5.56d, OHD-CFN-LB-A-1050 FF+5.56d | 417.11d | 0d | Ceramic Tiles; TECH-Ceramic Tiles; Helper-Ceramic Tiles |
|  | 4 | **FLOOR** |  | 2014-10-31 | 2014-11-10 |  |  |  |  |
| OHD-CFN-LB-A-1090 |  | Floor Screed | 4.44d | 2014-10-31 | 2014-11-05 | OHD-CFN-LB-A-1060 FF+5.56d, OHD-CFN-LB-A-1060 SS+5.56d | 417.11d | 0d | Screed; Mason-Concrete; Helper-Screed |
| OHD-CFN-LB-A-1070 |  | Granite Tiles | 4.44d | 2014-11-06 | 2014-11-10 | OHD-CFN-LB-A-1090 SS+5.56d, OHD-CFN-LB-A-1090 FF+5.56d | 417.11d | 391.11d | Granite Tiles; TECH-Granite Tiles; Helper-Granite Tiles |
| OHD-CFN-LB-A-1080 |  | Vinyle Tile | 4.44d | 2014-11-06 | 2014-11-10 | OHD-CFN-LB-A-1090 SS+5.56d, OHD-CFN-LB-A-1090 FF+5.56d | 417.11d | 391.11d | Vinyle Tile; TECH-Vinyle Tile; Helper-Vinyle Tile |
|  | 4 | **MEP** |  | 2013-11-27 | 2014-05-18 |  |  |  |  |
|  | 1 | **BASEMENT LEVEL 4** |  | 2013-11-27 | 2014-05-18 |  |  |  |  |
|  | 2 | **PLUMBING** |  | 2013-11-27 | 2014-03-12 |  |  |  |  |
| OHD-CMP-B4PK-1000 |  | First Fix | 88.89d | 2013-11-27 | 2014-02-23 |  | 640.44d | 0d |  |
| OHD-CMP-B4PK-1010 |  | Second Fix | 100d | 2013-11-27 | 2014-03-06 |  | 599.33d | 0d |  |
| OHD-CMP-B4PK-1020 |  | Third Fix | 105.56d | 2013-11-27 | 2014-03-12 |  | 593.78d | 0d |  |

| ID | WBS | Activity | Duration | Start | Finish | Predecessors | Total float | Free float |
| --- | --- | --- | --- | --- | --- | --- | --- | --- |
|  | 3 | **MECHANICAL** |  | 2013-12-13 | 2014-04-03 |  |  |  |
| OHD-CMP-B4PK-1030 |  | First Fix | 88.89d | 2013-12-13 | 2014-03-12 | OHD-CMP-B4PK-1000 SS+11.11d, OHD-CMP-B4PK-1000 FF+16.67d | 640.44d | 0d |
| OHD-CMP-B4PK-1040 |  | Second Fix | 100d | 2013-12-19 | 2014-03-29 | OHD-CMP-B4PK-1010 SS+22.22d, OHD-CMP-B4PK-1010 FF+22.22d | 599.33d | 0d |
| OHD-CMP-B4PK-1050 |  | Third Fix | 105.56d | 2013-12-19 | 2014-04-03 | OHD-CMP-B4PK-1020 SS+22.22d, OHD-CMP-B4PK-1020 FF+11.11d | 593.78d | 0d |
|  | 5 | **FIRE FIGHTING** |  | 2013-12-24 | 2014-04-25 |  |  |  |
| OHD-CMP-B4PK-1060 |  | First Fix | 88.89d | 2013-12-24 | 2014-03-23 | OHD-CMP-B4PK-1030 SS+8.89d, OHD-CMP-B4PK-1030 FF+11.11d | 640.44d | 0d |
| OHD-CMP-B4PK-1080 |  | Second Fix | 100d | 2014-01-10 | 2014-04-20 | OHD-CMP-B4PK-1040 SS+22.22d, OHD-CMP-B4PK-1040 FF+22.22d | 599.33d | 0d |
| OHD-CMP-B4PK-1090 |  | Third Fix | 105.56d | 2014-01-10 | 2014-04-25 | OHD-CMP-B4PK-1050 SS+22.22d, OHD-CMP-B4PK-1050 FF+22.22d | 593.78d | 0d |
|  | 4 | **ELECTRICAL** |  | 2014-01-02 | 2014-05-18 |  |  |  |
| OHD-CMP-B4PK-1070 |  | First Fix | 88.89d | 2014-01-02 | 2014-04-01 | OHD-CMP-B4PK-1060 SS+4.44d, OHD-CMP-B4PK-1060 FF+8.89d | 640.44d | 614.44d |
| OHD-CMP-B4PK-1100 |  | Second Fix | 100d | 2014-02-01 | 2014-05-12 | OHD-CMP-B4PK-1080 SS+22.22d, OHD-CMP-B4PK-1080 FF+22.22d | 599.33d | 573.33d |
| OHD-CMP-B4PK-1110 |  | Third Fix | 105.56d | 2014-02-01 | 2014-05-18 | OHD-CMP-B4PK-1090 SS+22.22d, OHD-CMP-B4PK-1090 FF+22.22d | 593.78d | 567.78d |
|  | 2 | **BASEMENT LEVEL 3** |  | 2013-11-27 | 2014-05-18 |  |  |  |
|  | 2 | **PLUMBING** |  | 2013-11-27 | 2014-03-12 |  |  |  |
| OHD-CMP-B3PK-1000 |  | First Fix | 88.89d | 2013-11-27 | 2014-02-23 |  | 640.44d | 0d |
| OHD-CMP-B3PK-1010 |  | Second Fix | 100d | 2013-11-27 | 2014-03-06 |  | 599.33d | 0d |
| OHD-CMP-B3PK-1020 |  | Third Fix | 105.56d | 2013-11-27 | 2014-03-12 |  | 593.78d | 0d |
|  | 3 | **MECHANICAL** |  | 2013-12-13 | 2014-04-03 |  |  |  |
| OHD-CMP-B3PK-1030 |  | First Fix | 88.89d | 2013-12-13 | 2014-03-12 | OHD-CMP-B3PK-1000 SS+11.11d, OHD-CMP-B3PK-1000 FF+16.67d | 640.44d | 0d |
| OHD-CMP-B3PK-1040 |  | Second Fix | 100d | 2013-12-19 | 2014-03-29 | OHD-CMP-B3PK-1010 SS+22.22d, OHD-CMP-B3PK-1010 FF+22.22d | 599.33d | 0d |
| OHD-CMP-B3PK-1050 |  | Third Fix | 105.56d | 2013-12-19 | 2014-04-03 | OHD-CMP-B3PK-1020 SS+22.22d, OHD-CMP-B3PK-1020 FF+11.11d | 593.78d | 0d |
|  | 5 | **FIRE FIGHTING** |  | 2013-12-24 | 2014-04-25 |  |  |  |
| OHD-CMP-B3PK-1060 |  | First Fix | 88.89d | 2013-12-24 | 2014-03-23 | OHD-CMP-B3PK-1030 SS+8.89d, OHD-CMP-B3PK-1030 FF+11.11d | 640.44d | 0d |
| OHD-CMP-B3PK-1080 |  | Second Fix | 100d | 2014-01-10 | 2014-04-20 | OHD-CMP-B3PK-1040 SS+22.22d, OHD-CMP-B3PK-1040 FF+22.22d | 599.33d | 0d |
| OHD-CMP-B3PK-1090 |  | Third Fix | 105.56d | 2014-01-10 | 2014-04-25 | OHD-CMP-B3PK-1050 SS+22.22d, OHD-CMP-B3PK-1050 FF+22.22d | 593.78d | 0d |

| ID | WBS | Activity | Duration | Start | Finish | Predecessors | Total float | Free float |
| --- | --- | --- | --- | --- | --- | --- | --- | --- |
|  | 4 | **ELECTRICAL** |  | 2014-01-02 | 2014-05-18 |  |  |  |
| OHD-CMP-B3PK-1070 |  | First Fix | 88.89d | 2014-01-02 | 2014-04-01 | OHD-CMP-B3PK-1060 SS+4.44d, OHD-CMP-B3PK-1060 FF+8.89d | 640.44d | 614.44d |
| OHD-CMP-B3PK-1100 |  | Second Fix | 100d | 2014-02-01 | 2014-05-12 | OHD-CMP-B3PK-1080 SS+22.22d, OHD-CMP-B3PK-1080 FF+22.22d | 599.33d | 573.33d |
| OHD-CMP-B3PK-1110 |  | Third Fix | 105.56d | 2014-02-01 | 2014-05-18 | OHD-CMP-B3PK-1090 SS+22.22d, OHD-CMP-B3PK-1090 FF+22.22d | 593.78d | 567.78d |
|  | 3 | **BASEMENT LEVEL 2** |  | 2013-11-27 | 2014-05-18 |  |  |  |
|  | 2 | **PLUMBING** |  | 2013-11-27 | 2014-03-12 |  |  |  |
| OHD-CMP-B2PK-1000 |  | First Fix | 88.89d | 2013-11-27 | 2014-02-23 |  | 640.44d | 0d |
| OHD-CMP-B2PK-1010 |  | Second Fix | 100d | 2013-11-27 | 2014-03-06 |  | 599.33d | 0d |
| OHD-CMP-B2PK-1020 |  | Third Fix | 105.56d | 2013-11-27 | 2014-03-12 |  | 593.78d | 0d |
|  | 3 | **MECHANICAL** |  | 2013-12-13 | 2014-04-03 |  |  |  |
| OHD-CMP-B2PK-1030 |  | First Fix | 88.89d | 2013-12-13 | 2014-03-12 | OHD-CMP-B2PK-1000 SS+11.11d, OHD-CMP-B2PK-1000 FF+16.67d | 640.44d | 0d |
| OHD-CMP-B2PK-1040 |  | Second Fix | 100d | 2013-12-19 | 2014-03-29 | OHD-CMP-B2PK-1010 SS+22.22d, OHD-CMP-B2PK-1010 FF+22.22d | 599.33d | 0d |
| OHD-CMP-B2PK-1050 |  | Third Fix | 105.56d | 2013-12-19 | 2014-04-03 | OHD-CMP-B2PK-1020 SS+22.22d, OHD-CMP-B2PK-1020 FF+11.11d | 593.78d | 0d |
|  | 5 | **FIRE FIGHTING** |  | 2013-12-24 | 2014-04-25 |  |  |  |
| OHD-CMP-B2PK-1060 |  | First Fix | 88.89d | 2013-12-24 | 2014-03-23 | OHD-CMP-B2PK-1030 SS+8.89d, OHD-CMP-B2PK-1030 FF+11.11d | 640.44d | 0d |
| OHD-CMP-B2PK-1080 |  | Second Fix | 100d | 2014-01-10 | 2014-04-20 | OHD-CMP-B2PK-1040 SS+22.22d, OHD-CMP-B2PK-1040 FF+22.22d | 599.33d | 0d |
| OHD-CMP-B2PK-1090 |  | Third Fix | 105.56d | 2014-01-10 | 2014-04-25 | OHD-CMP-B2PK-1050 SS+22.22d, OHD-CMP-B2PK-1050 FF+22.22d | 593.78d | 0d |
|  | 4 | **ELECTRICAL** |  | 2014-01-02 | 2014-05-18 |  |  |  |
| OHD-CMP-B2PK-1070 |  | First Fix | 88.89d | 2014-01-02 | 2014-04-01 | OHD-CMP-B2PK-1060 SS+4.44d, OHD-CMP-B2PK-1060 FF+8.89d | 640.44d | 614.44d |
| OHD-CMP-B2PK-1100 |  | Second Fix | 100d | 2014-02-01 | 2014-05-12 | OHD-CMP-B2PK-1080 SS+22.22d, OHD-CMP-B2PK-1080 FF+22.22d | 599.33d | 573.33d |
| OHD-CMP-B2PK-1110 |  | Third Fix | 105.56d | 2014-02-01 | 2014-05-18 | OHD-CMP-B2PK-1090 SS+22.22d, OHD-CMP-B2PK-1090 FF+22.22d | 593.78d | 567.78d |
|  | 4 | **BASEMENT LEVEL 1** |  | 2013-11-27 | 2014-05-18 |  |  |  |
|  | 2 | **PLUMBING** |  | 2013-11-27 | 2014-03-12 |  |  |  |
| OHD-CMP-B1PK-1000 |  | First Fix | 88.89d | 2013-11-27 | 2014-02-23 |  | 640.44d | 0d |
| OHD-CMP-B1PK-1010 |  | Second Fix | 100d | 2013-11-27 | 2014-03-06 |  | 599.33d | 0d |
| OHD-CMP-B1PK-1020 |  | Third Fix | 105.56d | 2013-11-27 | 2014-03-12 |  | 593.78d | 0d |

| ID | WBS | Activity | Duration | Start | Finish | Predecessors | Total float | Free float |
| --- | --- | --- | --- | --- | --- | --- | --- | --- |
|  | 3 | **MECHANICAL** |  | 2013-12-13 | 2014-04-03 |  |  |  |
| OHD-CMP-B1PK-1030 |  | First Fix | 88.89d | 2013-12-13 | 2014-03-12 | OHD-CMP-B1PK-1000 SS+11.11d, OHD-CMP-B1PK-1000 FF+16.67d | 640.44d | 0d |
| OHD-CMP-B1PK-1040 |  | Second Fix | 100d | 2013-12-19 | 2014-03-29 | OHD-CMP-B1PK-1010 SS+22.22d, OHD-CMP-B1PK-1010 FF+22.22d | 599.33d | 0d |
| OHD-CMP-B1PK-1050 |  | Third Fix | 105.56d | 2013-12-19 | 2014-04-03 | OHD-CMP-B1PK-1020 SS+22.22d, OHD-CMP-B1PK-1020 FF+11.11d | 593.78d | 0d |
|  | 5 | **FIRE FIGHTING** |  | 2013-12-24 | 2014-04-25 |  |  |  |
| OHD-CMP-B1PK-1060 |  | First Fix | 88.89d | 2013-12-24 | 2014-03-23 | OHD-CMP-B1PK-1030 SS+8.89d, OHD-CMP-B1PK-1030 FF+11.11d | 640.44d | 0d |
| OHD-CMP-B1PK-1080 |  | Second Fix | 100d | 2014-01-10 | 2014-04-20 | OHD-CMP-B1PK-1040 SS+22.22d, OHD-CMP-B1PK-1040 FF+22.22d | 599.33d | 0d |
| OHD-CMP-B1PK-1090 |  | Third Fix | 105.56d | 2014-01-10 | 2014-04-25 | OHD-CMP-B1PK-1050 SS+22.22d, OHD-CMP-B1PK-1050 FF+22.22d | 593.78d | 0d |
|  | 4 | **ELECTRICAL** |  | 2014-01-02 | 2014-05-18 |  |  |  |
| OHD-CMP-B1PK-1070 |  | First Fix | 88.89d | 2014-01-02 | 2014-04-01 | OHD-CMP-B1PK-1060 SS+4.44d, OHD-CMP-B1PK-1060 FF+8.89d | 640.44d | 614.44d |
| OHD-CMP-B1PK-1100 |  | Second Fix | 100d | 2014-02-01 | 2014-05-12 | OHD-CMP-B1PK-1080 SS+22.22d, OHD-CMP-B1PK-1080 FF+22.22d | 599.33d | 573.33d |
| OHD-CMP-B1PK-1110 |  | Third Fix | 105.56d | 2014-02-01 | 2014-05-18 | OHD-CMP-B1PK-1090 SS+22.22d, OHD-CMP-B1PK-1090 FF+22.22d | 593.78d | 567.78d |
|  | 6 | **PROMENADE & PLAZA LOWER BALACONY LEVEL** |  | 2013-11-27 | 2014-05-18 |  |  |  |
|  | 2 | **PLUMBING** |  | 2013-11-27 | 2014-03-12 |  |  |  |
| OHD-CMP-LBPK-1000 |  | First Fix | 88.89d | 2013-11-27 | 2014-02-23 |  | 640.44d | 0d |
| OHD-CMP-LBPK-1010 |  | Second Fix | 100d | 2013-11-27 | 2014-03-06 |  | 599.33d | 0d |
| OHD-CMP-LBPK-1020 |  | Third Fix | 105.56d | 2013-11-27 | 2014-03-12 |  | 593.78d | 0d |
|  | 3 | **MECHANICAL** |  | 2013-12-13 | 2014-04-03 |  |  |  |
| OHD-CMP-LBPK-1030 |  | First Fix | 88.89d | 2013-12-13 | 2014-03-12 | OHD-CMP-LBPK-1000 SS+11.11d, OHD-CMP-LBPK-1000 FF+16.67d | 640.44d | 0d |
| OHD-CMP-LBPK-1040 |  | Second Fix | 100d | 2013-12-19 | 2014-03-29 | OHD-CMP-LBPK-1010 SS+22.22d, OHD-CMP-LBPK-1010 FF+22.22d | 599.33d | 0d |
| OHD-CMP-LBPK-1050 |  | Third Fix | 105.56d | 2013-12-19 | 2014-04-03 | OHD-CMP-LBPK-1020 SS+22.22d, OHD-CMP-LBPK-1020 FF+11.11d | 593.78d | 0d |
|  | 5 | **FIRE FIGHTING** |  | 2013-12-24 | 2014-04-25 |  |  |  |
| OHD-CMP-LBPK-1060 |  | First Fix | 88.89d | 2013-12-24 | 2014-03-23 | OHD-CMP-LBPK-1030 SS+8.89d, OHD-CMP-LBPK-1030 FF+11.11d | 640.44d | 0d |
| OHD-CMP-LBPK-1080 |  | Second Fix | 100d | 2014-01-10 | 2014-04-20 | OHD-CMP-LBPK-1040 SS+22.22d, OHD-CMP-LBPK-1040 FF+22.22d | 599.33d | 0d |
| OHD-CMP-LBPK-1090 |  | Third Fix | 105.56d | 2014-01-10 | 2014-04-25 | OHD-CMP-LBPK-1050 SS+22.22d, OHD-CMP-LBPK-1050 FF+22.22d | 593.78d | 0d |

| ID | WBS | Activity | Duration | Start | Finish | Predecessors | Total float | Free float | Resources |
| --- | --- | --- | --- | --- | --- | --- | --- | --- | --- |
|  | 4 | **ELECTRICAL** |  | 2014-01-02 | 2014-05-18 |  |  |  |  |
| OHD-CMP-LBPK-1070 |  | First Fix | 88.89d | 2014-01-02 | 2014-04-01 | OHD-CMP-LBPK-1060 SS+4.44d, OHD-CMP-LBPK-1060 FF+8.89d | 640.44d | 614.44d |  |
| OHD-CMP-LBPK-1100 |  | Second Fix | 100d | 2014-02-01 | 2014-05-12 | OHD-CMP-LBPK-1080 SS+22.22d, OHD-CMP-LBPK-1080 FF+22.22d | 599.33d | 573.33d |  |
| OHD-CMP-LBPK-1110 |  | Third Fix | 105.56d | 2014-02-01 | 2014-05-18 | OHD-CMP-LBPK-1090 SS+22.22d, OHD-CMP-LBPK-1090 FF+22.22d | 593.78d | 567.78d |  |
|  | 5 | **OPERA** |  | 2013-11-27 | 2014-12-28 |  |  |  |  |
|  | 13 | **STRUCTURAL** |  | 2013-11-27 | 2014-11-10 |  |  |  |  |
|  | 2 | **BASEMENT LEVEL 3** |  | 2013-11-27 | 2014-01-25 |  |  |  |  |
|  | 2 | **PART B @ -09.45 M RAFT SLAB** |  | 2013-11-27 | 2014-01-25 |  |  |  |  |
|  | 1 | **PART B1 STAGE 03** |  | 2013-11-27 | 2014-01-25 |  |  |  |  |
| OHD-CSS-B3-B1-1010 |  | Site Preparation | 2.22d | 2013-11-27 | 2013-11-29 |  | 369.33d | 0d | Excavation [530 M3]; Excavator [40 h] |
| OHD-CSS-B3-B1-1020 |  | Compaction & Anti -termite under Blinding | 1.11d | 2013-11-29 | 2013-11-30 | OHD-CSS-B3-B1-1010 | 369.33d | 0d | Anti -termite [1778.62 M2]; TECH-Anti -termite [50 h] |
| OHD-CSS-B3-B1-1030 |  | Casting of Blinding | 1.11d | 2013-11-30 | 2013-12-01 | OHD-CSS-B3-B1-1020 | 369.33d | 0d | Blinding [153.17 M3]; Mason-Concrete [322 h]; Helper-Blinding [137.86 h] |
| OHD-CSS-B3-B1-1040 |  | Water Proofing System | 5.56d | 2013-12-01 | 2013-12-06 | OHD-CSS-B3-B1-1030 | 369.33d | 0d | TECH-Water Proofing [299 h]; Helper-Water Proofing [128 h]; Water Proofing [4269.37 M2] |
| OHD-CSS-B3-B1-1050 |  | MEP Under Ground Service | 5.56d | 2013-12-07 | 2013-12-12 | OHD-CSS-B3-B1-1040 | 369.33d | 0d | MEP Mnhrs [250 h] |
| OHD-CSS-B3-B1-1060 |  | Pile Head treatments | 3.33d | 2013-12-12 | 2013-12-15 | OHD-CSS-B3-B1-1050 | 369.33d | 0d | Pile [21 No]; TECH-Water Proofing [36 h] |
| OHD-CSS-B3-B1-1070 |  | Protection Screed | 1.11d | 2013-12-15 | 2013-12-16 | OHD-CSS-B3-B1-1060 | 369.33d | 0d | Screed [102.12 M2]; Mason-Concrete [286 h]; Helper-Screed [122.54 h] |
| OHD-CSS-B3-B1-1080 |  | Steel Reinforcement | 25.56d | 2013-12-17 | 2014-01-11 | OHD-CSS-B3-B1-1070 | 369.33d | 0d | Steel Reinforcement [182.04 Ton]; Steel Fixer [4551 h]; Helper-Steel Fixer [4551.1 h] |
| OHD-CSS-B3-B1-1090 |  | Shuttering For Slab - Formwork | 13.33d | 2014-01-11 | 2014-01-24 | OHD-CSS-B3-B1-1080 | 369.33d | 0d | Formwork [3750.77 M2]; Carpenter [3675.75 h]; Helper-Carpenter [1575.32 h] |
| OHD-CSS-B3-B1-1100 |  | Casting of Slab | 1.11d | 2014-01-24 | 2014-01-25 | OHD-CSS-B3-B1-1090 | 369.33d | 0d | Concrete [1430 M3]; Mason-Concrete [2860 h]; Helper-Concrete [1226 h] |
|  | 2 | **PART B2 STAGE 04** |  | 2013-11-27 | 2014-01-18 |  |  |  |  |
| OHD-CSS-B3-B2-1010 |  | Site Preparation | 2.22d | 2013-11-27 | 2013-11-29 |  | 392.67d | 0d | Excavation [530 M3]; Excavator [40 h] |
| OHD-CSS-B3-B2-1020 |  | Compaction & Anti -termite under Blinding | 1.11d | 2013-11-29 | 2013-11-30 | OHD-CSS-B3-B2-1010 | 392.67d | 0d | Anti -termite [1452.74 M2]; TECH-Anti -termite [50 h] |
| OHD-CSS-B3-B2-1030 |  | Casting of Blinding | 1.11d | 2013-11-30 | 2013-12-01 | OHD-CSS-B3-B2-1020 | 392.67d | 0d | Blinding [125.11 M3]; Mason-Concrete [263 h]; Helper-Blinding [112.6 h] |
| OHD-CSS-B3-B2-1040 |  | Water Proofing System | 4.44d | 2013-12-01 | 2013-12-05 | OHD-CSS-B3-B2-1030 | 392.67d | 0d | TECH-Water Proofing [244 h]; Helper-Water Proofing [105 h]; Water Proofing [3487.15 M2] |
| OHD-CSS-B3-B2-1050 |  | MEP Under Ground Service | 5.56d | 2013-12-05 | 2013-12-11 | OHD-CSS-B3-B2-1040 | 392.67d | 0d | MEP Mnhrs [250 h] |
| OHD-CSS-B3-B2-1060 |  | Pile Head treatments | 3.33d | 2013-12-11 | 2013-12-14 | OHD-CSS-B3-B2-1050 | 392.67d | 0d | Pile [18 No]; TECH-Water Proofing [36 h] |
| OHD-CSS-B3-B2-1070 |  | Protection Screed | 1.11d | 2013-12-14 | 2013-12-15 | OHD-CSS-B3-B2-1060 | 392.67d | 0d | Screed [83.41 M2]; Mason-Concrete [234 h]; Helper-Screed [100.09 h] |
| OHD-CSS-B3-B2-1080 |  | Steel Reinforcement | 21.11d | 2013-12-15 | 2014-01-05 | OHD-CSS-B3-B2-1070 | 392.67d | 0d | Steel Reinforcement [148.69 Ton]; Steel Fixer [3717 h]; Helper-Steel Fixer [3717.26 h] |
| OHD-CSS-B3-B2-1090 |  | Shuttering For Slab - Formwork | 11.11d | 2014-01-06 | 2014-01-17 | OHD-CSS-B3-B2-1080 | 392.67d | 0d | Formwork [3063.56 M2]; Carpenter [3002.29 h]; Helper-Carpenter [1286.7 h] |
| OHD-CSS-B3-B2-1100 |  | Casting of Slab | 1.11d | 2014-01-17 | 2014-01-18 | OHD-CSS-B3-B2-1090 | 392.67d | 0d | Concrete [1168 M3]; Mason-Concrete [2336 h]; Helper-Concrete [1001 h] |

| ID | WBS | Activity | Duration | Start | Finish | Predecessors | Total float | Free float | Resources |
| --- | --- | --- | --- | --- | --- | --- | --- | --- | --- |
|  | 3 | **PART C @ -07.45 M RAFT SLAB** |  | 2013-11-27 | 2014-01-20 |  |  |  |  |
|  | 1 | **PART C1 STAGE 05** |  | 2013-11-27 | 2014-01-11 |  |  |  |  |
| OHD-CSS-B3-C1-1010 |  | Site Preparation | 2.22d | 2013-11-27 | 2013-11-29 |  | 516d | 0d | Excavation [530 M3]; Excavator [40 h] |
| OHD-CSS-B3-C1-1020 |  | Compaction & Anti -termite under Blinding | 1.11d | 2013-11-29 | 2013-11-30 | OHD-CSS-B3-C1-1010 | 516d | 0d | Anti -termite [1218.91 M2]; TECH-Anti -termite [50 h] |
| OHD-CSS-B3-C1-1030 |  | Casting of Blinding | 1.11d | 2013-11-30 | 2013-12-01 | OHD-CSS-B3-C1-1020 | 516d | 0d | Blinding [104.97 M3]; Mason-Concrete [220 h]; Helper-Blinding [94.47 h] |
| OHD-CSS-B3-C1-1040 |  | Water Proofing System | 3.33d | 2013-12-01 | 2013-12-04 | OHD-CSS-B3-C1-1030 | 516d | 0d | TECH-Water Proofing [205 h]; Helper-Water Proofing [88 h]; Water Proofing [2925.86 M2] |
| OHD-CSS-B3-C1-1050 |  | MEP Under Ground Service | 5.56d | 2013-12-04 | 2013-12-10 | OHD-CSS-B3-C1-1040 | 516d | 0d | MEP Mnhrs [250 h] |
| OHD-CSS-B3-C1-1060 |  | Pile Head treatments | 3.33d | 2013-12-10 | 2013-12-13 | OHD-CSS-B3-C1-1050 | 516d | 0d | Pile [15 No]; TECH-Water Proofing [36 h] |
| OHD-CSS-B3-C1-1070 |  | Protection Screed | 1.11d | 2013-12-13 | 2013-12-14 | OHD-CSS-B3-C1-1060 | 516d | 0d | Screed [69.98 M2]; Mason-Concrete [196 h]; Helper-Screed [83.98 h] |
| OHD-CSS-B3-C1-1080 |  | Steel Reinforcement | 17.78d | 2013-12-14 | 2014-01-01 | OHD-CSS-B3-C1-1070 | 516d | 0d | Steel Reinforcement [124.76 Ton]; Steel Fixer [3119 h]; Helper-Steel Fixer [3118.93 h] |
| OHD-CSS-B3-C1-1090 |  | Shuttering For Slab - Formwork | 8.89d | 2014-01-01 | 2014-01-10 | OHD-CSS-B3-C1-1080 | 516d | 0d | Formwork [2570.46 M2]; Carpenter [2519.05 h]; Helper-Carpenter [1079.59 h] |
| OHD-CSS-B3-C1-1100 |  | Casting of Slab | 1.11d | 2014-01-10 | 2014-01-11 | OHD-CSS-B3-C1-1090 | 516d | 0d | Concrete [980 M3]; Mason-Concrete [1960 h]; Helper-Concrete [840 h] |
|  | 2 | **PART C2 STAGE 08** |  | 2013-11-27 | 2014-01-20 |  |  |  |  |
| OHD-CSS-B3-C2-1010 |  | Site Preparation | 2.22d | 2013-11-27 | 2013-11-29 |  | 469.33d | 0d | Excavation [530 M3]; Excavator [40 h] |
| OHD-CSS-B3-C2-1020 |  | Compaction & Anti -termite under Blinding | 1.11d | 2013-11-29 | 2013-11-30 | OHD-CSS-B3-C2-1010 | 469.33d | 0d | Anti -termite [1551 M2]; TECH-Anti -termite [50 h] |
| OHD-CSS-B3-C2-1030 |  | Casting of Blinding | 1.11d | 2013-11-30 | 2013-12-01 | OHD-CSS-B3-C2-1020 | 469.33d | 0d | Blinding [133.57 M3]; Mason-Concrete [281 h]; Helper-Blinding [120.21 h] |
| OHD-CSS-B3-C2-1040 |  | Water Proofing System | 4.44d | 2013-12-01 | 2013-12-05 | OHD-CSS-B3-C2-1030 | 469.33d | 0d | TECH-Water Proofing [261 h]; Helper-Water Proofing [112 h]; Water Proofing [3723.01 M2] |
| OHD-CSS-B3-C2-1050 |  | MEP Under Ground Service | 5.56d | 2013-12-05 | 2013-12-11 | OHD-CSS-B3-C2-1040 | 469.33d | 0d | MEP Mnhrs [250 h] |
| OHD-CSS-B3-C2-1060 |  | Pile Head treatments | 3.33d | 2013-12-11 | 2013-12-14 | OHD-CSS-B3-C2-1050 | 469.33d | 0d | Pile [18 No]; TECH-Water Proofing [36 h] |
| OHD-CSS-B3-C2-1070 |  | Protection Screed | 1.11d | 2013-12-14 | 2013-12-15 | OHD-CSS-B3-C2-1060 | 469.33d | 0d | Screed [89.05 M2]; Mason-Concrete [249 h]; Helper-Screed [106.86 h] |
| OHD-CSS-B3-C2-1080 |  | Steel Reinforcement | 22.22d | 2013-12-15 | 2014-01-07 | OHD-CSS-B3-C2-1070 | 469.33d | 0d | Steel Reinforcement [158.75 Ton]; Steel Fixer [3969 h]; Helper-Steel Fixer [3968.68 h] |
| OHD-CSS-B3-C2-1090 |  | Shuttering For Slab - Formwork | 12.22d | 2014-01-07 | 2014-01-19 | OHD-CSS-B3-C2-1080 | 469.33d | 0d | Formwork [3270.77 M2]; Carpenter [3205.36 h]; Helper-Carpenter [1373.73 h] |
| OHD-CSS-B3-C2-1100 |  | Casting of Slab | 1.11d | 2014-01-19 | 2014-01-20 | OHD-CSS-B3-C2-1090 | 469.33d | 0d | Concrete [1247 M3]; Mason-Concrete [2494 h]; Helper-Concrete [1069 h] |
|  | 3 | **PART C3 STAGE 07** |  | 2013-11-27 | 2014-01-11 |  |  |  |  |
| OHD-CSS-B3-C3-1000 |  | Shotcrete | 7.78d | 2013-11-27 | 2013-12-04 |  | 758.22d | 732.22d | Shotcrete [590 M2]; Mason-Concrete [500 h] |
| OHD-CSS-B3-C3-1010 |  | Site Preparation | 2.22d | 2013-11-27 | 2013-11-29 |  | 519.33d | 0d | Excavation [530 M3]; Excavator [40 h] |
| OHD-CSS-B3-C3-1020 |  | Compaction & Anti -termite under Blinding | 1.11d | 2013-11-29 | 2013-11-30 | OHD-CSS-B3-C3-1010 | 519.33d | 0d | Anti -termite [1218.91 M2]; TECH-Anti -termite [50 h] |
| OHD-CSS-B3-C3-1030 |  | Casting of Blinding | 1.11d | 2013-11-30 | 2013-12-01 | OHD-CSS-B3-C3-1020 | 519.33d | 0d | Blinding [104.97 M3]; Mason-Concrete [220 h]; Helper-Blinding [94.47 h] |
| OHD-CSS-B3-C3-1040 |  | Water Proofing System | 3.33d | 2013-12-01 | 2013-12-04 | OHD-CSS-B3-C3-1030 | 519.33d | 0d | TECH-Water Proofing [205 h]; Helper-Water Proofing [88 h]; Water Proofing [2925.86 M2] |
| OHD-CSS-B3-C3-1050 |  | MEP Under Ground Service | 5.56d | 2013-12-04 | 2013-12-10 | OHD-CSS-B3-C3-1040 | 519.33d | 0d | MEP Mnhrs [250 h] |
| OHD-CSS-B3-C3-1060 |  | Pile Head treatments | 3.33d | 2013-12-10 | 2013-12-13 | OHD-CSS-B3-C3-1050 | 519.33d | 0d | Pile [15 No]; TECH-Water Proofing [36 h] |
| OHD-CSS-B3-C3-1070 |  | Protection Screed | 1.11d | 2013-12-13 | 2013-12-14 | OHD-CSS-B3-C3-1060 | 519.33d | 0d | Screed [69.98 M2]; Mason-Concrete [196 h]; Helper-Screed [83.98 h] |
| OHD-CSS-B3-C3-1080 |  | Steel Reinforcement | 17.78d | 2013-12-14 | 2014-01-01 | OHD-CSS-B3-C3-1070 | 519.33d | 0d | Steel Reinforcement [124.76 Ton]; Steel Fixer [3119 h]; Helper-Steel Fixer [3118.93 h] |
| OHD-CSS-B3-C3-1090 |  | Shuttering For Slab - Formwork | 8.89d | 2014-01-01 | 2014-01-10 | OHD-CSS-B3-C3-1080 | 519.33d | 0d | Formwork [2570.46 M2]; Carpenter [2519.05 h]; Helper-Carpenter [1079.59 h] |
| OHD-CSS-B3-C3-1100 |  | Casting of Slab | 1.11d | 2014-01-10 | 2014-01-11 | OHD-CSS-B3-C3-1090 | 519.33d | 0d | Concrete [980 M3]; Mason-Concrete [1960 h]; Helper-Concrete [840 h] |

| ID | WBS | Activity | Duration | Start | Finish | Predecessors | Total float | Free float | Resources |
| --- | --- | --- | --- | --- | --- | --- | --- | --- | --- |
|  | 4 | **PART C4 STAGE 06** |  | 2013-11-27 | 2014-01-14 |  |  |  |  |
| OHD-CSS-B3-C4-1000 |  | Shotcrete | 7.78d | 2013-11-27 | 2013-12-04 |  | 758.22d | 732.22d | Shotcrete [590 M2]; Mason-Concrete [500 h] |
| OHD-CSS-B3-C4-1010 |  | Site Preparation | 2.22d | 2013-11-27 | 2013-11-29 |  | 446d | 0d | Excavation [530 M3]; Excavator [40 h] |
| OHD-CSS-B3-C4-1020 |  | Compaction & Anti -termite under Blinding | 1.11d | 2013-11-29 | 2013-11-30 | OHD-CSS-B3-C4-1010 | 446d | 0d | Anti -termite [1365.68 M2]; TECH-Anti -termite [50 h] |
| OHD-CSS-B3-C4-1030 |  | Casting of Blinding | 1.11d | 2013-11-30 | 2013-12-01 | OHD-CSS-B3-C4-1020 | 446d | 0d | Blinding [117.61 M3]; Mason-Concrete [247 h]; Helper-Blinding [105.85 h] |
| OHD-CSS-B3-C4-1040 |  | Water Proofing System | 4.44d | 2013-12-01 | 2013-12-05 | OHD-CSS-B3-C4-1030 | 446d | 0d | TECH-Water Proofing [229 h]; Helper-Water Proofing [98 h]; Water Proofing [3278.16 M2] |
| OHD-CSS-B3-C4-1050 |  | MEP Under Ground Service | 5.56d | 2013-12-05 | 2013-12-11 | OHD-CSS-B3-C4-1040 | 446d | 0d | MEP Mnhrs [250 h] |
| OHD-CSS-B3-C4-1060 |  | Pile Head treatments | 3.33d | 2013-12-11 | 2013-12-14 | OHD-CSS-B3-C4-1050 | 446d | 0d | Pile [16 No]; TECH-Water Proofing [36 h] |
| OHD-CSS-B3-C4-1070 |  | Protection Screed | 1.11d | 2013-12-14 | 2013-12-15 | OHD-CSS-B3-C4-1060 | 446d | 0d | Screed [196.02 M2]; Mason-Concrete [549 h]; Helper-Screed [235.22 h] |
| OHD-CSS-B3-C4-1080 |  | Steel Reinforcement | 18.89d | 2013-12-15 | 2014-01-03 | OHD-CSS-B3-C4-1070 | 446d | 0d | Steel Reinforcement [139.78 Ton]; Steel Fixer [3494 h]; Helper-Steel Fixer [3494.48 h] |
| OHD-CSS-B3-C4-1090 |  | Shuttering For Slab - Formwork | 10d | 2014-01-03 | 2014-01-13 | OHD-CSS-B3-C4-1080 | 446d | 0d | Formwork [2879.96 M2]; Carpenter [2822.36 h]; Helper-Carpenter [1209.58 h] |
| OHD-CSS-B3-C4-1100 |  | Casting of Slab | 1.11d | 2014-01-13 | 2014-01-14 | OHD-CSS-B3-C4-1090 | 446d | 0d | Concrete [1098 M3]; Mason-Concrete [2196 h]; Helper-Concrete [941 h] |
|  | 3 | **BASEMENT LEVEL 2** |  | 2014-01-14 | 2014-04-01 |  |  |  |  |
|  | 2 | **PART B @ -02.65 M** |  | 2014-01-21 | 2014-04-01 |  |  |  |  |
|  | 1 | **PART B1** |  | 2014-01-29 | 2014-04-01 |  |  |  |  |
| OHD-CSS-B2-B1-1000 |  | Reinforcement for Columns & Wall | 5.56d | 2014-01-29 | 2014-02-03 | OHD-CSS-B3-B1-1100 FS+3.33d | 369.33d | 0d | Steel Reinforcement [43.54 Ton]; Steel Fixer [1088 h]; Helper-Steel Fixer [1088.44 h] |
| OHD-CSS-B2-B1-1010 |  | Shuttering for Verticals- Formwork | 10d | 2014-01-31 | 2014-02-10 | OHD-CSS-B2-B1-1000 SS+2.22d, OHD-CSS-B2-B1-1000 FF+3.33d | 369.33d | 0d | Formwork [897.04 M2]; Carpenter [2637.29 h]; Helper-Carpenter [1130.27 h] |
| OHD-CSS-B2-B1-1020 |  | Casting of Columns & wall | 4.44d | 2014-02-08 | 2014-02-12 | OHD-CSS-B2-B1-1010 SS+3.33d, OHD-CSS-B2-B1-1010 FF+2.22d | 369.33d | 0d | Concrete [342 M3]; Mason-Concrete [513 h]; Helper-Concrete [220 h] |
| OHD-CSS-B2-B1-1030 |  | De-Shuttering of Columns & wall | 6.67d | 2014-02-11 | 2014-02-18 | OHD-CSS-B2-B1-1020 SS+3.33d, OHD-CSS-B2-B1-1020 FF+2.22d | 369.33d | 0d | Formwork [594.96 M2]; Carpenter [1749 h]; Helper-Carpenter [750 h] |
| OHD-CSS-B2-B1-1040 |  | Shuttering For Slab & Beams | 8.89d | 2014-02-15 | 2014-02-23 | OHD-CSS-B2-B1-1030 SS+3.33d, OHD-CSS-B2-B1-1030 FF+2.22d | 369.33d | 0d | Formwork [836.71 M2]; Carpenter [2459.93 h]; Helper-Carpenter [1054.25 h] |
| OHD-CSS-B2-B1-1050 |  | Reinforcement for Slab & Beams | 5.56d | 2014-02-20 | 2014-02-26 | OHD-CSS-B2-B1-1040 SS+3.33d, OHD-CSS-B2-B1-1040 FF+2.22d | 369.33d | 0d | Steel Reinforcement [40.61 Ton]; Steel Fixer [1015 h]; Helper-Steel Fixer [1015.24 h] |
| OHD-CSS-B2-B1-1060 |  | MEP embedded works in Slab | 5.56d | 2014-02-23 | 2014-03-01 | OHD-CSS-B2-B1-1050 SS+3.33d, OHD-CSS-B2-B1-1050 FF+2.22d | 369.33d | 0d | MEP Mnhrs [250 h] |
| OHD-CSS-B2-B1-1070 |  | Casting of Slab & Beams | 1.11d | 2014-03-02 | 2014-03-03 | OHD-CSS-B2-B1-1060 SS+3.33d, OHD-CSS-B2-B1-1060 FF+2.22d | 369.33d | 0d | Concrete [319 M3]; Mason-Concrete [479 h]; Helper-Concrete [205 h] |
| OHD-CSS-B2-B1-1080 |  | De-Shuttering For Slab | 5.56d | 2014-03-27 | 2014-04-01 | OHD-CSS-B2-B1-1070 FS+23.33d | 597.11d | 0d | Formwork [554.94 M2]; Carpenter [1632 h]; Helper-Carpenter [699 h] |

| ID | WBS | Activity | Duration | Start | Finish | Predecessors | Total float | Free float | Resources |
| --- | --- | --- | --- | --- | --- | --- | --- | --- | --- |
|  | 2 | **PART B2** |  | 2014-01-21 | 2014-03-22 |  |  |  |  |
| OHD-CSS-B2-B2-1000 |  | Reinforcement for Columns & Wall | 5.56d | 2014-01-21 | 2014-01-27 | OHD-CSS-B3-B2-1100 FS+3.33d | 392.67d | 0d | Steel Reinforcement [36.41 Ton]; Steel Fixer [910 h]; Helper-Steel Fixer [910.22 h] |
| OHD-CSS-B2-B2-1010 |  | Shuttering for Verticals- Formwork | 7.78d | 2014-01-23 | 2014-01-31 | OHD-CSS-B2-B2-1000 SS+2.22d, OHD-CSS-B2-B2-1000 FF+3.33d | 392.67d | 0d | Formwork [750.15 M2]; Carpenter [2205.45 h]; Helper-Carpenter [945.19 h] |
| OHD-CSS-B2-B2-1020 |  | Casting of Columns & wall | 4.44d | 2014-01-29 | 2014-02-02 | OHD-CSS-B2-B2-1010 SS+3.33d, OHD-CSS-B2-B2-1010 FF+2.22d | 392.67d | 0d | Concrete [286 M3]; Mason-Concrete [429 h]; Helper-Concrete [184 h] |
| OHD-CSS-B2-B2-1030 |  | De-Shuttering of Columns & wall | 5.56d | 2014-02-01 | 2014-02-07 | OHD-CSS-B2-B2-1020 SS+3.33d, OHD-CSS-B2-B2-1020 FF+2.22d | 392.67d | 0d | Formwork [497.54 M2]; Carpenter [1463 h]; Helper-Carpenter [627 h] |
| OHD-CSS-B2-B2-1040 |  | Shuttering For Slab & Beams | 7.78d | 2014-02-05 | 2014-02-12 | OHD-CSS-B2-B2-1030 SS+3.33d, OHD-CSS-B2-B2-1030 FF+2.22d | 392.67d | 0d | Formwork [700.32 M2]; Carpenter [2058.94 h]; Helper-Carpenter [882.4 h] |
| OHD-CSS-B2-B2-1050 |  | Reinforcement for Slab & Beams | 4.44d | 2014-02-10 | 2014-02-14 | OHD-CSS-B2-B2-1040 SS+3.33d, OHD-CSS-B2-B2-1040 FF+2.22d | 392.67d | 0d | Steel Reinforcement [33.99 Ton]; Steel Fixer [850 h]; Helper-Steel Fixer [849.75 h] |
| OHD-CSS-B2-B2-1060 |  | MEP embedded works in Slab | 5.56d | 2014-02-13 | 2014-02-19 | OHD-CSS-B2-B2-1050 SS+3.33d, OHD-CSS-B2-B2-1050 FF+2.22d | 392.67d | 0d | MEP Mnhrs [250 h] |
| OHD-CSS-B2-B2-1070 |  | Casting of Slab & Beams | 1.11d | 2014-02-20 | 2014-02-21 | OHD-CSS-B2-B2-1060 SS+3.33d, OHD-CSS-B2-B2-1060 FF+2.22d | 392.67d | 0d | Concrete [267 M3]; Mason-Concrete [401 h]; Helper-Concrete [172 h] |
| OHD-CSS-B2-B2-1080 |  | De-Shuttering For Slab | 5.56d | 2014-03-17 | 2014-03-22 | OHD-CSS-B2-B2-1070 FS+23.33d | 607.11d | 10d | Formwork [464.48 M2]; Carpenter [1366 h]; Helper-Carpenter [585 h] |
|  | 3 | **PART C @ -02.65 M** |  | 2014-01-14 | 2014-03-21 |  |  |  |  |
|  | 1 | **PART C1** |  | 2014-01-14 | 2014-03-13 |  |  |  |  |
| OHD-CSS-B2-C1-1000 |  | Reinforcement for Columns & Wall | 4.44d | 2014-01-14 | 2014-01-19 | OHD-CSS-B3-C1-1100 FS+3.33d | 516d | 0d | Steel Reinforcement [33.48 Ton]; Steel Fixer [837 h]; Helper-Steel Fixer [837.02 h] |
| OHD-CSS-B2-C1-1010 |  | Shuttering for Verticals- Formwork | 7.78d | 2014-01-17 | 2014-01-24 | OHD-CSS-B2-C1-1000 SS+2.22d, OHD-CSS-B2-C1-1000 FF+3.33d | 516d | 0d | Formwork [689.83 M2]; Carpenter [2028.09 h]; Helper-Carpenter [869.18 h] |
| OHD-CSS-B2-C1-1020 |  | Casting of Columns & wall | 4.44d | 2014-01-22 | 2014-01-27 | OHD-CSS-B2-C1-1010 SS+3.33d, OHD-CSS-B2-C1-1010 FF+2.22d | 516d | 0d | Concrete [263 M3]; Mason-Concrete [395 h]; Helper-Concrete [169 h] |
| OHD-CSS-B2-C1-1030 |  | De-Shuttering of Columns & wall | 5.56d | 2014-01-26 | 2014-01-31 | OHD-CSS-B2-C1-1020 SS+3.33d, OHD-CSS-B2-C1-1020 FF+2.22d | 516d | 0d | Formwork [457.52 M2]; Carpenter [1345 h]; Helper-Carpenter [576 h] |
| OHD-CSS-B2-C1-1040 |  | Shuttering For Slab & Beams | 6.67d | 2014-01-29 | 2014-02-04 | OHD-CSS-B2-C1-1030 SS+3.33d, OHD-CSS-B2-C1-1030 FF+2.22d | 516d | 0d | Formwork [642.61 M2]; Carpenter [1889.29 h]; Helper-Carpenter [809.69 h] |
| OHD-CSS-B2-C1-1050 |  | Reinforcement for Slab & Beams | 4.44d | 2014-02-02 | 2014-02-07 | OHD-CSS-B2-C1-1040 SS+3.33d, OHD-CSS-B2-C1-1040 FF+2.22d | 516d | 0d | Steel Reinforcement [31.19 Ton]; Steel Fixer [780 h]; Helper-Steel Fixer [779.73 h] |
| OHD-CSS-B2-C1-1060 |  | MEP embedded works in Slab | 5.56d | 2014-02-06 | 2014-02-11 | OHD-CSS-B2-C1-1050 SS+3.33d, OHD-CSS-B2-C1-1050 FF+2.22d | 516d | 0d | MEP Mnhrs [250 h] |
| OHD-CSS-B2-C1-1070 |  | Casting of Slab & Beams | 1.11d | 2014-02-12 | 2014-02-13 | OHD-CSS-B2-C1-1060 SS+3.33d, OHD-CSS-B2-C1-1060 FF+2.22d | 516d | 0d | Concrete [245 M3]; Mason-Concrete [368 h]; Helper-Concrete [158 h] |
| OHD-CSS-B2-C1-1080 |  | De-Shuttering For Slab | 4.44d | 2014-03-09 | 2014-03-13 | OHD-CSS-B2-C1-1070 FS+23.33d | 616d | 7.78d | Formwork [426.21 M2]; Carpenter [1253 h]; Helper-Carpenter [537 h] |
|  | 2 | **PART C2** |  | 2014-01-23 | 2014-03-21 |  |  |  |  |
| OHD-CSS-B2-C2-1000 |  | Reinforcement for Columns & Wall | 4.44d | 2014-01-23 | 2014-01-28 | OHD-CSS-B3-C2-1100 FS+3.33d | 469.33d | 0d | Steel Reinforcement [29.79 Ton]; Steel Fixer [745 h]; Helper-Steel Fixer [744.72 h] |
| OHD-CSS-B2-C2-1010 |  | Shuttering for Verticals- Formwork | 6.67d | 2014-01-26 | 2014-02-01 | OHD-CSS-B2-C2-1000 SS+2.22d, OHD-CSS-B2-C2-1000 FF+3.33d | 469.33d | 0d | Formwork [613.76 M2]; Carpenter [1804.46 h]; Helper-Carpenter [773.34 h] |
| OHD-CSS-B2-C2-1020 |  | Casting of Columns & wall | 4.44d | 2014-01-30 | 2014-02-03 | OHD-CSS-B2-C2-1010 SS+3.33d, OHD-CSS-B2-C2-1010 FF+2.22d | 469.33d | 0d | Concrete [234 M3]; Mason-Concrete [351 h]; Helper-Concrete [150 h] |
| OHD-CSS-B2-C2-1030 |  | De-Shuttering of Columns & wall | 4.44d | 2014-02-02 | 2014-02-07 | OHD-CSS-B2-C2-1020 SS+3.33d, OHD-CSS-B2-C2-1020 FF+2.22d | 469.33d | 0d | Formwork [407.07 M2]; Carpenter [1197 h]; Helper-Carpenter [513 h] |
| OHD-CSS-B2-C2-1040 |  | Shuttering For Slab & Beams | 6.67d | 2014-02-06 | 2014-02-12 | OHD-CSS-B2-C2-1030 SS+3.33d, OHD-CSS-B2-C2-1030 FF+2.22d | 469.33d | 0d | Formwork [571.8 M2]; Carpenter [1681.08 h]; Helper-Carpenter [720.46 h] |
| OHD-CSS-B2-C2-1050 |  | Reinforcement for Slab & Beams | 4.44d | 2014-02-10 | 2014-02-14 | OHD-CSS-B2-C2-1040 SS+3.33d, OHD-CSS-B2-C2-1040 FF+2.22d | 469.33d | 0d | Steel Reinforcement [27.75 Ton]; Steel Fixer [694 h]; Helper-Steel Fixer [693.8 h] |
| OHD-CSS-B2-C2-1060 |  | MEP embedded works in Slab | 5.56d | 2014-02-13 | 2014-02-19 | OHD-CSS-B2-C2-1050 SS+3.33d, OHD-CSS-B2-C2-1050 FF+2.22d | 469.33d | 0d | MEP Mnhrs [250 h] |
| OHD-CSS-B2-C2-1070 |  | Casting of Slab & Beams | 1.11d | 2014-02-20 | 2014-02-21 | OHD-CSS-B2-C2-1060 SS+3.33d, OHD-CSS-B2-C2-1060 FF+2.22d | 469.33d | 0d | Concrete [218 M3]; Mason-Concrete [327 h]; Helper-Concrete [140 h] |
| OHD-CSS-B2-C2-1080 |  | De-Shuttering For Slab | 4.44d | 2014-03-17 | 2014-03-21 | OHD-CSS-B2-C2-1070 FS+23.33d | 608.22d | 0d | Formwork [379.24 M2]; Carpenter [1115 h]; Helper-Carpenter [478 h] |

| ID | WBS | Activity | Duration | Start | Finish | Predecessors | Total float | Free float | Resources |
| --- | --- | --- | --- | --- | --- | --- | --- | --- | --- |
|  | 3 | **PART C3** |  | 2014-01-14 | 2014-03-10 |  |  |  |  |
| OHD-CSS-B2-C3-1000 |  | Reinforcement for Columns & Wall | 4.44d | 2014-01-14 | 2014-01-19 | OHD-CSS-B3-C3-1100 FS+3.33d | 519.33d | 0d | Steel Reinforcement [24.7 Ton]; Steel Fixer [617 h]; Helper-Steel Fixer [617.42 h] |
| OHD-CSS-B2-C3-1010 |  | Shuttering for Verticals- Formwork | 5.56d | 2014-01-17 | 2014-01-22 | OHD-CSS-B2-C3-1000 SS+2.22d, OHD-CSS-B2-C3-1000 FF+3.33d | 519.33d | 0d | Formwork [508.85 M2]; Carpenter [1496.01 h]; Helper-Carpenter [641.15 h] |
| OHD-CSS-B2-C3-1020 |  | Casting of Columns & wall | 4.44d | 2014-01-20 | 2014-01-24 | OHD-CSS-B2-C3-1010 SS+3.33d, OHD-CSS-B2-C3-1010 FF+2.22d | 519.33d | 0d | Concrete [194 M3]; Mason-Concrete [291 h]; Helper-Concrete [125 h] |
| OHD-CSS-B2-C3-1030 |  | De-Shuttering of Columns & wall | 4.44d | 2014-01-23 | 2014-01-28 | OHD-CSS-B2-C3-1020 SS+3.33d, OHD-CSS-B2-C3-1020 FF+2.22d | 519.33d | 0d | Formwork [337.49 M2]; Carpenter [992 h]; Helper-Carpenter [425 h] |
| OHD-CSS-B2-C3-1040 |  | Shuttering For Slab & Beams | 5.56d | 2014-01-27 | 2014-02-01 | OHD-CSS-B2-C3-1030 SS+3.33d, OHD-CSS-B2-C3-1030 FF+2.22d | 519.33d | 0d | Formwork [474.75 M2]; Carpenter [1395.76 h]; Helper-Carpenter [598.18 h] |
| OHD-CSS-B2-C3-1050 |  | Reinforcement for Slab & Beams | 4.44d | 2014-01-30 | 2014-02-03 | OHD-CSS-B2-C3-1040 SS+3.33d, OHD-CSS-B2-C3-1040 FF+2.22d | 519.33d | 0d | Steel Reinforcement [23.04 Ton]; Steel Fixer [576 h]; Helper-Steel Fixer [576.05 h] |
| OHD-CSS-B2-C3-1060 |  | MEP embedded works in Slab | 5.56d | 2014-02-02 | 2014-02-08 | OHD-CSS-B2-C3-1050 SS+3.33d, OHD-CSS-B2-C3-1050 FF+2.22d | 519.33d | 0d | MEP Mnhrs [250 h] |
| OHD-CSS-B2-C3-1070 |  | Casting of Slab & Beams | 1.11d | 2014-02-09 | 2014-02-10 | OHD-CSS-B2-C3-1060 SS+3.33d, OHD-CSS-B2-C3-1060 FF+2.22d | 519.33d | 0d | Concrete [181 M3]; Mason-Concrete [272 h]; Helper-Concrete [116 h] |
| OHD-CSS-B2-C3-1080 |  | De-Shuttering For Slab | 4.44d | 2014-03-05 | 2014-03-10 | OHD-CSS-B2-C3-1070 FS+23.33d | 619.33d | 11.11d | Formwork [314.87 M2]; Carpenter [926 h]; Helper-Carpenter [397 h] |
|  | 4 | **PART C4** |  | 2014-01-18 | 2014-03-16 |  |  |  |  |
| OHD-CSS-B2-C4-1000 |  | Reinforcement for Columns & Wall | 4.44d | 2014-01-18 | 2014-01-22 | OHD-CSS-B3-C4-1100 FS+3.33d | 446d | 0d | Steel Reinforcement [33.48 Ton]; Steel Fixer [837 h]; Helper-Steel Fixer [837.02 h] |
| OHD-CSS-B2-C4-1010 |  | Shuttering for Verticals- Formwork | 7.78d | 2014-01-20 | 2014-01-28 | OHD-CSS-B2-C4-1000 SS+2.22d, OHD-CSS-B2-C4-1000 FF+3.33d | 446d | 0d | Formwork [689.83 M2]; Carpenter [2028.09 h]; Helper-Carpenter [869.18 h] |
| OHD-CSS-B2-C4-1020 |  | Casting of Columns & wall | 4.44d | 2014-01-26 | 2014-01-30 | OHD-CSS-B2-C4-1010 SS+3.33d, OHD-CSS-B2-C4-1010 FF+2.22d | 446d | 0d | Concrete [263 M3]; Mason-Concrete [395 h]; Helper-Concrete [169 h] |
| OHD-CSS-B2-C4-1030 |  | De-Shuttering of Columns & wall | 5.56d | 2014-01-29 | 2014-02-03 | OHD-CSS-B2-C4-1020 SS+3.33d, OHD-CSS-B2-C4-1020 FF+2.22d | 446d | 0d | Formwork [457.52 M2]; Carpenter [1345 h]; Helper-Carpenter [576 h] |
| OHD-CSS-B2-C4-1040 |  | Shuttering For Slab & Beams | 6.67d | 2014-02-01 | 2014-02-08 | OHD-CSS-B2-C4-1030 SS+3.33d, OHD-CSS-B2-C4-1030 FF+2.22d | 446d | 0d | Formwork [642.61 M2]; Carpenter [1889.29 h]; Helper-Carpenter [809.69 h] |
| OHD-CSS-B2-C4-1050 |  | Reinforcement for Slab & Beams | 4.44d | 2014-02-06 | 2014-02-10 | OHD-CSS-B2-C4-1040 SS+3.33d, OHD-CSS-B2-C4-1040 FF+2.22d | 446d | 0d | Steel Reinforcement [31.19 Ton]; Steel Fixer [780 h]; Helper-Steel Fixer [779.73 h] |
| OHD-CSS-B2-C4-1060 |  | MEP embedded works in Slab | 5.56d | 2014-02-09 | 2014-02-14 | OHD-CSS-B2-C4-1050 SS+3.33d, OHD-CSS-B2-C4-1050 FF+2.22d | 446d | 0d | MEP Mnhrs [250 h] |
| OHD-CSS-B2-C4-1070 |  | Casting of Slab & Beams | 1.11d | 2014-02-16 | 2014-02-17 | OHD-CSS-B2-C4-1060 SS+3.33d, OHD-CSS-B2-C4-1060 FF+2.22d | 446d | 0d | Concrete [245 M3]; Mason-Concrete [368 h]; Helper-Concrete [158 h] |
| OHD-CSS-B2-C4-1080 |  | De-Shuttering For Slab | 4.44d | 2014-03-12 | 2014-03-16 | OHD-CSS-B2-C4-1070 FS+23.33d | 612.67d | 4.44d | Formwork [426.21 M2]; Carpenter [1253 h]; Helper-Carpenter [537 h] |
|  | 13 | **BASEMENT LEVEL 1** |  | 2013-11-27 | 2014-05-15 |  |  |  |  |
|  | 3 | **PART B @ +0.700 M -STAGE LEVEL** |  | 2014-02-25 | 2014-05-15 |  |  |  |  |
|  | 1 | **PART B1** |  | 2014-03-07 | 2014-05-15 |  |  |  |  |
| OHD-CSS-B1-B1-1000 |  | Reinforcement for Columns & Wall | 7.78d | 2014-03-07 | 2014-03-14 | OHD-CSS-B2-B1-1070 FS+3.33d | 369.33d | 0d | Steel Reinforcement [57.03 Ton]; Steel Fixer [1426 h]; Helper-Steel Fixer [1425.8 h] |
| OHD-CSS-B1-B1-1010 |  | Shuttering for Verticals- Formwork | 13.33d | 2014-03-09 | 2014-03-22 | OHD-CSS-B1-B1-1000 SS+2.22d, OHD-CSS-B1-B1-1000 FF+3.33d | 369.33d | 0d | Formwork [1175.07 M2]; Carpenter [3454.69 h]; Helper-Carpenter [1480.58 h] |
| OHD-CSS-B1-B1-1020 |  | Casting of Columns & wall | 4.44d | 2014-03-20 | 2014-03-24 | OHD-CSS-B1-B1-1010 SS+3.33d, OHD-CSS-B1-B1-1010 FF+2.22d | 369.33d | 0d | Concrete [448 M3]; Mason-Concrete [672 h]; Helper-Concrete [288 h] |
| OHD-CSS-B1-B1-1030 |  | De-Shuttering of Columns & wall | 8.89d | 2014-03-23 | 2014-04-01 | OHD-CSS-B1-B1-1020 SS+3.33d, OHD-CSS-B1-B1-1020 FF+2.22d | 369.33d | 0d | Formwork [779.36 M2]; Carpenter [2291 h]; Helper-Carpenter [982 h] |
| OHD-CSS-B1-B1-1040 |  | Shuttering For Slab & Beams | 12.22d | 2014-03-27 | 2014-04-08 | OHD-CSS-B1-B1-1030 SS+3.33d, OHD-CSS-B1-B1-1030 FF+2.22d | 369.33d | 0d | Formwork [1096.38 M2]; Carpenter [3223.35 h]; Helper-Carpenter [1381.44 h] |
| OHD-CSS-B1-B1-1050 |  | Reinforcement for Slab & Beams | 7.78d | 2014-04-02 | 2014-04-10 | OHD-CSS-B1-B1-1040 SS+3.33d, OHD-CSS-B1-B1-1040 FF+2.22d | 369.33d | 0d | Steel Reinforcement [53.21 Ton]; Steel Fixer [1330 h]; Helper-Steel Fixer [1330.32 h] |
| OHD-CSS-B1-B1-1060 |  | MEP embedded works in Slab | 5.56d | 2014-04-07 | 2014-04-12 | OHD-CSS-B1-B1-1050 SS+3.33d, OHD-CSS-B1-B1-1050 FF+2.22d | 369.33d | 0d | MEP Mnhrs [250 h] |
| OHD-CSS-B1-B1-1070 |  | Casting of Slab & Beams | 1.11d | 2014-04-13 | 2014-04-14 | OHD-CSS-B1-B1-1060 SS+3.33d, OHD-CSS-B1-B1-1060 FF+2.22d | 369.33d | 0d | Concrete [418 M3]; Mason-Concrete [627 h]; Helper-Concrete [269 h] |
| OHD-CSS-B1-B1-1080 |  | De-Shuttering For Slab | 7.78d | 2014-05-08 | 2014-05-15 | OHD-CSS-B1-B1-1070 FS+23.33d | 552.67d | 0d | Formwork [727.17 M2]; Carpenter [2138 h]; Helper-Carpenter [916 h] |

| ID | WBS | Activity | Duration | Start | Finish | Predecessors | Total float | Free float | Resources |
| --- | --- | --- | --- | --- | --- | --- | --- | --- | --- |
|  | 2 | **PART B2** |  | 2014-02-25 | 2014-04-30 |  |  |  |  |
| OHD-CSS-B1-B2-1000 |  | Reinforcement for Columns & Wall | 6.67d | 2014-02-25 | 2014-03-03 | OHD-CSS-B2-B2-1070 FS+3.33d | 392.67d | 0d | Steel Reinforcement [46.34 Ton]; Steel Fixer [1158 h]; Helper-Steel Fixer [1158.46 h] |
| OHD-CSS-B1-B2-1010 |  | Shuttering for Verticals- Formwork | 10d | 2014-02-27 | 2014-03-09 | OHD-CSS-B1-B2-1000 SS+2.22d, OHD-CSS-B1-B2-1000 FF+3.33d | 392.67d | 0d | Formwork [954.74 M2]; Carpenter [2806.94 h]; Helper-Carpenter [1202.97 h] |
| OHD-CSS-B1-B2-1020 |  | Casting of Columns & wall | 4.44d | 2014-03-07 | 2014-03-11 | OHD-CSS-B1-B2-1010 SS+3.33d, OHD-CSS-B1-B2-1010 FF+2.22d | 392.67d | 0d | Concrete [364 M3]; Mason-Concrete [546 h]; Helper-Concrete [234 h] |
| OHD-CSS-B1-B2-1030 |  | De-Shuttering of Columns & wall | 6.67d | 2014-03-10 | 2014-03-16 | OHD-CSS-B1-B2-1020 SS+3.33d, OHD-CSS-B1-B2-1020 FF+2.22d | 392.67d | 0d | Formwork [633.23 M2]; Carpenter [1862 h]; Helper-Carpenter [798 h] |
| OHD-CSS-B1-B2-1040 |  | Shuttering For Slab & Beams | 10d | 2014-03-13 | 2014-03-23 | OHD-CSS-B1-B2-1030 SS+3.33d, OHD-CSS-B1-B2-1030 FF+2.22d | 392.67d | 0d | Formwork [891.79 M2]; Carpenter [2621.86 h]; Helper-Carpenter [1123.66 h] |
| OHD-CSS-B1-B2-1050 |  | Reinforcement for Slab & Beams | 5.56d | 2014-03-20 | 2014-03-25 | OHD-CSS-B1-B2-1040 SS+3.33d, OHD-CSS-B1-B2-1040 FF+2.22d | 392.67d | 0d | Steel Reinforcement [43.28 Ton]; Steel Fixer [1082 h]; Helper-Steel Fixer [1082.08 h] |
| OHD-CSS-B1-B2-1060 |  | MEP embedded works in Slab | 5.56d | 2014-03-23 | 2014-03-29 | OHD-CSS-B1-B2-1050 SS+3.33d, OHD-CSS-B1-B2-1050 FF+2.22d | 392.67d | 0d | MEP Mnhrs [250 h] |
| OHD-CSS-B1-B2-1070 |  | Casting of Slab & Beams | 1.11d | 2014-03-30 | 2014-03-31 | OHD-CSS-B1-B2-1060 SS+3.33d, OHD-CSS-B1-B2-1060 FF+2.22d | 392.67d | 0d | Concrete [340 M3]; Mason-Concrete [510 h]; Helper-Concrete [219 h] |
| OHD-CSS-B1-B2-1080 |  | De-Shuttering For Slab | 6.67d | 2014-04-23 | 2014-04-30 | OHD-CSS-B1-B2-1070 FS+23.33d | 568.22d | 15.56d | Formwork [591.48 M2]; Carpenter [1739 h]; Helper-Carpenter [745 h] |
|  | 5 | **PART C @ +0.700 M -STAGE LEVEL** |  | 2014-02-13 | 2014-04-22 |  |  |  |  |
|  | 1 | **PART C1** |  | 2014-02-17 | 2014-04-18 |  |  |  |  |
| OHD-CSS-B1-C1-1000 |  | Reinforcement for Columns & Wall | 5.56d | 2014-02-17 | 2014-02-22 | OHD-CSS-B2-C1-1070 FS+3.33d | 516d | 0d | Steel Reinforcement [38.95 Ton]; Steel Fixer [974 h]; Helper-Steel Fixer [973.87 h] |
| OHD-CSS-B1-C1-1010 |  | Shuttering for Verticals- Formwork | 8.89d | 2014-02-19 | 2014-02-28 | OHD-CSS-B1-C1-1000 SS+2.22d, OHD-CSS-B1-C1-1000 FF+3.33d | 516d | 0d | Formwork [802.61 M2]; Carpenter [2359.68 h]; Helper-Carpenter [1011.29 h] |
| OHD-CSS-B1-C1-1020 |  | Casting of Columns & wall | 4.44d | 2014-02-26 | 2014-03-02 | OHD-CSS-B1-C1-1010 SS+3.33d, OHD-CSS-B1-C1-1010 FF+2.22d | 516d | 0d | Concrete [306 M3]; Mason-Concrete [459 h]; Helper-Concrete [197 h] |
| OHD-CSS-B1-C1-1030 |  | De-Shuttering of Columns & wall | 5.56d | 2014-03-01 | 2014-03-06 | OHD-CSS-B1-C1-1020 SS+3.33d, OHD-CSS-B1-C1-1020 FF+2.22d | 516d | 0d | Formwork [532.33 M2]; Carpenter [1565 h]; Helper-Carpenter [671 h] |
| OHD-CSS-B1-C1-1040 |  | Shuttering For Slab & Beams | 7.78d | 2014-03-04 | 2014-03-12 | OHD-CSS-B1-C1-1030 SS+3.33d, OHD-CSS-B1-C1-1030 FF+2.22d | 516d | 0d | Formwork [750.15 M2]; Carpenter [2205.45 h]; Helper-Carpenter [945.19 h] |
| OHD-CSS-B1-C1-1050 |  | Reinforcement for Slab & Beams | 5.56d | 2014-03-09 | 2014-03-14 | OHD-CSS-B1-C1-1040 SS+3.33d, OHD-CSS-B1-C1-1040 FF+2.22d | 516d | 0d | Steel Reinforcement [36.41 Ton]; Steel Fixer [910 h]; Helper-Steel Fixer [910.22 h] |
| OHD-CSS-B1-C1-1060 |  | MEP embedded works in Slab | 5.56d | 2014-03-12 | 2014-03-18 | OHD-CSS-B1-C1-1050 SS+3.33d, OHD-CSS-B1-C1-1050 FF+2.22d | 516d | 0d | MEP Mnhrs [250 h] |
| OHD-CSS-B1-C1-1070 |  | Casting of Slab & Beams | 1.11d | 2014-03-19 | 2014-03-20 | OHD-CSS-B1-C1-1060 SS+3.33d, OHD-CSS-B1-C1-1060 FF+2.22d | 516d | 0d | Concrete [286 M3]; Mason-Concrete [429 h]; Helper-Concrete [184 h] |
| OHD-CSS-B1-C1-1080 |  | De-Shuttering For Slab | 5.56d | 2014-04-12 | 2014-04-18 | OHD-CSS-B1-C1-1070 FS+23.33d | 580.44d | 4.44d | Formwork [497.54 M2]; Carpenter [1463 h]; Helper-Carpenter [627 h] |
|  | 2 | **PART C2** |  | 2014-02-25 | 2014-04-22 |  |  |  |  |
| OHD-CSS-B1-C2-1000 |  | Reinforcement for Columns & Wall | 4.44d | 2014-02-25 | 2014-03-01 | OHD-CSS-B2-C2-1070 FS+3.33d | 469.33d | 0d | Steel Reinforcement [31.44 Ton]; Steel Fixer [786 h]; Helper-Steel Fixer [786.1 h] |
| OHD-CSS-B1-C2-1010 |  | Shuttering for Verticals- Formwork | 6.67d | 2014-02-27 | 2014-03-05 | OHD-CSS-B1-C2-1000 SS+2.22d, OHD-CSS-B1-C2-1000 FF+3.33d | 469.33d | 0d | Formwork [647.86 M2]; Carpenter [1904.71 h]; Helper-Carpenter [816.3 h] |
| OHD-CSS-B1-C2-1020 |  | Casting of Columns & wall | 4.44d | 2014-03-03 | 2014-03-08 | OHD-CSS-B1-C2-1010 SS+3.33d, OHD-CSS-B1-C2-1010 FF+2.22d | 469.33d | 0d | Concrete [247 M3]; Mason-Concrete [371 h]; Helper-Concrete [159 h] |
| OHD-CSS-B1-C2-1030 |  | De-Shuttering of Columns & wall | 4.44d | 2014-03-07 | 2014-03-11 | OHD-CSS-B1-C2-1020 SS+3.33d, OHD-CSS-B1-C2-1020 FF+2.22d | 469.33d | 0d | Formwork [429.69 M2]; Carpenter [1263 h]; Helper-Carpenter [541 h] |
| OHD-CSS-B1-C2-1040 |  | Shuttering For Slab & Beams | 6.67d | 2014-03-10 | 2014-03-16 | OHD-CSS-B1-C2-1030 SS+3.33d, OHD-CSS-B1-C2-1030 FF+2.22d | 469.33d | 0d | Formwork [603.27 M2]; Carpenter [1773.61 h]; Helper-Carpenter [760.12 h] |
| OHD-CSS-B1-C2-1050 |  | Reinforcement for Slab & Beams | 4.44d | 2014-03-14 | 2014-03-19 | OHD-CSS-B1-C2-1040 SS+3.33d, OHD-CSS-B1-C2-1040 FF+2.22d | 469.33d | 0d | Steel Reinforcement [29.28 Ton]; Steel Fixer [732 h]; Helper-Steel Fixer [731.99 h] |
| OHD-CSS-B1-C2-1060 |  | MEP embedded works in Slab | 5.56d | 2014-03-18 | 2014-03-23 | OHD-CSS-B1-C2-1050 SS+3.33d, OHD-CSS-B1-C2-1050 FF+2.22d | 469.33d | 0d | MEP Mnhrs [250 h] |
| OHD-CSS-B1-C2-1070 |  | Casting of Slab & Beams | 1.11d | 2014-03-24 | 2014-03-25 | OHD-CSS-B1-C2-1060 SS+3.33d, OHD-CSS-B1-C2-1060 FF+2.22d | 469.33d | 0d | Concrete [230 M3]; Mason-Concrete [345 h]; Helper-Concrete [148 h] |
| OHD-CSS-B1-C2-1080 |  | De-Shuttering For Slab | 4.44d | 2014-04-18 | 2014-04-22 | OHD-CSS-B1-C2-1070 FS+23.33d | 576d | 0d | Formwork [400.12 M2]; Carpenter [1176 h]; Helper-Carpenter [504 h] |

| ID | WBS | Activity | Duration | Start | Finish | Predecessors | Total float | Free float | Calendar | Resources |
| --- | --- | --- | --- | --- | --- | --- | --- | --- | --- | --- |
|  | 3 | **PART C3** |  | 2014-02-13 | 2014-04-14 |  |  |  |  |  |
| OHD-CSS-B1-C3-1000 |  | Reinforcement for Columns & Wall | 5.56d | 2014-02-13 | 2014-02-19 | OHD-CSS-B2-C3-1070 FS+3.33d | 519.33d | 0d |  | Steel Reinforcement [38.95 Ton]; Steel Fixer [974 h]; Helper-Steel Fixer [973.87 h] |
| OHD-CSS-B1-C3-1010 |  | Shuttering for Verticals- Formwork | 8.89d | 2014-02-16 | 2014-02-24 | OHD-CSS-B1-C3-1000 SS+2.22d, OHD-CSS-B1-C3-1000 FF+3.33d | 519.33d | 0d |  | Formwork [802.61 M2]; Carpenter [2359.68 h]; Helper-Carpenter [1011.29 h] |
| OHD-CSS-B1-C3-1020 |  | Casting of Columns & wall | 4.44d | 2014-02-22 | 2014-02-27 | OHD-CSS-B1-C3-1010 SS+3.33d, OHD-CSS-B1-C3-1010 FF+2.22d | 519.33d | 0d |  | Concrete [306 M3]; Mason-Concrete [459 h]; Helper-Concrete [197 h] |
| OHD-CSS-B1-C3-1030 |  | De-Shuttering of Columns & wall | 5.56d | 2014-02-26 | 2014-03-03 | OHD-CSS-B1-C3-1020 SS+3.33d, OHD-CSS-B1-C3-1020 FF+2.22d | 519.33d | 0d |  | Formwork [532.33 M2]; Carpenter [1565 h]; Helper-Carpenter [671 h] |
| OHD-CSS-B1-C3-1040 |  | Shuttering For Slab & Beams | 7.78d | 2014-03-01 | 2014-03-09 | OHD-CSS-B1-C3-1030 SS+3.33d, OHD-CSS-B1-C3-1030 FF+2.22d | 519.33d | 0d |  | Formwork [750.15 M2]; Carpenter [2205.45 h]; Helper-Carpenter [945.19 h] |
| OHD-CSS-B1-C3-1050 |  | Reinforcement for Slab & Beams | 5.56d | 2014-03-05 | 2014-03-11 | OHD-CSS-B1-C3-1040 SS+3.33d, OHD-CSS-B1-C3-1040 FF+2.22d | 519.33d | 0d |  | Steel Reinforcement [36.41 Ton]; Steel Fixer [910 h]; Helper-Steel Fixer [910.22 h] |
| OHD-CSS-B1-C3-1060 |  | MEP embedded works in Slab | 5.56d | 2014-03-09 | 2014-03-14 | OHD-CSS-B1-C3-1050 SS+3.33d, OHD-CSS-B1-C3-1050 FF+2.22d | 519.33d | 0d |  | MEP Mnhrs [250 h] |
| OHD-CSS-B1-C3-1070 |  | Casting of Slab & Beams | 1.11d | 2014-03-15 | 2014-03-16 | OHD-CSS-B1-C3-1060 SS+3.33d, OHD-CSS-B1-C3-1060 FF+2.22d | 519.33d | 0d |  | Concrete [286 M3]; Mason-Concrete [429 h]; Helper-Concrete [184 h] |
| OHD-CSS-B1-C3-1080 |  | De-Shuttering For Slab | 5.56d | 2014-04-09 | 2014-04-14 | OHD-CSS-B1-C3-1070 FS+23.33d | 583.78d | 7.78d |  | Formwork [497.54 M2]; Carpenter [1463 h]; Helper-Carpenter [627 h] |
|  | 4 | **PART C4** |  | 2014-02-20 | 2014-04-15 |  |  |  |  |  |
| OHD-CSS-B1-C4-1000 |  | Reinforcement for Columns & Wall | 4.44d | 2014-02-20 | 2014-02-24 | OHD-CSS-B2-C4-1070 FS+3.33d | 446d | 0d |  | Steel Reinforcement [25.97 Ton]; Steel Fixer [649 h]; Helper-Steel Fixer [649.25 h] |
| OHD-CSS-B1-C4-1010 |  | Shuttering for Verticals- Formwork | 5.56d | 2014-02-22 | 2014-02-28 | OHD-CSS-B1-C4-1000 SS+2.22d, OHD-CSS-B1-C4-1000 FF+3.33d | 446d | 0d |  | Formwork [535.07 M2]; Carpenter [1573.12 h]; Helper-Carpenter [674.19 h] |
| OHD-CSS-B1-C4-1020 |  | Casting of Columns & wall | 4.44d | 2014-02-26 | 2014-03-02 | OHD-CSS-B1-C4-1010 SS+3.33d, OHD-CSS-B1-C4-1010 FF+2.22d | 446d | 0d |  | Concrete [204 M3]; Mason-Concrete [306 h]; Helper-Concrete [131 h] |
| OHD-CSS-B1-C4-1030 |  | De-Shuttering of Columns & wall | 4.44d | 2014-03-01 | 2014-03-05 | OHD-CSS-B1-C4-1020 SS+3.33d, OHD-CSS-B1-C4-1020 FF+2.22d | 446d | 0d |  | Formwork [354.89 M2]; Carpenter [1043 h]; Helper-Carpenter [447 h] |
| OHD-CSS-B1-C4-1040 |  | Shuttering For Slab & Beams | 5.56d | 2014-03-04 | 2014-03-10 | OHD-CSS-B1-C4-1030 SS+3.33d, OHD-CSS-B1-C4-1030 FF+2.22d | 446d | 0d |  | Formwork [500.98 M2]; Carpenter [1472.87 h]; Helper-Carpenter [631.23 h] |
| OHD-CSS-B1-C4-1050 |  | Reinforcement for Slab & Beams | 4.44d | 2014-03-08 | 2014-03-12 | OHD-CSS-B1-C4-1040 SS+3.33d, OHD-CSS-B1-C4-1040 FF+2.22d | 446d | 0d |  | Steel Reinforcement [24.31 Ton]; Steel Fixer [608 h]; Helper-Steel Fixer [607.87 h] |
| OHD-CSS-B1-C4-1060 |  | MEP embedded works in Slab | 5.56d | 2014-03-11 | 2014-03-16 | OHD-CSS-B1-C4-1050 SS+3.33d, OHD-CSS-B1-C4-1050 FF+2.22d | 446d | 0d |  | MEP Mnhrs [250 h] |
| OHD-CSS-B1-C4-1070 |  | Casting of Slab & Beams | 1.11d | 2014-03-18 | 2014-03-19 | OHD-CSS-B1-C4-1060 SS+3.33d, OHD-CSS-B1-C4-1060 FF+2.22d | 446d | 0d |  | Concrete [191 M3]; Mason-Concrete [287 h]; Helper-Concrete [123 h] |
| OHD-CSS-B1-C4-1080 |  | De-Shuttering For Slab | 4.44d | 2014-04-11 | 2014-04-15 | OHD-CSS-B1-C4-1070 FS+23.33d | 582.67d | 6.67d |  | Formwork [332.27 M2]; Carpenter [977 h]; Helper-Carpenter [419 h] |
|  | 2 | **PART D - PILE CAPS @ +0.300 M** |  | 2013-11-27 | 2014-01-21 |  |  |  |  |  |
| OHD-CSS-B1-D-1000 |  | Blinding Under Piles Caps | 10d | 2013-11-27 | 2013-12-06 |  | 710d | 0d | UAE 7 days/Week |  |
| OHD-CSS-B1-D-1020 |  | Waterproofing under Pile Caps | 10d | 2013-11-27 | 2013-12-06 |  | 756d | 730d | UAE 7 days/Week |  |
| OHD-CSS-B1-D-1100 |  | Anti-Termite & Blinding Under Slab | 10d | 2013-11-27 | 2013-12-06 |  | 756d | 730d | UAE 7 days/Week |  |
| OHD-CSS-B1-D-1110 |  | Waterproofing Under Under Slab | 10d | 2013-11-27 | 2013-12-06 |  | 566.22d | 0d | UAE 7 days/Week |  |
| OHD-CSS-B1-D-1010 |  | Screed under Pile Caps | 10d | 2013-12-01 | 2013-12-10 | OHD-CSS-B1-D-1000 FF+4d, OHD-CSS-B1-D-1000 SS+4d | 710d | 0d | UAE 7 days/Week |  |
| OHD-CSS-B1-D-1120 |  | Screed Work Under Under Slab | 10d | 2013-12-02 | 2013-12-11 | OHD-CSS-B1-D-1110 SS+5d, OHD-CSS-B1-D-1110 FF+5d | 566.22d | 0d | UAE 7 days/Week |  |
| OHD-CSS-B1-D-1030 |  | Reinforcement for Pile Caps | 10d | 2013-12-05 | 2013-12-14 | OHD-CSS-B1-D-1010 FF+4d, OHD-CSS-B1-D-1010 SS+4d | 710d | 0d | UAE 7 days/Week |  |
| OHD-CSS-B1-D-1130 |  | Reinforcement for Under Slab | 10d | 2013-12-07 | 2013-12-16 | OHD-CSS-B1-D-1120 SS+5d, OHD-CSS-B1-D-1120 FF+5d | 566.22d | 0d | UAE 7 days/Week |  |
| OHD-CSS-B1-D-1040 |  | Shutter for Pile Caps | 10d | 2013-12-09 | 2013-12-18 | OHD-CSS-B1-D-1030 FF+4d, OHD-CSS-B1-D-1030 SS+4d | 710d | 0d | UAE 7 days/Week |  |
| OHD-CSS-B1-D-1140 |  | Casting of Slab & Beams | 12d | 2013-12-17 | 2013-12-28 | OHD-CSS-B1-D-1130 | 566.22d | 0d | UAE 7 days/Week |  |
| OHD-CSS-B1-D-1050 |  | Casting of Pile Caps | 10d | 2013-12-19 | 2013-12-28 | OHD-CSS-B1-D-1040 FF+4d, OHD-CSS-B1-D-1040, OHD-CSS-B1-D-1040 SS+4d | 710d | 0d | UAE 7 days/Week |  |
| OHD-CSS-B1-D-1060 |  | De-Shuttering for Pile Caps | 10d | 2013-12-29 | 2014-01-07 | OHD-CSS-B1-D-1050, OHD-CSS-B1-D-1050 SS+4d, OHD-CSS-B1-D-1050 FF+4d | 710d | 0d | UAE 7 days/Week |  |
| OHD-CSS-B1-D-1070 |  | Waterproofing for Pile Caps | 10d | 2014-01-02 | 2014-01-11 | OHD-CSS-B1-D-1060 FF+4d, OHD-CSS-B1-D-1060 SS+4d | 710d | 0d | UAE 7 days/Week |  |
| OHD-CSS-B1-D-1080 |  | Back Filling & Compaction Under Slab | 10d | 2014-01-07 | 2014-01-16 | OHD-CSS-B1-D-1070 SS+5d, OHD-CSS-B1-D-1070 FF+5d | 710d | 0d | UAE 7 days/Week |  |
| OHD-CSS-B1-D-1090 |  | MEP Under Ground Services | 5.56d | 2014-01-16 | 2014-01-21 | OHD-CSS-B1-D-1080 FF+5d, OHD-CSS-B1-D-1080 SS+5d | 710d | 684d | UAE 7 days/Week | MEP Mnhrs [250 h] |

| ID | WBS | Activity | Duration | Start | Finish | Predecessors | Total float | Free float | Resources |
| --- | --- | --- | --- | --- | --- | --- | --- | --- | --- |
|  | 6 | **PROMENADE & PLAZA LOWER BALACONY LEVEL** |  | 2014-01-01 | 2014-05-30 |  |  |  |  |
|  | 6 | **PART C @ +6.250 M & +7.45 M** |  | 2014-03-20 | 2014-05-30 |  |  |  |  |
|  | 1 | **PART C1** |  | 2014-03-23 | 2014-05-22 |  |  |  |  |
| OHD-CSS-LB-C1-1000 |  | Reinforcement for Columns & Wall | 5.56d | 2014-03-23 | 2014-03-29 | OHD-CSS-B1-C1-1070 FS+3.33d | 516d | 0d | Steel Reinforcement [38.95 Ton]; Steel Fixer [974 h]; Helper-Steel Fixer [973.87 h] |
| OHD-CSS-LB-C1-1010 |  | Shuttering for Verticals- Formwork | 8.89d | 2014-03-25 | 2014-04-03 | OHD-CSS-LB-C1-1000 SS+2.22d, OHD-CSS-LB-C1-1000 FF+3.33d | 516d | 0d | Formwork [802.61 M2]; Carpenter [2359.68 h]; Helper-Carpenter [1011.29 h] |
| OHD-CSS-LB-C1-1020 |  | Casting of Columns & wall | 4.44d | 2014-04-01 | 2014-04-05 | OHD-CSS-LB-C1-1010 SS+3.33d, OHD-CSS-LB-C1-1010 FF+2.22d | 516d | 0d | Concrete [306 M3]; Mason-Concrete [459 h]; Helper-Concrete [197 h] |
| OHD-CSS-LB-C1-1030 |  | De-Shuttering of Columns & wall | 5.56d | 2014-04-04 | 2014-04-10 | OHD-CSS-LB-C1-1020 SS+3.33d, OHD-CSS-LB-C1-1020 FF+2.22d | 516d | 0d | Formwork [532.33 M2]; Carpenter [1565 h]; Helper-Carpenter [671 h] |
| OHD-CSS-LB-C1-1040 |  | Shuttering For Slab & Beams | 7.78d | 2014-04-08 | 2014-04-15 | OHD-CSS-LB-C1-1030 SS+3.33d, OHD-CSS-LB-C1-1030 FF+2.22d | 516d | 0d | Formwork [750.15 M2]; Carpenter [2205.45 h]; Helper-Carpenter [945.19 h] |
| OHD-CSS-LB-C1-1050 |  | Reinforcement for Slab & Beams | 5.56d | 2014-04-12 | 2014-04-18 | OHD-CSS-LB-C1-1040 SS+3.33d, OHD-CSS-LB-C1-1040 FF+2.22d | 516d | 0d | Steel Reinforcement [36.41 Ton]; Steel Fixer [910 h]; Helper-Steel Fixer [910.22 h] |
| OHD-CSS-LB-C1-1060 |  | MEP embedded works in Slab | 5.56d | 2014-04-16 | 2014-04-21 | OHD-CSS-LB-C1-1050 SS+3.33d, OHD-CSS-LB-C1-1050 FF+2.22d | 516d | 0d | MEP Mnhrs [250 h] |
| OHD-CSS-LB-C1-1070 |  | Casting of Slab & Beams | 1.11d | 2014-04-22 | 2014-04-23 | OHD-CSS-LB-C1-1060 SS+3.33d, OHD-CSS-LB-C1-1060 FF+2.22d | 516d | 0d | Concrete [286 M3]; Mason-Concrete [429 h]; Helper-Concrete [184 h] |
| OHD-CSS-LB-C1-1080 |  | De-Shuttering For Slab | 5.56d | 2014-05-17 | 2014-05-22 | OHD-CSS-LB-C1-1070 FS+23.33d | 546d | 7.78d | Formwork [497.54 M2]; Carpenter [1463 h]; Helper-Carpenter [627 h] |
|  | 2 | **PART C2** |  | 2014-03-29 | 2014-05-30 |  |  |  |  |
| OHD-CSS-LB-C2-1000 |  | Reinforcement for Columns & Wall | 5.56d | 2014-03-29 | 2014-04-03 | OHD-CSS-B1-C2-1070 FS+3.33d | 469.33d | 0d | Steel Reinforcement [41.88 Ton]; Steel Fixer [1047 h]; Helper-Steel Fixer [1047.07 h] |
| OHD-CSS-LB-C2-1010 |  | Shuttering for Verticals- Formwork | 10d | 2014-03-31 | 2014-04-10 | OHD-CSS-LB-C2-1000 SS+2.22d, OHD-CSS-LB-C2-1000 FF+3.33d | 469.33d | 0d | Formwork [862.94 M2]; Carpenter [2537.04 h]; Helper-Carpenter [1087.3 h] |
| OHD-CSS-LB-C2-1020 |  | Casting of Columns & wall | 4.44d | 2014-04-08 | 2014-04-12 | OHD-CSS-LB-C2-1010 SS+3.33d, OHD-CSS-LB-C2-1010 FF+2.22d | 469.33d | 0d | Concrete [329 M3]; Mason-Concrete [494 h]; Helper-Concrete [212 h] |
| OHD-CSS-LB-C2-1030 |  | De-Shuttering of Columns & wall | 6.67d | 2014-04-11 | 2014-04-18 | OHD-CSS-LB-C2-1020 SS+3.33d, OHD-CSS-LB-C2-1020 FF+2.22d | 469.33d | 0d | Formwork [572.34 M2]; Carpenter [1683 h]; Helper-Carpenter [721 h] |
| OHD-CSS-LB-C2-1040 |  | Shuttering For Slab & Beams | 8.89d | 2014-04-14 | 2014-04-23 | OHD-CSS-LB-C2-1030 SS+3.33d, OHD-CSS-LB-C2-1030 FF+2.22d | 469.33d | 0d | Formwork [805.23 M2]; Carpenter [2367.39 h]; Helper-Carpenter [1014.6 h] |
| OHD-CSS-LB-C2-1050 |  | Reinforcement for Slab & Beams | 5.56d | 2014-04-20 | 2014-04-25 | OHD-CSS-LB-C2-1040 SS+3.33d, OHD-CSS-LB-C2-1040 FF+2.22d | 469.33d | 0d | Steel Reinforcement [39.08 Ton]; Steel Fixer [977 h]; Helper-Steel Fixer [977.05 h] |
| OHD-CSS-LB-C2-1060 |  | MEP embedded works in Slab | 5.56d | 2014-04-23 | 2014-04-29 | OHD-CSS-LB-C2-1050 SS+3.33d, OHD-CSS-LB-C2-1050 FF+2.22d | 469.33d | 0d | MEP Mnhrs [250 h] |
| OHD-CSS-LB-C2-1070 |  | Casting of Slab & Beams | 1.11d | 2014-04-30 | 2014-05-01 | OHD-CSS-LB-C2-1060 SS+3.33d, OHD-CSS-LB-C2-1060 FF+2.22d | 469.33d | 0d | Concrete [307 M3]; Mason-Concrete [461 h]; Helper-Concrete [197 h] |
| OHD-CSS-LB-C2-1080 |  | De-Shuttering For Slab | 5.56d | 2014-05-24 | 2014-05-30 | OHD-CSS-LB-C2-1070 FS+23.33d | 538.22d | 0d | Formwork [534.07 M2]; Carpenter [1570 h]; Helper-Carpenter [673 h] |
|  | 3 | **PART C3** |  | 2014-03-20 | 2014-05-19 |  |  |  |  |
| OHD-CSS-LB-C3-1000 |  | Reinforcement for Columns & Wall | 5.56d | 2014-03-20 | 2014-03-25 | OHD-CSS-B1-C3-1070 FS+3.33d | 519.33d | 0d | Steel Reinforcement [38.95 Ton]; Steel Fixer [974 h]; Helper-Steel Fixer [973.87 h] |
| OHD-CSS-LB-C3-1010 |  | Shuttering for Verticals- Formwork | 8.89d | 2014-03-22 | 2014-03-31 | OHD-CSS-LB-C3-1000 SS+2.22d, OHD-CSS-LB-C3-1000 FF+3.33d | 519.33d | 0d | Formwork [802.61 M2]; Carpenter [2359.68 h]; Helper-Carpenter [1011.29 h] |
| OHD-CSS-LB-C3-1020 |  | Casting of Columns & wall | 4.44d | 2014-03-29 | 2014-04-02 | OHD-CSS-LB-C3-1010 SS+3.33d, OHD-CSS-LB-C3-1010 FF+2.22d | 519.33d | 0d | Concrete [306 M3]; Mason-Concrete [459 h]; Helper-Concrete [197 h] |
| OHD-CSS-LB-C3-1030 |  | De-Shuttering of Columns & wall | 5.56d | 2014-04-01 | 2014-04-07 | OHD-CSS-LB-C3-1020 SS+3.33d, OHD-CSS-LB-C3-1020 FF+2.22d | 519.33d | 0d | Formwork [532.33 M2]; Carpenter [1565 h]; Helper-Carpenter [671 h] |
| OHD-CSS-LB-C3-1040 |  | Shuttering For Slab & Beams | 7.78d | 2014-04-04 | 2014-04-12 | OHD-CSS-LB-C3-1030 SS+3.33d, OHD-CSS-LB-C3-1030 FF+2.22d | 519.33d | 0d | Formwork [750.15 M2]; Carpenter [2205.45 h]; Helper-Carpenter [945.19 h] |
| OHD-CSS-LB-C3-1050 |  | Reinforcement for Slab & Beams | 5.56d | 2014-04-09 | 2014-04-14 | OHD-CSS-LB-C3-1040 SS+3.33d, OHD-CSS-LB-C3-1040 FF+2.22d | 519.33d | 0d | Steel Reinforcement [36.41 Ton]; Steel Fixer [910 h]; Helper-Steel Fixer [910.22 h] |
| OHD-CSS-LB-C3-1060 |  | MEP embedded works in Slab | 5.56d | 2014-04-12 | 2014-04-18 | OHD-CSS-LB-C3-1050 SS+3.33d, OHD-CSS-LB-C3-1050 FF+2.22d | 519.33d | 0d | MEP Mnhrs [250 h] |
| OHD-CSS-LB-C3-1070 |  | Casting of Slab & Beams | 1.11d | 2014-04-19 | 2014-04-20 | OHD-CSS-LB-C3-1060 SS+3.33d, OHD-CSS-LB-C3-1060 FF+2.22d | 519.33d | 0d | Concrete [286 M3]; Mason-Concrete [429 h]; Helper-Concrete [184 h] |
| OHD-CSS-LB-C3-1080 |  | De-Shuttering For Slab | 5.56d | 2014-05-13 | 2014-05-19 | OHD-CSS-LB-C3-1070 FS+23.33d | 549.33d | 11.11d | Formwork [497.54 M2]; Carpenter [1463 h]; Helper-Carpenter [627 h] |

| ID | WBS | Activity | Duration | Start | Finish | Predecessors | Total float | Free float | Resources |
| --- | --- | --- | --- | --- | --- | --- | --- | --- | --- |
|  | 4 | **PART C4** |  | 2014-03-22 | 2014-05-21 |  |  |  |  |
| OHD-CSS-LB-C4-1000 |  | Reinforcement for Columns & Wall | 5.56d | 2014-03-22 | 2014-03-28 | OHD-CSS-B1-C4-1070 FS+3.33d | 446d | 0d | Steel Reinforcement [38.19 Ton]; Steel Fixer [955 h]; Helper-Steel Fixer [954.78 h] |
| OHD-CSS-LB-C4-1010 |  | Shuttering for Verticals- Formwork | 8.89d | 2014-03-24 | 2014-04-02 | OHD-CSS-LB-C4-1000 SS+2.22d, OHD-CSS-LB-C4-1000 FF+3.33d | 446d | 0d | Formwork [786.87 M2]; Carpenter [2313.41 h]; Helper-Carpenter [991.46 h] |
| OHD-CSS-LB-C4-1020 |  | Casting of Columns & wall | 4.44d | 2014-03-31 | 2014-04-04 | OHD-CSS-LB-C4-1010 SS+3.33d, OHD-CSS-LB-C4-1010 FF+2.22d | 446d | 0d | Concrete [300 M3]; Mason-Concrete [450 h]; Helper-Concrete [193 h] |
| OHD-CSS-LB-C4-1030 |  | De-Shuttering of Columns & wall | 5.56d | 2014-04-03 | 2014-04-09 | OHD-CSS-LB-C4-1020 SS+3.33d, OHD-CSS-LB-C4-1020 FF+2.22d | 446d | 0d | Formwork [521.89 M2]; Carpenter [1534 h]; Helper-Carpenter [658 h] |
| OHD-CSS-LB-C4-1040 |  | Shuttering For Slab & Beams | 7.78d | 2014-04-07 | 2014-04-14 | OHD-CSS-LB-C4-1030 SS+3.33d, OHD-CSS-LB-C4-1030 FF+2.22d | 446d | 0d | Formwork [734.42 M2]; Carpenter [2159.18 h]; Helper-Carpenter [925.36 h] |
| OHD-CSS-LB-C4-1050 |  | Reinforcement for Slab & Beams | 5.56d | 2014-04-11 | 2014-04-17 | OHD-CSS-LB-C4-1040 SS+3.33d, OHD-CSS-LB-C4-1040 FF+2.22d | 446d | 0d | Steel Reinforcement [35.64 Ton]; Steel Fixer [891 h]; Helper-Steel Fixer [891.12 h] |
| OHD-CSS-LB-C4-1060 |  | MEP embedded works in Slab | 5.56d | 2014-04-14 | 2014-04-20 | OHD-CSS-LB-C4-1050 SS+3.33d, OHD-CSS-LB-C4-1050 FF+2.22d | 446d | 0d | MEP Mnhrs [250 h] |
| OHD-CSS-LB-C4-1070 |  | Casting of Slab & Beams | 1.11d | 2014-04-21 | 2014-04-22 | OHD-CSS-LB-C4-1060 SS+3.33d, OHD-CSS-LB-C4-1060 FF+2.22d | 446d | 0d | Concrete [280 M3]; Mason-Concrete [420 h]; Helper-Concrete [180 h] |
| OHD-CSS-LB-C4-1080 |  | De-Shuttering For Slab | 5.56d | 2014-05-16 | 2014-05-21 | OHD-CSS-LB-C4-1070 FS+23.33d | 547.11d | 8.89d | Formwork [487.1 M2]; Carpenter [1432 h]; Helper-Carpenter [614 h] |
|  | 1 | **PART D @ +8.23 M** |  | 2014-01-01 | 2014-02-25 |  |  |  |  |
| OHD-CSS-LB-D-1000 |  | Reinforcement for Columns & Wall | 4.44d | 2014-01-01 | 2014-01-05 | OHD-CSS-B1-D-1140 FS+3.33d | 566.22d | 0d | Steel Reinforcement; Steel Fixer; Helper-Steel Fixer |
| OHD-CSS-LB-D-1010 |  | Shuttering for Verticals- Formwork | 4.44d | 2014-01-04 | 2014-01-09 | OHD-CSS-LB-D-1000 SS+2.22d, OHD-CSS-LB-D-1000 FF+3.33d | 566.22d | 0d | Formwork; Carpenter; Helper-Carpenter |
| OHD-CSS-LB-D-1020 |  | Casting of Columns & wall | 4.44d | 2014-01-08 | 2014-01-12 | OHD-CSS-LB-D-1010 SS+3.33d, OHD-CSS-LB-D-1010 FF+2.22d | 566.22d | 0d | Concrete; Mason-Concrete; Helper-Concrete |
| OHD-CSS-LB-D-1030 |  | De-Shuttering of Columns & wall | 4.44d | 2014-01-11 | 2014-01-15 | OHD-CSS-LB-D-1020 SS+3.33d, OHD-CSS-LB-D-1020 FF+2.22d | 566.22d | 0d | Formwork; Carpenter; Helper-Carpenter |
| OHD-CSS-LB-D-1040 |  | Shuttering For Slab & Beams | 4.44d | 2014-01-14 | 2014-01-19 | OHD-CSS-LB-D-1030 SS+3.33d, OHD-CSS-LB-D-1030 FF+2.22d | 566.22d | 0d | Formwork; Carpenter; Helper-Carpenter |
| OHD-CSS-LB-D-1050 |  | Reinforcement for Slab & Beams | 4.44d | 2014-01-18 | 2014-01-22 | OHD-CSS-LB-D-1040 SS+3.33d, OHD-CSS-LB-D-1040 FF+2.22d | 566.22d | 0d | Steel Reinforcement; Steel Fixer; Helper-Steel Fixer |
| OHD-CSS-LB-D-1060 |  | MEP embedded works in Slab | 5.56d | 2014-01-21 | 2014-01-26 | OHD-CSS-LB-D-1050 SS+3.33d, OHD-CSS-LB-D-1050 FF+2.22d | 566.22d | 0d | MEP Mnhrs [250 h] |
| OHD-CSS-LB-D-1070 |  | Casting of Slab & Beams | 1.11d | 2014-01-28 | 2014-01-29 | OHD-CSS-LB-D-1060 SS+3.33d, OHD-CSS-LB-D-1060 FF+2.22d | 566.22d | 0d | Concrete; Mason-Concrete; Helper-Concrete |
| OHD-CSS-LB-D-1080 |  | De-Shuttering For Slab | 4.44d | 2014-02-21 | 2014-02-25 | OHD-CSS-LB-D-1070 FS+23.33d | 628.44d | 0d | Formwork; Carpenter; Helper-Carpenter |
|  | 8 | **UPPER BALACONY LEVEL** |  | 2014-02-01 | 2014-07-08 |  |  |  |  |
|  | 5 | **PART B @ +14.320 M** |  | 2014-04-03 | 2014-06-28 |  |  |  |  |
|  | 1 | **PART B1** |  | 2014-04-18 | 2014-06-28 |  |  |  |  |
| OHD-CSS-UB-B1-1000 |  | Reinforcement for Columns & Wall | 8.89d | 2014-04-18 | 2014-04-27 | OHD-CSS-B1-B1-1070 FS+3.33d | 369.33d | 0d | Steel Reinforcement [60.72 Ton]; Steel Fixer [1518 h]; Helper-Steel Fixer [1518.09 h] |
| OHD-CSS-UB-B1-1010 |  | Shuttering for Verticals- Formwork | 13.33d | 2014-04-20 | 2014-05-03 | OHD-CSS-UB-B1-1000 SS+2.22d, OHD-CSS-UB-B1-1000 FF+3.33d | 369.33d | 0d | Formwork [1251.13 M2]; Carpenter [3678.32 h]; Helper-Carpenter [1576.42 h] |
| OHD-CSS-UB-B1-1020 |  | Casting of Columns & wall | 4.44d | 2014-05-01 | 2014-05-05 | OHD-CSS-UB-B1-1010 SS+3.33d, OHD-CSS-UB-B1-1010 FF+2.22d | 369.33d | 0d | Concrete [477 M3]; Mason-Concrete [716 h]; Helper-Concrete [307 h] |
| OHD-CSS-UB-B1-1030 |  | De-Shuttering of Columns & wall | 8.89d | 2014-05-04 | 2014-05-13 | OHD-CSS-UB-B1-1020 SS+3.33d, OHD-CSS-UB-B1-1020 FF+2.22d | 369.33d | 0d | Formwork [829.81 M2]; Carpenter [2440 h]; Helper-Carpenter [1046 h] |
| OHD-CSS-UB-B1-1040 |  | Shuttering For Slab & Beams | 12.22d | 2014-05-08 | 2014-05-20 | OHD-CSS-UB-B1-1030 SS+3.33d, OHD-CSS-UB-B1-1030 FF+2.22d | 369.33d | 0d | Formwork [1169.82 M2]; Carpenter [3439.27 h]; Helper-Carpenter [1473.97 h] |
| OHD-CSS-UB-B1-1050 |  | Reinforcement for Slab & Beams | 7.78d | 2014-05-14 | 2014-05-22 | OHD-CSS-UB-B1-1040 SS+3.33d, OHD-CSS-UB-B1-1040 FF+2.22d | 369.33d | 0d | Steel Reinforcement [56.78 Ton]; Steel Fixer [1419 h]; Helper-Steel Fixer [1419.43 h] |
| OHD-CSS-UB-B1-1060 |  | MEP embedded works in Slab | 5.56d | 2014-05-19 | 2014-05-24 | OHD-CSS-UB-B1-1050 SS+3.33d, OHD-CSS-UB-B1-1050 FF+2.22d | 369.33d | 0d | MEP Mnhrs [250 h] |
| OHD-CSS-UB-B1-1070 |  | Casting of Slab & Beams | 1.11d | 2014-05-26 | 2014-05-27 | OHD-CSS-UB-B1-1060 SS+3.33d, OHD-CSS-UB-B1-1060 FF+2.22d | 369.33d | 0d | Concrete [446 M3]; Mason-Concrete [669 h]; Helper-Concrete [287 h] |
| OHD-CSS-UB-B1-1080 |  | De-Shuttering For Slab | 8.89d | 2014-06-19 | 2014-06-28 | OHD-CSS-UB-B1-1070 FS+23.33d | 509.33d | 0d | Formwork [775.88 M2]; Carpenter [2281 h]; Helper-Carpenter [978 h] |

| ID | WBS | Activity | Duration | Start | Finish | Predecessors | Total float | Free float | Resources |
| --- | --- | --- | --- | --- | --- | --- | --- | --- | --- |
|  | 2 | **PART B2** |  | 2014-04-03 | 2014-06-13 |  |  |  |  |
| OHD-CSS-UB-B2-1000 |  | Reinforcement for Columns & Wall | 8.89d | 2014-04-03 | 2014-04-12 | OHD-CSS-B1-B2-1070 FS+3.33d | 392.67d | 0d | Steel Reinforcement [60.6 Ton]; Steel Fixer [1515 h]; Helper-Steel Fixer [1514.91 h] |
| OHD-CSS-UB-B2-1010 |  | Shuttering for Verticals- Formwork | 13.33d | 2014-04-06 | 2014-04-19 | OHD-CSS-UB-B2-1000 SS+2.22d, OHD-CSS-UB-B2-1000 FF+3.33d | 392.67d | 0d | Formwork [1248.51 M2]; Carpenter [3670.61 h]; Helper-Carpenter [1573.12 h] |
| OHD-CSS-UB-B2-1020 |  | Casting of Columns & wall | 4.44d | 2014-04-17 | 2014-04-21 | OHD-CSS-UB-B2-1010 SS+3.33d, OHD-CSS-UB-B2-1010 FF+2.22d | 392.67d | 0d | Concrete [476 M3]; Mason-Concrete [714 h]; Helper-Concrete [306 h] |
| OHD-CSS-UB-B2-1030 |  | De-Shuttering of Columns & wall | 8.89d | 2014-04-20 | 2014-04-29 | OHD-CSS-UB-B2-1020 SS+3.33d, OHD-CSS-UB-B2-1020 FF+2.22d | 392.67d | 0d | Formwork [828.07 M2]; Carpenter [2435 h]; Helper-Carpenter [1043 h] |
| OHD-CSS-UB-B2-1040 |  | Shuttering For Slab & Beams | 12.22d | 2014-04-23 | 2014-05-05 | OHD-CSS-UB-B2-1030 SS+3.33d, OHD-CSS-UB-B2-1030 FF+2.22d | 392.67d | 0d | Formwork [1164.57 M2]; Carpenter [3423.85 h]; Helper-Carpenter [1467.36 h] |
| OHD-CSS-UB-B2-1050 |  | Reinforcement for Slab & Beams | 7.78d | 2014-04-30 | 2014-05-08 | OHD-CSS-UB-B2-1040 SS+3.33d, OHD-CSS-UB-B2-1040 FF+2.22d | 392.67d | 0d | Steel Reinforcement [56.52 Ton]; Steel Fixer [1413 h]; Helper-Steel Fixer [1413.07 h] |
| OHD-CSS-UB-B2-1060 |  | MEP embedded works in Slab | 5.56d | 2014-05-04 | 2014-05-10 | OHD-CSS-UB-B2-1050 SS+3.33d, OHD-CSS-UB-B2-1050 FF+2.22d | 392.67d | 0d | MEP Mnhrs [250 h] |
| OHD-CSS-UB-B2-1070 |  | Casting of Slab & Beams | 1.11d | 2014-05-11 | 2014-05-12 | OHD-CSS-UB-B2-1060 SS+3.33d, OHD-CSS-UB-B2-1060 FF+2.22d | 392.67d | 0d | Concrete [444 M3]; Mason-Concrete [666 h]; Helper-Concrete [285 h] |
| OHD-CSS-UB-B2-1080 |  | De-Shuttering For Slab | 8.89d | 2014-06-05 | 2014-06-13 | OHD-CSS-UB-B2-1070 FS+23.33d | 523.78d | 14.44d | Formwork [772.4 M2]; Carpenter [2271 h]; Helper-Carpenter [973 h] |
|  | 6 | **PART C @ +14.320 M** |  | 2014-04-26 | 2014-07-08 |  |  |  |  |
|  | 4 | **PART C4** |  | 2014-04-26 | 2014-07-08 |  |  |  |  |
| OHD-CSS-UB-C4-1000 |  | Reinforcement for Columns & Wall | 8.89d | 2014-04-26 | 2014-05-04 | OHD-CSS-LB-C4-1070 FS+3.33d | 446d | 0d | Steel Reinforcement [62.63 Ton]; Steel Fixer [1566 h]; Helper-Steel Fixer [1565.83 h] |
| OHD-CSS-UB-C4-1010 |  | Shuttering for Verticals- Formwork | 14.44d | 2014-04-28 | 2014-05-12 | OHD-CSS-UB-C4-1000 SS+2.22d, OHD-CSS-UB-C4-1000 FF+3.33d | 446d | 0d | Formwork [1290.47 M2]; Carpenter [3793.99 h]; Helper-Carpenter [1626 h] |
| OHD-CSS-UB-C4-1020 |  | Casting of Columns & wall | 4.44d | 2014-05-10 | 2014-05-14 | OHD-CSS-UB-C4-1010 SS+3.33d, OHD-CSS-UB-C4-1010 FF+2.22d | 446d | 0d | Concrete [492 M3]; Mason-Concrete [738 h]; Helper-Concrete [316 h] |
| OHD-CSS-UB-C4-1030 |  | De-Shuttering of Columns & wall | 8.89d | 2014-05-13 | 2014-05-22 | OHD-CSS-UB-C4-1020 SS+3.33d, OHD-CSS-UB-C4-1020 FF+2.22d | 446d | 0d | Formwork [855.9 M2]; Carpenter [2516 h]; Helper-Carpenter [1078 h] |
| OHD-CSS-UB-C4-1040 |  | Shuttering For Slab & Beams | 13.33d | 2014-05-17 | 2014-05-30 | OHD-CSS-UB-C4-1030 SS+3.33d, OHD-CSS-UB-C4-1030 FF+2.22d | 446d | 0d | Formwork [1206.54 M2]; Carpenter [3547.23 h]; Helper-Carpenter [1520.24 h] |
| OHD-CSS-UB-C4-1050 |  | Reinforcement for Slab & Beams | 7.78d | 2014-05-24 | 2014-06-01 | OHD-CSS-UB-C4-1040 SS+3.33d, OHD-CSS-UB-C4-1040 FF+2.22d | 446d | 0d | Steel Reinforcement [58.56 Ton]; Steel Fixer [1464 h]; Helper-Steel Fixer [1463.99 h] |
| OHD-CSS-UB-C4-1060 |  | MEP embedded works in Slab | 5.56d | 2014-05-29 | 2014-06-03 | OHD-CSS-UB-C4-1050 SS+3.33d, OHD-CSS-UB-C4-1050 FF+2.22d | 446d | 0d | MEP Mnhrs [250 h] |
| OHD-CSS-UB-C4-1070 |  | Casting of Slab & Beams | 1.11d | 2014-06-05 | 2014-06-06 | OHD-CSS-UB-C4-1060 SS+3.33d, OHD-CSS-UB-C4-1060 FF+2.22d | 446d | 0d | Concrete [460 M3]; Mason-Concrete [690 h]; Helper-Concrete [296 h] |
| OHD-CSS-UB-C4-1080 |  | De-Shuttering For Slab | 8.89d | 2014-06-29 | 2014-07-08 | OHD-CSS-UB-C4-1070 FS+23.33d | 499.33d | 0d | Formwork [800.23 M2]; Carpenter [2353 h]; Helper-Carpenter [1008 h] |
|  | 1 | **PART D @ +14.320 M** |  | 2014-02-01 | 2014-03-28 |  |  |  |  |
| OHD-CSS-UB-D-1000 |  | Reinforcement for Columns & Wall | 4.44d | 2014-02-01 | 2014-02-05 | OHD-CSS-LB-D-1070 FS+3.33d | 566.22d | 0d | Steel Reinforcement; Steel Fixer; Helper-Steel Fixer |
| OHD-CSS-UB-D-1010 |  | Shuttering for Verticals- Formwork | 4.44d | 2014-02-04 | 2014-02-09 | OHD-CSS-UB-D-1000 SS+2.22d, OHD-CSS-UB-D-1000 FF+3.33d | 566.22d | 0d | Formwork; Carpenter; Helper-Carpenter |
| OHD-CSS-UB-D-1020 |  | Casting of Columns & wall | 4.44d | 2014-02-08 | 2014-02-12 | OHD-CSS-UB-D-1010 SS+3.33d, OHD-CSS-UB-D-1010 FF+2.22d | 566.22d | 0d | Concrete; Mason-Concrete; Helper-Concrete |
| OHD-CSS-UB-D-1030 |  | De-Shuttering of Columns & wall | 4.44d | 2014-02-11 | 2014-02-15 | OHD-CSS-UB-D-1020 SS+3.33d, OHD-CSS-UB-D-1020 FF+2.22d | 566.22d | 0d | Formwork; Carpenter; Helper-Carpenter |
| OHD-CSS-UB-D-1040 |  | Shuttering For Slab & Beams | 4.44d | 2014-02-14 | 2014-02-19 | OHD-CSS-UB-D-1030 SS+3.33d, OHD-CSS-UB-D-1030 FF+2.22d | 566.22d | 0d | Formwork; Carpenter; Helper-Carpenter |
| OHD-CSS-UB-D-1050 |  | Reinforcement for Slab & Beams | 4.44d | 2014-02-18 | 2014-02-22 | OHD-CSS-UB-D-1040 SS+3.33d, OHD-CSS-UB-D-1040 FF+2.22d | 566.22d | 0d | Steel Reinforcement; Steel Fixer; Helper-Steel Fixer |
| OHD-CSS-UB-D-1060 |  | MEP embedded works in Slab | 5.56d | 2014-02-21 | 2014-02-26 | OHD-CSS-UB-D-1050 SS+3.33d, OHD-CSS-UB-D-1050 FF+2.22d | 566.22d | 0d | MEP Mnhrs [250 h] |
| OHD-CSS-UB-D-1070 |  | Casting of Slab & Beams | 1.11d | 2014-02-28 | 2014-03-01 | OHD-CSS-UB-D-1060 SS+3.33d, OHD-CSS-UB-D-1060 FF+2.22d | 566.22d | 0d | Concrete; Mason-Concrete; Helper-Concrete |
| OHD-CSS-UB-D-1080 |  | De-Shuttering For Slab | 4.44d | 2014-03-24 | 2014-03-28 | OHD-CSS-UB-D-1070 FS+23.33d | 597.33d | 0d | Formwork; Carpenter; Helper-Carpenter |

| ID | WBS | Activity | Duration | Start | Finish | Predecessors | Total float | Free float | Resources |
| --- | --- | --- | --- | --- | --- | --- | --- | --- | --- |
|  | 9 | **FLY TOWER LEVEL** |  | 2014-03-04 | 2014-07-24 |  |  |  |  |
|  | 5 | **PART B @ +17.450 M & +21.700 M** |  | 2014-05-16 | 2014-07-24 |  |  |  |  |
|  | 1 | **PART B1** |  | 2014-05-30 | 2014-07-24 |  |  |  |  |
| OHD-CSS-FT-B1-1000 |  | Reinforcement for Columns & Wall | 4.44d | 2014-05-30 | 2014-06-03 | OHD-CSS-UB-B1-1070 FS+3.33d | 369.33d | 0d | Steel Reinforcement [12.48 Ton]; Steel Fixer [312 h]; Helper-Steel Fixer [311.89 h] |
| OHD-CSS-FT-B1-1010 |  | Shuttering for Verticals- Formwork | 4.44d | 2014-06-02 | 2014-06-07 | OHD-CSS-FT-B1-1000 SS+2.22d, OHD-CSS-FT-B1-1000 FF+3.33d | 369.33d | 0d | Formwork [257.05 M2]; Carpenter [755.71 h]; Helper-Carpenter [323.88 h] |
| OHD-CSS-FT-B1-1020 |  | Casting of Columns & wall | 4.44d | 2014-06-06 | 2014-06-10 | OHD-CSS-FT-B1-1010 SS+3.33d, OHD-CSS-FT-B1-1010 FF+2.22d | 369.33d | 0d | Concrete [98 M3]; Mason-Concrete [147 h]; Helper-Concrete [63 h] |
| OHD-CSS-FT-B1-1030 |  | De-Shuttering of Columns & wall | 4.44d | 2014-06-09 | 2014-06-13 | OHD-CSS-FT-B1-1020 SS+3.33d, OHD-CSS-FT-B1-1020 FF+2.22d | 369.33d | 0d | Formwork [170.48 M2]; Carpenter [501 h]; Helper-Carpenter [215 h] |
| OHD-CSS-FT-B1-1040 |  | Shuttering For Slab & Beams | 4.44d | 2014-06-12 | 2014-06-17 | OHD-CSS-FT-B1-1030 SS+3.33d, OHD-CSS-FT-B1-1030 FF+2.22d | 369.33d | 0d | Formwork [238.69 M2]; Carpenter [701.73 h]; Helper-Carpenter [300.74 h] |
| OHD-CSS-FT-B1-1050 |  | Reinforcement for Slab & Beams | 4.44d | 2014-06-16 | 2014-06-20 | OHD-CSS-FT-B1-1040 SS+3.33d, OHD-CSS-FT-B1-1040 FF+2.22d | 369.33d | 0d | Steel Reinforcement [11.58 Ton]; Steel Fixer [290 h]; Helper-Steel Fixer [289.62 h] |
| OHD-CSS-FT-B1-1060 |  | MEP embedded works in Slab | 5.56d | 2014-06-19 | 2014-06-24 | OHD-CSS-FT-B1-1050 SS+3.33d, OHD-CSS-FT-B1-1050 FF+2.22d | 369.33d | 0d | MEP Mnhrs [250 h] |
| OHD-CSS-FT-B1-1070 |  | Casting of Slab & Beams | 1.11d | 2014-06-26 | 2014-06-27 | OHD-CSS-FT-B1-1060 SS+3.33d, OHD-CSS-FT-B1-1060 FF+2.22d | 369.33d | 0d | Concrete [91 M3]; Mason-Concrete [137 h]; Helper-Concrete [59 h] |
| OHD-CSS-FT-B1-1080 |  | De-Shuttering For Slab | 4.44d | 2014-07-20 | 2014-07-24 | OHD-CSS-FT-B1-1070 FS+23.33d | 482.67d | 0d | Formwork [158.31 M2]; Carpenter [465 h]; Helper-Carpenter [199 h] |
|  | 2 | **PART B2** |  | 2014-05-16 | 2014-07-10 |  |  |  |  |
| OHD-CSS-FT-B2-1000 |  | Reinforcement for Columns & Wall | 4.44d | 2014-05-16 | 2014-05-20 | OHD-CSS-UB-B2-1070 FS+3.33d | 392.67d | 0d | Steel Reinforcement [12.48 Ton]; Steel Fixer [312 h]; Helper-Steel Fixer [311.89 h] |
| OHD-CSS-FT-B2-1010 |  | Shuttering for Verticals- Formwork | 4.44d | 2014-05-19 | 2014-05-23 | OHD-CSS-FT-B2-1000 SS+2.22d, OHD-CSS-FT-B2-1000 FF+3.33d | 392.67d | 0d | Formwork [257.05 M2]; Carpenter [755.71 h]; Helper-Carpenter [323.88 h] |
| OHD-CSS-FT-B2-1020 |  | Casting of Columns & wall | 4.44d | 2014-05-22 | 2014-05-27 | OHD-CSS-FT-B2-1010 SS+3.33d, OHD-CSS-FT-B2-1010 FF+2.22d | 392.67d | 0d | Concrete [98 M3]; Mason-Concrete [147 h]; Helper-Concrete [63 h] |
| OHD-CSS-FT-B2-1030 |  | De-Shuttering of Columns & wall | 4.44d | 2014-05-26 | 2014-05-30 | OHD-CSS-FT-B2-1020 SS+3.33d, OHD-CSS-FT-B2-1020 FF+2.22d | 392.67d | 0d | Formwork [170.48 M2]; Carpenter [501 h]; Helper-Carpenter [215 h] |
| OHD-CSS-FT-B2-1040 |  | Shuttering For Slab & Beams | 4.44d | 2014-05-29 | 2014-06-02 | OHD-CSS-FT-B2-1030 SS+3.33d, OHD-CSS-FT-B2-1030 FF+2.22d | 392.67d | 0d | Formwork [238.69 M2]; Carpenter [701.73 h]; Helper-Carpenter [300.74 h] |
| OHD-CSS-FT-B2-1050 |  | Reinforcement for Slab & Beams | 4.44d | 2014-06-01 | 2014-06-06 | OHD-CSS-FT-B2-1040 SS+3.33d, OHD-CSS-FT-B2-1040 FF+2.22d | 392.67d | 0d | Steel Reinforcement [11.58 Ton]; Steel Fixer [290 h]; Helper-Steel Fixer [289.62 h] |
| OHD-CSS-FT-B2-1060 |  | MEP embedded works in Slab | 5.56d | 2014-06-05 | 2014-06-10 | OHD-CSS-FT-B2-1050 SS+3.33d, OHD-CSS-FT-B2-1050 FF+2.22d | 392.67d | 0d | MEP Mnhrs [250 h] |
| OHD-CSS-FT-B2-1070 |  | Casting of Slab & Beams | 1.11d | 2014-06-11 | 2014-06-12 | OHD-CSS-FT-B2-1060 SS+3.33d, OHD-CSS-FT-B2-1060 FF+2.22d, OHD-CSS-UB-B2-1070 FS+3.33d | 392.67d | 0d | Concrete [91 M3]; Mason-Concrete [137 h]; Helper-Concrete [59 h] |
| OHD-CSS-FT-B2-1080 |  | De-Shuttering For Slab | 4.44d | 2014-07-06 | 2014-07-10 | OHD-CSS-FT-B2-1070 FS+23.33d | 497.11d | 14.44d | Formwork [158.31 M2]; Carpenter [465 h]; Helper-Carpenter [199 h] |
|  | 6 | **PART C @ +17.450 M & +18.200 & +21.700 M** |  | 2014-04-23 | 2014-06-21 |  |  |  |  |
|  | 1 | **PART C1** |  | 2014-04-27 | 2014-06-21 |  |  |  |  |
| OHD-CSS-FT-C1-1000 |  | Reinforcement for Columns & Wall | 4.44d | 2014-04-27 | 2014-05-01 | OHD-CSS-LB-C1-1070 FS+3.33d | 516d | 0d | Steel Reinforcement [5.22 Ton]; Steel Fixer [130 h]; Helper-Steel Fixer [130.49 h] |
| OHD-CSS-FT-C1-1010 |  | Shuttering for Verticals- Formwork | 4.44d | 2014-04-30 | 2014-05-04 | OHD-CSS-FT-C1-1000 SS+2.22d, OHD-CSS-FT-C1-1000 FF+3.33d | 516d | 0d | Formwork [107.54 M2]; Carpenter [316.17 h]; Helper-Carpenter [135.5 h] |
| OHD-CSS-FT-C1-1020 |  | Casting of Columns & wall | 4.44d | 2014-05-03 | 2014-05-08 | OHD-CSS-FT-C1-1010 SS+3.33d, OHD-CSS-FT-C1-1010 FF+2.22d | 516d | 0d | Concrete [41 M3]; Mason-Concrete [62 h]; Helper-Concrete [26 h] |
| OHD-CSS-FT-C1-1030 |  | De-Shuttering of Columns & wall | 4.44d | 2014-05-07 | 2014-05-11 | OHD-CSS-FT-C1-1020 SS+3.33d, OHD-CSS-FT-C1-1020 FF+2.22d | 516d | 0d | Formwork [71.33 M2]; Carpenter [210 h]; Helper-Carpenter [90 h] |
| OHD-CSS-FT-C1-1040 |  | Shuttering For Slab & Beams | 4.44d | 2014-05-10 | 2014-05-14 | OHD-CSS-FT-C1-1030 SS+3.33d, OHD-CSS-FT-C1-1030 FF+2.22d | 516d | 0d | Formwork [99.67 M2]; Carpenter [293.03 h]; Helper-Carpenter [125.59 h] |
| OHD-CSS-FT-C1-1050 |  | Reinforcement for Slab & Beams | 4.44d | 2014-05-13 | 2014-05-18 | OHD-CSS-FT-C1-1040 SS+3.33d, OHD-CSS-FT-C1-1040 FF+2.22d | 516d | 0d | Steel Reinforcement [4.84 Ton]; Steel Fixer [121 h]; Helper-Steel Fixer [120.94 h] |
| OHD-CSS-FT-C1-1060 |  | MEP embedded works in Slab | 5.56d | 2014-05-17 | 2014-05-22 | OHD-CSS-FT-C1-1050 SS+3.33d, OHD-CSS-FT-C1-1050 FF+2.22d | 516d | 0d | MEP Mnhrs [250 h] |
| OHD-CSS-FT-C1-1070 |  | Casting of Slab & Beams | 1.11d | 2014-05-23 | 2014-05-24 | OHD-CSS-FT-C1-1060 SS+3.33d, OHD-CSS-FT-C1-1060 FF+2.22d | 516d | 0d | Concrete [38 M3]; Mason-Concrete [57 h]; Helper-Concrete [24 h] |
| OHD-CSS-FT-C1-1080 |  | De-Shuttering For Slab | 4.44d | 2014-06-17 | 2014-06-21 | OHD-CSS-FT-C1-1070 FS+23.33d | 516d | 0d | Formwork [66.11 M2]; Carpenter [194 h]; Helper-Carpenter [83 h] |

| ID | WBS | Activity | Duration | Start | Finish | Predecessors | Total float | Free float | Resources |
| --- | --- | --- | --- | --- | --- | --- | --- | --- | --- |
|  | 3 | **PART C3** |  | 2014-04-23 | 2014-06-18 |  |  |  |  |
| OHD-CSS-FT-C3-1000 |  | Reinforcement for Columns & Wall | 4.44d | 2014-04-23 | 2014-04-28 | OHD-CSS-LB-C3-1070 FS+3.33d | 519.33d | 0d | Steel Reinforcement [5.22 Ton]; Steel Fixer [130 h]; Helper-Steel Fixer [130.49 h] |
| OHD-CSS-FT-C3-1010 |  | Shuttering for Verticals- Formwork | 4.44d | 2014-04-27 | 2014-05-01 | OHD-CSS-FT-C3-1000 SS+2.22d, OHD-CSS-FT-C3-1000 FF+3.33d | 519.33d | 0d | Formwork [107.54 M2]; Carpenter [316.17 h]; Helper-Carpenter [135.5 h] |
| OHD-CSS-FT-C3-1020 |  | Casting of Columns & wall | 4.44d | 2014-04-30 | 2014-05-04 | OHD-CSS-FT-C3-1010 SS+3.33d, OHD-CSS-FT-C3-1010 FF+2.22d | 519.33d | 0d | Concrete [41 M3]; Mason-Concrete [62 h]; Helper-Concrete [26 h] |
| OHD-CSS-FT-C3-1030 |  | De-Shuttering of Columns & wall | 4.44d | 2014-05-03 | 2014-05-08 | OHD-CSS-FT-C3-1020 SS+3.33d, OHD-CSS-FT-C3-1020 FF+2.22d | 519.33d | 0d | Formwork [71.33 M2]; Carpenter [210 h]; Helper-Carpenter [90 h] |
| OHD-CSS-FT-C3-1040 |  | Shuttering For Slab & Beams | 4.44d | 2014-05-07 | 2014-05-11 | OHD-CSS-FT-C3-1030 SS+3.33d, OHD-CSS-FT-C3-1030 FF+2.22d | 519.33d | 0d | Formwork [99.67 M2]; Carpenter [293.03 h]; Helper-Carpenter [125.59 h] |
| OHD-CSS-FT-C3-1050 |  | Reinforcement for Slab & Beams | 4.44d | 2014-05-10 | 2014-05-14 | OHD-CSS-FT-C3-1040 SS+3.33d, OHD-CSS-FT-C3-1040 FF+2.22d | 519.33d | 0d | Steel Reinforcement [4.84 Ton]; Steel Fixer [121 h]; Helper-Steel Fixer [120.94 h] |
| OHD-CSS-FT-C3-1060 |  | MEP embedded works in Slab | 5.56d | 2014-05-13 | 2014-05-19 | OHD-CSS-FT-C3-1050 SS+3.33d, OHD-CSS-FT-C3-1050 FF+2.22d | 519.33d | 0d | MEP Mnhrs [250 h] |
| OHD-CSS-FT-C3-1070 |  | Casting of Slab & Beams | 1.11d | 2014-05-20 | 2014-05-21 | OHD-CSS-FT-C3-1060 SS+3.33d, OHD-CSS-FT-C3-1060 FF+2.22d | 519.33d | 0d | Concrete [38 M3]; Mason-Concrete [57 h]; Helper-Concrete [24 h] |
| OHD-CSS-FT-C3-1080 |  | De-Shuttering For Slab | 4.44d | 2014-06-13 | 2014-06-18 | OHD-CSS-FT-C3-1070 FS+23.33d | 519.33d | 3.33d | Formwork [66.11 M2]; Carpenter [194 h]; Helper-Carpenter [83 h] |
|  | 1 | **PART D @ +18.200 M** |  | 2014-03-04 | 2014-04-29 |  |  |  |  |
| OHD-CSS-FT-D-1000 |  | Reinforcement for Columns & Wall | 4.44d | 2014-03-04 | 2014-03-08 | OHD-CSS-UB-D-1070 FS+3.33d | 566.22d | 0d | Steel Reinforcement; Steel Fixer; Helper-Steel Fixer |
| OHD-CSS-FT-D-1010 |  | Shuttering for Verticals- Formwork | 4.44d | 2014-03-07 | 2014-03-12 | OHD-CSS-FT-D-1000 SS+2.22d, OHD-CSS-FT-D-1000 FF+3.33d | 566.22d | 0d | Formwork; Carpenter; Helper-Carpenter |
| OHD-CSS-FT-D-1020 |  | Casting of Columns & wall | 4.44d | 2014-03-11 | 2014-03-15 | OHD-CSS-FT-D-1010 SS+3.33d, OHD-CSS-FT-D-1010 FF+2.22d | 566.22d | 0d | Concrete; Mason-Concrete; Helper-Concrete |
| OHD-CSS-FT-D-1030 |  | De-Shuttering of Columns & wall | 4.44d | 2014-03-14 | 2014-03-18 | OHD-CSS-FT-D-1020 SS+3.33d, OHD-CSS-FT-D-1020 FF+2.22d | 566.22d | 0d | Formwork; Carpenter; Helper-Carpenter |
| OHD-CSS-FT-D-1040 |  | Shuttering For Slab & Beams | 4.44d | 2014-03-17 | 2014-03-22 | OHD-CSS-FT-D-1030 SS+3.33d, OHD-CSS-FT-D-1030 FF+2.22d | 566.22d | 0d | Formwork; Carpenter; Helper-Carpenter |
| OHD-CSS-FT-D-1050 |  | Reinforcement for Slab & Beams | 4.44d | 2014-03-21 | 2014-03-25 | OHD-CSS-FT-D-1040 SS+3.33d, OHD-CSS-FT-D-1040 FF+2.22d | 566.22d | 0d | Steel Reinforcement; Steel Fixer; Helper-Steel Fixer |
| OHD-CSS-FT-D-1060 |  | MEP embedded works in Slab | 5.56d | 2014-03-24 | 2014-03-30 | OHD-CSS-FT-D-1050 SS+3.33d, OHD-CSS-FT-D-1050 FF+2.22d | 566.22d | 0d | MEP Mnhrs [250 h] |
| OHD-CSS-FT-D-1070 |  | Casting of Slab & Beams | 1.11d | 2014-03-31 | 2014-04-01 | OHD-CSS-FT-D-1060 SS+3.33d, OHD-CSS-FT-D-1060 FF+2.22d | 566.22d | 0d | Concrete; Mason-Concrete; Helper-Concrete |
| OHD-CSS-FT-D-1080 |  | De-Shuttering For Slab | 4.44d | 2014-04-24 | 2014-04-29 | OHD-CSS-FT-D-1070 FS+23.33d | 566.22d | 0d | Formwork; Carpenter; Helper-Carpenter |
|  | 11 | **LOWER ROOF LEVEL** |  | 2014-05-04 | 2014-11-10 |  |  |  |  |
|  | 5 | **PART B @ +26.500 M** |  | 2014-06-16 | 2014-11-10 |  |  |  |  |
|  | 1 | **PART B1** |  | 2014-06-30 | 2014-11-10 |  |  |  |  |
| OHD-CSS-LR-B1-1000 |  | Reinforcement for Columns & Wall | 25.56d | 2014-06-30 | 2014-07-26 | OHD-CSS-FT-B1-1070 FS+3.33d | 369.33d | 0d | Steel Reinforcement [184.97 Ton]; Steel Fixer [4624 h]; Helper-Steel Fixer [4624.3 h] |
| OHD-CSS-LR-B1-1010 |  | Shuttering for Verticals- Formwork | 41.11d | 2014-07-02 | 2014-08-12 | OHD-CSS-LR-B1-1000 SS+2.22d, OHD-CSS-LR-B1-1000 FF+3.33d | 369.33d | 0d | Formwork [3811.09 M2]; Carpenter [11204.6 h]; Helper-Carpenter [4801.98 h] |
| OHD-CSS-LR-B1-1020 |  | Casting of Columns & wall | 4.44d | 2014-08-10 | 2014-08-15 | OHD-CSS-LR-B1-1010 SS+3.33d, OHD-CSS-LR-B1-1010 FF+2.22d | 369.33d | 0d | Concrete [1453 M3]; Mason-Concrete [2180 h]; Helper-Concrete [934 h] |
| OHD-CSS-LR-B1-1030 |  | De-Shuttering of Columns & wall | 27.78d | 2014-08-14 | 2014-09-10 | OHD-CSS-LR-B1-1020 SS+3.33d, OHD-CSS-LR-B1-1020 FF+2.22d | 369.33d | 0d | Formwork [2527.69 M2]; Carpenter [7431 h]; Helper-Carpenter [3185 h] |
| OHD-CSS-LR-B1-1040 |  | Shuttering For Slab & Beams | 38.89d | 2014-08-17 | 2014-09-25 | OHD-CSS-LR-B1-1030 SS+3.33d, OHD-CSS-LR-B1-1030 FF+2.22d | 369.33d | 0d | Formwork [3556.67 M2]; Carpenter [10456.6 h]; Helper-Carpenter [4481.41 h] |
| OHD-CSS-LR-B1-1050 |  | Reinforcement for Slab & Beams | 24.44d | 2014-09-03 | 2014-09-27 | OHD-CSS-LR-B1-1040 SS+3.33d, OHD-CSS-LR-B1-1040 FF+2.22d | 369.33d | 0d | Steel Reinforcement [172.62 Ton]; Steel Fixer [4316 h]; Helper-Steel Fixer [4315.59 h] |
| OHD-CSS-LR-B1-1060 |  | MEP embedded works in Slab | 5.56d | 2014-09-24 | 2014-09-29 | OHD-CSS-LR-B1-1050 SS+3.33d, OHD-CSS-LR-B1-1050 FF+2.22d | 369.33d | 0d | MEP Mnhrs [250 h] |
| OHD-CSS-LR-B1-1070 |  | Casting of Slab & Beams | 1.11d | 2014-09-30 | 2014-10-01 | OHD-CSS-LR-B1-1060 SS+3.33d, OHD-CSS-LR-B1-1060 FF+2.22d | 369.33d | 0d | Concrete [1356 M3]; Mason-Concrete [2034 h]; Helper-Concrete [872 h] |
| OHD-CSS-LR-B1-1080 |  | De-Shuttering For Slab | 16.67d | 2014-10-25 | 2014-11-10 | OHD-CSS-LR-B1-1070 FS+23.33d | 369.33d | 0d | Formwork [2358.95 M2]; Carpenter [6935 h]; Helper-Carpenter [2972 h] |

| ID | WBS | Activity | Duration | Start | Finish | Predecessors | Total float | Free float | Resources |
| --- | --- | --- | --- | --- | --- | --- | --- | --- | --- |
|  | 2 | **PART B2** |  | 2014-06-16 | 2014-10-18 |  |  |  |  |
| OHD-CSS-LR-B2-1000 |  | Reinforcement for Columns & Wall | 21.11d | 2014-06-16 | 2014-07-07 | OHD-CSS-FT-B2-1070 FS+3.33d | 392.67d | 0d | Steel Reinforcement [154.04 Ton]; Steel Fixer [3851 h]; Helper-Steel Fixer [3850.93 h] |
| OHD-CSS-LR-B2-1010 |  | Shuttering for Verticals- Formwork | 34.44d | 2014-06-18 | 2014-07-22 | OHD-CSS-LR-B2-1000 SS+2.22d, OHD-CSS-LR-B2-1000 FF+3.33d | 392.67d | 0d | Formwork [3173.73 M2]; Carpenter [9330.75 h]; Helper-Carpenter [3998.89 h] |
| OHD-CSS-LR-B2-1020 |  | Casting of Columns & wall | 4.44d | 2014-07-20 | 2014-07-24 | OHD-CSS-LR-B2-1010 SS+3.33d, OHD-CSS-LR-B2-1010 FF+2.22d | 392.67d | 0d | Concrete [1210 M3]; Mason-Concrete [1815 h]; Helper-Concrete [778 h] |
| OHD-CSS-LR-B2-1030 |  | De-Shuttering of Columns & wall | 23.33d | 2014-07-23 | 2014-08-16 | OHD-CSS-LR-B2-1020 SS+3.33d, OHD-CSS-LR-B2-1020 FF+2.22d | 392.67d | 0d | Formwork [2104.96 M2]; Carpenter [6189 h]; Helper-Carpenter [2652 h] |
| OHD-CSS-LR-B2-1040 |  | Shuttering For Slab & Beams | 32.22d | 2014-07-27 | 2014-08-28 | OHD-CSS-LR-B2-1030 SS+3.33d, OHD-CSS-LR-B2-1030 FF+2.22d | 392.67d | 0d | Formwork [2961.27 M2]; Carpenter [8706.13 h]; Helper-Carpenter [3731.2 h] |
| OHD-CSS-LR-B2-1050 |  | Reinforcement for Slab & Beams | 20d | 2014-08-10 | 2014-08-30 | OHD-CSS-LR-B2-1040 SS+3.33d, OHD-CSS-LR-B2-1040 FF+2.22d | 392.67d | 0d | Steel Reinforcement [143.73 Ton]; Steel Fixer [3593 h]; Helper-Steel Fixer [3593.14 h] |
| OHD-CSS-LR-B2-1060 |  | MEP embedded works in Slab | 5.56d | 2014-08-27 | 2014-09-01 | OHD-CSS-LR-B2-1050 SS+3.33d, OHD-CSS-LR-B2-1050 FF+2.22d | 392.67d | 0d | MEP Mnhrs [250 h] |
| OHD-CSS-LR-B2-1070 |  | Casting of Slab & Beams | 1.11d | 2014-09-03 | 2014-09-04 | OHD-CSS-LR-B2-1060 SS+3.33d, OHD-CSS-LR-B2-1060 FF+2.22d | 392.67d | 0d | Concrete [1129 M3]; Mason-Concrete [1694 h]; Helper-Concrete [726 h] |
| OHD-CSS-LR-B2-1080 |  | De-Shuttering For Slab | 21.11d | 2014-09-27 | 2014-10-18 | OHD-CSS-LR-B2-1070 FS+23.33d | 392.67d | 23.33d | Formwork [1964.05 M2]; Carpenter [5774 h]; Helper-Carpenter [2475 h] |
|  | 6 | **PART C @ +26.500 M** |  | 2014-05-04 | 2014-08-30 |  |  |  |  |
|  | 2 | **PART C2** |  | 2014-05-04 | 2014-08-07 |  |  |  |  |
| OHD-CSS-LR-C2-1000 |  | Reinforcement for Columns & Wall | 14.44d | 2014-05-04 | 2014-05-19 | OHD-CSS-LB-C2-1070 FS+3.33d | 469.33d | 0d | Steel Reinforcement [100.44 Ton]; Steel Fixer [2511 h]; Helper-Steel Fixer [2511.06 h] |
| OHD-CSS-LR-C2-1010 |  | Shuttering for Verticals- Formwork | 22.22d | 2014-05-07 | 2014-05-29 | OHD-CSS-LR-C2-1000 SS+2.22d, OHD-CSS-LR-C2-1000 FF+3.33d | 469.33d | 0d | Formwork [2069.48 M2]; Carpenter [6084.27 h]; Helper-Carpenter [2607.54 h] |
| OHD-CSS-LR-C2-1020 |  | Casting of Columns & wall | 4.44d | 2014-05-27 | 2014-05-31 | OHD-CSS-LR-C2-1010 SS+3.33d, OHD-CSS-LR-C2-1010 FF+2.22d | 469.33d | 0d | Concrete [789 M3]; Mason-Concrete [1184 h]; Helper-Concrete [507 h] |
| OHD-CSS-LR-C2-1030 |  | De-Shuttering of Columns & wall | 14.44d | 2014-05-30 | 2014-06-13 | OHD-CSS-LR-C2-1020 SS+3.33d, OHD-CSS-LR-C2-1020 FF+2.22d | 469.33d | 0d | Formwork [1372.57 M2]; Carpenter [4035 h]; Helper-Carpenter [1729 h] |
| OHD-CSS-LR-C2-1040 |  | Shuttering For Slab & Beams | 21.11d | 2014-06-02 | 2014-06-23 | OHD-CSS-LR-C2-1030 SS+3.33d, OHD-CSS-LR-C2-1030 FF+2.22d | 469.33d | 0d | Formwork [1930.46 M2]; Carpenter [5675.57 h]; Helper-Carpenter [2432.39 h] |
| OHD-CSS-LR-C2-1050 |  | Reinforcement for Slab & Beams | 13.33d | 2014-06-12 | 2014-06-26 | OHD-CSS-LR-C2-1040 SS+3.33d, OHD-CSS-LR-C2-1040 FF+2.22d | 469.33d | 0d | Steel Reinforcement [93.7 Ton]; Steel Fixer [2342 h]; Helper-Steel Fixer [2342.38 h] |
| OHD-CSS-LR-C2-1060 |  | MEP embedded works in Slab | 5.56d | 2014-06-22 | 2014-06-28 | OHD-CSS-LR-C2-1050 SS+3.33d, OHD-CSS-LR-C2-1050 FF+2.22d | 469.33d | 0d | MEP Mnhrs [250 h] |
| OHD-CSS-LR-C2-1070 |  | Casting of Slab & Beams | 1.11d | 2014-06-29 | 2014-06-30 | OHD-CSS-LR-C2-1060 SS+3.33d, OHD-CSS-LR-C2-1060 FF+2.22d | 469.33d | 0d | Concrete [736 M3]; Mason-Concrete [1104 h]; Helper-Concrete [473 h] |
| OHD-CSS-LR-C2-1080 |  | De-Shuttering For Slab | 14.44d | 2014-07-23 | 2014-08-07 | OHD-CSS-LR-C2-1070 FS+23.33d | 469.33d | 23.33d | Formwork [1280.37 M2]; Carpenter [3764 h]; Helper-Carpenter [1613 h] |
|  | 4 | **PART C4** |  | 2014-06-09 | 2014-08-30 |  |  |  |  |
| OHD-CSS-LR-C4-1000 |  | Reinforcement for Columns & Wall | 11.11d | 2014-06-09 | 2014-06-20 | OHD-CSS-UB-C4-1070 FS+3.33d | 446d | 0d | Steel Reinforcement [78.42 Ton]; Steel Fixer [1960 h]; Helper-Steel Fixer [1960.47 h] |
| OHD-CSS-LR-C4-1010 |  | Shuttering for Verticals- Formwork | 17.78d | 2014-06-11 | 2014-06-29 | OHD-CSS-LR-C4-1000 SS+2.22d, OHD-CSS-LR-C4-1000 FF+3.33d | 446d | 0d | Formwork [1615.72 M2]; Carpenter [4750.2 h]; Helper-Carpenter [2035.8 h] |
| OHD-CSS-LR-C4-1020 |  | Casting of Columns & wall | 4.44d | 2014-06-27 | 2014-07-01 | OHD-CSS-LR-C4-1010 SS+3.33d, OHD-CSS-LR-C4-1010 FF+2.22d | 446d | 0d | Concrete [616 M3]; Mason-Concrete [924 h]; Helper-Concrete [396 h] |
| OHD-CSS-LR-C4-1030 |  | De-Shuttering of Columns & wall | 12.22d | 2014-06-30 | 2014-07-12 | OHD-CSS-LR-C4-1020 SS+3.33d, OHD-CSS-LR-C4-1020 FF+2.22d | 446d | 0d | Formwork [1071.62 M2]; Carpenter [3151 h]; Helper-Carpenter [1350 h] |
| OHD-CSS-LR-C4-1040 |  | Shuttering For Slab & Beams | 16.67d | 2014-07-03 | 2014-07-20 | OHD-CSS-LR-C4-1030 SS+3.33d, OHD-CSS-LR-C4-1030 FF+2.22d | 446d | 0d | Formwork [1508.18 M2]; Carpenter [4434.04 h]; Helper-Carpenter [1900.3 h] |
| OHD-CSS-LR-C4-1050 |  | Reinforcement for Slab & Beams | 10d | 2014-07-12 | 2014-07-22 | OHD-CSS-LR-C4-1040 SS+3.33d, OHD-CSS-LR-C4-1040 FF+2.22d | 446d | 0d | Steel Reinforcement [73.2 Ton]; Steel Fixer [1830 h]; Helper-Steel Fixer [1829.99 h] |
| OHD-CSS-LR-C4-1060 |  | MEP embedded works in Slab | 5.56d | 2014-07-19 | 2014-07-24 | OHD-CSS-LR-C4-1050 SS+3.33d, OHD-CSS-LR-C4-1050 FF+2.22d | 446d | 0d | MEP Mnhrs [250 h] |
| OHD-CSS-LR-C4-1070 |  | Casting of Slab & Beams | 1.11d | 2014-07-26 | 2014-07-27 | OHD-CSS-LR-C4-1060 SS+3.33d, OHD-CSS-LR-C4-1060 FF+2.22d | 446d | 0d | Concrete [575 M3]; Mason-Concrete [863 h]; Helper-Concrete [370 h] |
| OHD-CSS-LR-C4-1080 |  | De-Shuttering For Slab | 11.11d | 2014-08-19 | 2014-08-30 | OHD-CSS-LR-C4-1070 FS+23.33d | 446d | 0d | Formwork [1000.29 M2]; Carpenter [2941 h]; Helper-Carpenter [1260 h] |

| ID | WBS | Activity | Duration | Start | Finish | Predecessors | Total float | Free float | Resources |
| --- | --- | --- | --- | --- | --- | --- | --- | --- | --- |
|  | 1 | **FINISHING** |  | 2013-11-27 | 2014-12-28 |  |  |  |  |
|  | 2 | **BASEMENT LEVEL 3** |  | 2013-11-27 | 2014-05-14 |  |  |  |  |
|  | 2 | **PART B** |  | 2013-11-27 | 2014-05-14 |  |  |  |  |
|  | 1 | **MASONRY WORK** |  | 2013-11-27 | 2014-04-11 |  |  |  |  |
| OHD-CFN-B3-B-1020 |  | Partitions | 4.44d | 2013-11-27 | 2013-12-01 |  | 761.56d | 735.56d | Partitions; TECH-Partitions; Helper-Partitions |
| OHD-CFN-B3-B-1000 |  | Block works | 4.44d | 2014-04-01 | 2014-04-05 | OHD-CSS-B2-B1-1080, OHD-CSS-B2-B2-1080 | 597.11d | 0d | Block; TECH-Block; Helper-Block |
| OHD-CFN-B3-B-1010 |  | Plastering works | 4.44d | 2014-04-07 | 2014-04-11 | OHD-CFN-B3-B-1000 SS+5.56d, OHD-CFN-B3-B-1000 FF+5.56d | 597.11d | 0d | Plaster; TECH-Plaster; Helper-Plaster |
|  | 2 | **CEILING** |  | 2014-04-12 | 2014-04-22 |  |  |  |  |
| OHD-CFN-B3-B-1030 |  | Painting & Coating | 4.44d | 2014-04-12 | 2014-04-17 | OHD-CFN-B3-B-1010 SS+5.56d, OHD-CFN-B3-B-1010 FF+5.56d | 597.11d | 0d | Paint; Painter; Helper-Paint |
| OHD-CFN-B3-B-1040 |  | False Ceiling | 4.44d | 2014-04-18 | 2014-04-22 | OHD-CFN-B3-B-1030 SS+5.56d, OHD-CFN-B3-B-1030 FF+5.56d | 597.11d | 0d | False Ceiling; TECH-False Ceiling; Helper-False Ceiling |
|  | 3 | **WALL** |  | 2014-04-23 | 2014-05-03 |  |  |  |  |
| OHD-CFN-B3-B-1050 |  | Painting & Coating | 4.44d | 2014-04-23 | 2014-04-28 | OHD-CFN-B3-B-1040 SS+5.56d, OHD-CFN-B3-B-1040 FF+5.56d | 597.11d | 0d | Paint; Painter; Helper-Paint |
| OHD-CFN-B3-B-1060 |  | Ceramic Tiles | 4.44d | 2014-04-29 | 2014-05-03 | OHD-CFN-B3-B-1050 SS+5.56d, OHD-CFN-B3-B-1050 FF+5.56d | 597.11d | 0d | Ceramic Tiles; TECH-Ceramic Tiles; Helper-Ceramic Tiles |
|  | 4 | **FLOOR** |  | 2014-05-04 | 2014-05-14 |  |  |  |  |
| OHD-CFN-B3-B-1090 |  | Floor Screed | 4.44d | 2014-05-04 | 2014-05-09 | OHD-CFN-B3-B-1060 FF+5.56d, OHD-CFN-B3-B-1060 SS+5.56d | 597.11d | 0d | Screed; Mason-Concrete; Helper-Screed |
| OHD-CFN-B3-B-1070 |  | Granite Tiles | 4.44d | 2014-05-10 | 2014-05-14 | OHD-CFN-B3-B-1090 SS+5.56d, OHD-CFN-B3-B-1090 FF+5.56d | 597.11d | 571.11d | Granite Tiles; TECH-Granite Tiles; Helper-Granite Tiles |
| OHD-CFN-B3-B-1080 |  | Vinyle Tile | 4.44d | 2014-05-10 | 2014-05-14 | OHD-CFN-B3-B-1090 SS+5.56d, OHD-CFN-B3-B-1090 FF+5.56d | 597.11d | 571.11d | Vinyle Tile; TECH-Vinyle Tile; Helper-Vinyle Tile |
|  | 3 | **PART C** |  | 2013-11-27 | 2014-05-03 |  |  |  |  |
|  | 1 | **MASONRY WORK** |  | 2013-11-27 | 2014-03-31 |  |  |  |  |
| OHD-CFN-B3-C-1020 |  | Partitions | 4.44d | 2013-11-27 | 2013-12-01 |  | 761.56d | 735.56d | Partitions; TECH-Partitions; Helper-Partitions |
| OHD-CFN-B3-C-1000 |  | Block works | 4.44d | 2014-03-21 | 2014-03-25 | OHD-CSS-B2-C4-1080, OHD-CSS-B2-C3-1080, OHD-CSS-B2-C2-1080, OHD-CSS-B2-C1-1080 | 608.22d | 0d | Block; TECH-Block; Helper-Block |
| OHD-CFN-B3-C-1010 |  | Plastering works | 4.44d | 2014-03-27 | 2014-03-31 | OHD-CFN-B3-C-1000 SS+5.56d, OHD-CFN-B3-C-1000 FF+5.56d | 608.22d | 0d | Plaster; TECH-Plaster; Helper-Plaster |
|  | 2 | **CEILING** |  | 2014-04-01 | 2014-04-11 |  |  |  |  |
| OHD-CFN-B3-C-1030 |  | Painting & Coating | 4.44d | 2014-04-01 | 2014-04-05 | OHD-CFN-B3-C-1010 SS+5.56d, OHD-CFN-B3-C-1010 FF+5.56d | 608.22d | 0d | Paint; Painter; Helper-Paint |
| OHD-CFN-B3-C-1040 |  | False Ceiling | 4.44d | 2014-04-07 | 2014-04-11 | OHD-CFN-B3-C-1030 SS+5.56d, OHD-CFN-B3-C-1030 FF+5.56d | 608.22d | 0d | False Ceiling; TECH-False Ceiling; Helper-False Ceiling |

| ID | WBS | Activity | Duration | Start | Finish | Predecessors | Total float | Free float | Resources |
| --- | --- | --- | --- | --- | --- | --- | --- | --- | --- |
|  | 3 | **WALL** |  | 2014-04-12 | 2014-04-22 |  |  |  |  |
| OHD-CFN-B3-C-1050 |  | Painting & Coating | 4.44d | 2014-04-12 | 2014-04-17 | OHD-CFN-B3-C-1040 SS+5.56d, OHD-CFN-B3-C-1040 FF+5.56d | 608.22d | 0d | Paint; Painter; Helper-Paint |
| OHD-CFN-B3-C-1060 |  | Ceramic Tiles | 4.44d | 2014-04-18 | 2014-04-22 | OHD-CFN-B3-C-1050 SS+5.56d, OHD-CFN-B3-C-1050 FF+5.56d | 608.22d | 0d | Ceramic Tiles; TECH-Ceramic Tiles; Helper-Ceramic Tiles |
|  | 4 | **FLOOR** |  | 2014-04-23 | 2014-05-03 |  |  |  |  |
| OHD-CFN-B3-C-1090 |  | Floor Screed | 4.44d | 2014-04-23 | 2014-04-28 | OHD-CFN-B3-C-1060 FF+5.56d, OHD-CFN-B3-C-1060 SS+5.56d | 608.22d | 0d | Screed; Mason-Concrete; Helper-Screed |
| OHD-CFN-B3-C-1070 |  | Granite Tiles | 4.44d | 2014-04-29 | 2014-05-03 | OHD-CFN-B3-C-1090 SS+5.56d, OHD-CFN-B3-C-1090 FF+5.56d | 608.22d | 582.22d | Granite Tiles; TECH-Granite Tiles; Helper-Granite Tiles |
| OHD-CFN-B3-C-1080 |  | Vinyle Tile | 4.44d | 2014-04-29 | 2014-05-03 | OHD-CFN-B3-C-1090 SS+5.56d, OHD-CFN-B3-C-1090 FF+5.56d | 608.22d | 582.22d | Vinyle Tile; TECH-Vinyle Tile; Helper-Vinyle Tile |
|  | 3 | **BASEMENT LEVEL 2** |  | 2013-11-27 | 2014-06-28 |  |  |  |  |
|  | 2 | **PART B** |  | 2013-11-27 | 2014-06-28 |  |  |  |  |
|  | 1 | **MASONRY WORK** |  | 2013-11-27 | 2014-05-25 |  |  |  |  |
| OHD-CFN-B2-B-1020 |  | Partitions | 4.44d | 2013-11-27 | 2013-12-01 |  | 761.56d | 735.56d | Partitions; TECH-Partitions; Helper-Partitions |
| OHD-CFN-B2-B-1000 |  | Block works | 4.44d | 2014-05-16 | 2014-05-20 | OHD-CSS-B1-B1-1080, OHD-CSS-B1-B2-1080 | 552.67d | 0d | Block; TECH-Block; Helper-Block |
| OHD-CFN-B2-B-1010 |  | Plastering works | 4.44d | 2014-05-21 | 2014-05-25 | OHD-CFN-B2-B-1000 SS+5.56d, OHD-CFN-B2-B-1000 FF+5.56d | 552.67d | 0d | Plaster; TECH-Plaster; Helper-Plaster |
|  | 2 | **CEILING** |  | 2014-05-27 | 2014-06-06 |  |  |  |  |
| OHD-CFN-B2-B-1030 |  | Painting & Coating | 4.44d | 2014-05-27 | 2014-05-31 | OHD-CFN-B2-B-1010 SS+5.56d, OHD-CFN-B2-B-1010 FF+5.56d | 552.67d | 0d | Paint; Painter; Helper-Paint |
| OHD-CFN-B2-B-1040 |  | False Ceiling | 4.44d | 2014-06-01 | 2014-06-06 | OHD-CFN-B2-B-1030 SS+5.56d, OHD-CFN-B2-B-1030 FF+5.56d | 552.67d | 0d | False Ceiling; TECH-False Ceiling; Helper-False Ceiling |
|  | 3 | **WALL** |  | 2014-06-07 | 2014-06-17 |  |  |  |  |
| OHD-CFN-B2-B-1050 |  | Painting & Coating | 4.44d | 2014-06-07 | 2014-06-11 | OHD-CFN-B2-B-1040 SS+5.56d, OHD-CFN-B2-B-1040 FF+5.56d | 552.67d | 0d | Paint; Painter; Helper-Paint |
| OHD-CFN-B2-B-1060 |  | Ceramic Tiles | 4.44d | 2014-06-12 | 2014-06-17 | OHD-CFN-B2-B-1050 SS+5.56d, OHD-CFN-B2-B-1050 FF+5.56d | 552.67d | 0d | Ceramic Tiles; TECH-Ceramic Tiles; Helper-Ceramic Tiles |
|  | 4 | **FLOOR** |  | 2014-06-18 | 2014-06-28 |  |  |  |  |
| OHD-CFN-B2-B-1090 |  | Floor Screed | 4.44d | 2014-06-18 | 2014-06-22 | OHD-CFN-B2-B-1060 FF+5.56d, OHD-CFN-B2-B-1060 SS+5.56d | 552.67d | 0d | Screed; Mason-Concrete; Helper-Screed |
| OHD-CFN-B2-B-1070 |  | Granite Tiles | 4.44d | 2014-06-23 | 2014-06-28 | OHD-CFN-B2-B-1090 SS+5.56d, OHD-CFN-B2-B-1090 FF+5.56d | 552.67d | 526.67d | Granite Tiles; TECH-Granite Tiles; Helper-Granite Tiles |
| OHD-CFN-B2-B-1080 |  | Vinyle Tile | 4.44d | 2014-06-23 | 2014-06-28 | OHD-CFN-B2-B-1090 SS+5.56d, OHD-CFN-B2-B-1090 FF+5.56d | 552.67d | 526.67d | Vinyle Tile; TECH-Vinyle Tile; Helper-Vinyle Tile |
|  | 3 | **PART C** |  | 2013-11-27 | 2014-06-04 |  |  |  |  |
|  | 1 | **MASONRY WORK** |  | 2013-11-27 | 2014-05-02 |  |  |  |  |
| OHD-CFN-B2-C-1020 |  | Partitions | 4.44d | 2013-11-27 | 2013-12-01 |  | 761.56d | 735.56d | Partitions; TECH-Partitions; Helper-Partitions |
| OHD-CFN-B2-C-1000 |  | Block works | 4.44d | 2014-04-22 | 2014-04-27 | OHD-CSS-B1-C1-1080, OHD-CSS-B1-C2-1080, OHD-CSS-B1-C3-1080, OHD-CSS-B1-C4-1080 | 576d | 0d | Block; TECH-Block; Helper-Block |
| OHD-CFN-B2-C-1010 |  | Plastering works | 4.44d | 2014-04-28 | 2014-05-02 | OHD-CFN-B2-C-1000 SS+5.56d, OHD-CFN-B2-C-1000 FF+5.56d | 576d | 0d | Plaster; TECH-Plaster; Helper-Plaster |

| ID | WBS | Activity | Duration | Start | Finish | Predecessors | Total float | Free float | Resources |
| --- | --- | --- | --- | --- | --- | --- | --- | --- | --- |
|  | 2 | **CEILING** |  | 2014-05-03 | 2014-05-13 |  |  |  |  |
| OHD-CFN-B2-C-1030 |  | Painting & Coating | 4.44d | 2014-05-03 | 2014-05-08 | OHD-CFN-B2-C-1010 SS+5.56d, OHD-CFN-B2-C-1010 FF+5.56d | 576d | 0d | Paint; Painter; Helper-Paint |
| OHD-CFN-B2-C-1040 |  | False Ceiling | 4.44d | 2014-05-09 | 2014-05-13 | OHD-CFN-B2-C-1030 SS+5.56d, OHD-CFN-B2-C-1030 FF+5.56d | 576d | 0d | False Ceiling; TECH-False Ceiling; Helper-False Ceiling |
|  | 3 | **WALL** |  | 2014-05-14 | 2014-05-24 |  |  |  |  |
| OHD-CFN-B2-C-1050 |  | Painting & Coating | 4.44d | 2014-05-14 | 2014-05-19 | OHD-CFN-B2-C-1040 SS+5.56d, OHD-CFN-B2-C-1040 FF+5.56d | 576d | 0d | Paint; Painter; Helper-Paint |
| OHD-CFN-B2-C-1060 |  | Ceramic Tiles | 4.44d | 2014-05-20 | 2014-05-24 | OHD-CFN-B2-C-1050 SS+5.56d, OHD-CFN-B2-C-1050 FF+5.56d | 576d | 0d | Ceramic Tiles; TECH-Ceramic Tiles; Helper-Ceramic Tiles |
|  | 4 | **FLOOR** |  | 2014-05-26 | 2014-06-04 |  |  |  |  |
| OHD-CFN-B2-C-1090 |  | Floor Screed | 4.44d | 2014-05-26 | 2014-05-30 | OHD-CFN-B2-C-1060 FF+5.56d, OHD-CFN-B2-C-1060 SS+5.56d | 576d | 0d | Screed; Mason-Concrete; Helper-Screed |
| OHD-CFN-B2-C-1070 |  | Granite Tiles | 4.44d | 2014-05-31 | 2014-06-04 | OHD-CFN-B2-C-1090 SS+5.56d, OHD-CFN-B2-C-1090 FF+5.56d | 576d | 550d | Granite Tiles; TECH-Granite Tiles; Helper-Granite Tiles |
| OHD-CFN-B2-C-1080 |  | Vinyle Tile | 4.44d | 2014-05-31 | 2014-06-04 | OHD-CFN-B2-C-1090 SS+5.56d, OHD-CFN-B2-C-1090 FF+5.56d | 576d | 550d | Vinyle Tile; TECH-Vinyle Tile; Helper-Vinyle Tile |
|  | 13 | **BASEMENT LEVEL 1** |  | 2013-11-27 | 2014-08-10 |  |  |  |  |
|  | 3 | **PART B** |  | 2013-11-27 | 2014-08-10 |  |  |  |  |
|  | 1 | **MASONRY WORK** |  | 2013-11-27 | 2014-07-08 |  |  |  |  |
| OHD-CFN-B1-B-1020 |  | Partitions | 4.44d | 2013-11-27 | 2013-12-01 |  | 761.56d | 735.56d | Partitions; TECH-Partitions; Helper-Partitions |
| OHD-CFN-B1-B-1000 |  | Block works | 4.44d | 2014-06-28 | 2014-07-02 | OHD-CSS-UB-B1-1080, OHD-CSS-UB-B2-1080 | 509.33d | 0d | Block; TECH-Block; Helper-Block |
| OHD-CFN-B1-B-1010 |  | Plastering works | 4.44d | 2014-07-03 | 2014-07-08 | OHD-CFN-B1-B-1000 SS+5.56d, OHD-CFN-B1-B-1000 FF+5.56d | 509.33d | 0d | Plaster; TECH-Plaster; Helper-Plaster |
|  | 2 | **CEILING** |  | 2014-07-09 | 2014-07-19 |  |  |  |  |
| OHD-CFN-B1-B-1030 |  | Painting & Coating | 4.44d | 2014-07-09 | 2014-07-13 | OHD-CFN-B1-B-1010 SS+5.56d, OHD-CFN-B1-B-1010 FF+5.56d | 509.33d | 0d | Paint; Painter; Helper-Paint |
| OHD-CFN-B1-B-1040 |  | False Ceiling | 4.44d | 2014-07-15 | 2014-07-19 | OHD-CFN-B1-B-1030 SS+5.56d, OHD-CFN-B1-B-1030 FF+5.56d | 509.33d | 0d | False Ceiling; TECH-False Ceiling; Helper-False Ceiling |
|  | 3 | **WALL** |  | 2014-07-20 | 2014-07-30 |  |  |  |  |
| OHD-CFN-B1-B-1050 |  | Painting & Coating | 4.44d | 2014-07-20 | 2014-07-24 | OHD-CFN-B1-B-1040 SS+5.56d, OHD-CFN-B1-B-1040 FF+5.56d | 509.33d | 0d | Paint; Painter; Helper-Paint |
| OHD-CFN-B1-B-1060 |  | Ceramic Tiles | 4.44d | 2014-07-26 | 2014-07-30 | OHD-CFN-B1-B-1050 SS+5.56d, OHD-CFN-B1-B-1050 FF+5.56d | 509.33d | 0d | Ceramic Tiles; TECH-Ceramic Tiles; Helper-Ceramic Tiles |
|  | 4 | **FLOOR** |  | 2014-07-31 | 2014-08-10 |  |  |  |  |
| OHD-CFN-B1-B-1090 |  | Floor Screed | 4.44d | 2014-07-31 | 2014-08-05 | OHD-CFN-B1-B-1060 FF+5.56d, OHD-CFN-B1-B-1060 SS+5.56d | 509.33d | 0d | Screed; Mason-Concrete; Helper-Screed |
| OHD-CFN-B1-B-1070 |  | Granite Tiles | 4.44d | 2014-08-06 | 2014-08-10 | OHD-CFN-B1-B-1090 SS+5.56d, OHD-CFN-B1-B-1090 FF+5.56d | 509.33d | 483.33d | Granite Tiles; TECH-Granite Tiles; Helper-Granite Tiles |
| OHD-CFN-B1-B-1080 |  | Vinyle Tile | 4.44d | 2014-08-06 | 2014-08-10 | OHD-CFN-B1-B-1090 SS+5.56d, OHD-CFN-B1-B-1090 FF+5.56d | 509.33d | 483.33d | Vinyle Tile; TECH-Vinyle Tile; Helper-Vinyle Tile |

| ID | WBS | Activity | Duration | Start | Finish | Predecessors | Total float | Free float | Resources |
| --- | --- | --- | --- | --- | --- | --- | --- | --- | --- |
|  | 5 | **PART C** |  | 2013-11-27 | 2014-07-12 |  |  |  |  |
|  | 1 | **MASONRY WORK** |  | 2013-11-27 | 2014-06-09 |  |  |  |  |
| OHD-CFN-B1-C-1020 |  | Partitions | 4.44d | 2013-11-27 | 2013-12-01 |  | 761.56d | 735.56d | Partitions; TECH-Partitions; Helper-Partitions |
| OHD-CFN-B1-C-1000 |  | Block works | 4.44d | 2014-05-30 | 2014-06-03 | OHD-CSS-LB-C1-1080, OHD-CSS-LB-C2-1080, OHD-CSS-LB-C3-1080, OHD-CSS-LB-C4-1080 | 538.22d | 0d | Block; TECH-Block; Helper-Block |
| OHD-CFN-B1-C-1010 |  | Plastering works | 4.44d | 2014-06-05 | 2014-06-09 | OHD-CFN-B1-C-1000 SS+5.56d, OHD-CFN-B1-C-1000 FF+5.56d | 538.22d | 0d | Plaster; TECH-Plaster; Helper-Plaster |
|  | 2 | **CEILING** |  | 2014-06-10 | 2014-06-20 |  |  |  |  |
| OHD-CFN-B1-C-1030 |  | Painting & Coating | 4.44d | 2014-06-10 | 2014-06-14 | OHD-CFN-B1-C-1010 SS+5.56d, OHD-CFN-B1-C-1010 FF+5.56d | 538.22d | 0d | Paint; Painter; Helper-Paint |
| OHD-CFN-B1-C-1040 |  | False Ceiling | 4.44d | 2014-06-16 | 2014-06-20 | OHD-CFN-B1-C-1030 SS+5.56d, OHD-CFN-B1-C-1030 FF+5.56d | 538.22d | 0d | False Ceiling; TECH-False Ceiling; Helper-False Ceiling |
|  | 3 | **WALL** |  | 2014-06-21 | 2014-07-01 |  |  |  |  |
| OHD-CFN-B1-C-1050 |  | Painting & Coating | 4.44d | 2014-06-21 | 2014-06-26 | OHD-CFN-B1-C-1040 SS+5.56d, OHD-CFN-B1-C-1040 FF+5.56d | 538.22d | 0d | Paint; Painter; Helper-Paint |
| OHD-CFN-B1-C-1060 |  | Ceramic Tiles | 4.44d | 2014-06-27 | 2014-07-01 | OHD-CFN-B1-C-1050 SS+5.56d, OHD-CFN-B1-C-1050 FF+5.56d | 538.22d | 0d | Ceramic Tiles; TECH-Ceramic Tiles; Helper-Ceramic Tiles |
|  | 4 | **FLOOR** |  | 2014-07-02 | 2014-07-12 |  |  |  |  |
| OHD-CFN-B1-C-1090 |  | Floor Screed | 4.44d | 2014-07-02 | 2014-07-07 | OHD-CFN-B1-C-1060 FF+5.56d, OHD-CFN-B1-C-1060 SS+5.56d | 538.22d | 0d | Screed; Mason-Concrete; Helper-Screed |
| OHD-CFN-B1-C-1070 |  | Granite Tiles | 4.44d | 2014-07-08 | 2014-07-12 | OHD-CFN-B1-C-1090 SS+5.56d, OHD-CFN-B1-C-1090 FF+5.56d | 538.22d | 512.22d | Granite Tiles; TECH-Granite Tiles; Helper-Granite Tiles |
| OHD-CFN-B1-C-1080 |  | Vinyle Tile | 4.44d | 2014-07-08 | 2014-07-12 | OHD-CFN-B1-C-1090 SS+5.56d, OHD-CFN-B1-C-1090 FF+5.56d | 538.22d | 512.22d | Vinyle Tile; TECH-Vinyle Tile; Helper-Vinyle Tile |
|  | 1 | **PART D** |  | 2013-11-27 | 2014-04-13 |  |  |  |  |
|  | 1 | **MASONRY WORK** |  | 2013-11-27 | 2014-03-11 |  |  |  |  |
| OHD-CFN-B1-D-1010 |  | Partitions | 4.44d | 2013-11-27 | 2013-12-01 |  | 761.56d | 735.56d | Partitions; TECH-Partitions; Helper-Partitions |
| OHD-CFN-B1-D-1000 |  | Block works | 4.44d | 2014-03-01 | 2014-03-05 | OHD-CSS-LB-D-1080 FS+3.33d | 628.44d | 0d | Block; TECH-Block; Helper-Block |
| OHD-CFN-B1-D-1020 |  | Plastering works | 4.44d | 2014-03-06 | 2014-03-11 | OHD-CFN-B1-D-1000 SS+5.56d, OHD-CFN-B1-D-1000 FF+5.56d | 628.44d | 0d | Plaster; TECH-Plaster; Helper-Plaster |
|  | 2 | **CEILING** |  | 2014-03-12 | 2014-03-22 |  |  |  |  |
| OHD-CFN-B1-D-1030 |  | Painting & Coating | 4.44d | 2014-03-12 | 2014-03-16 | OHD-CFN-B1-D-1020 SS+5.56d, OHD-CFN-B1-D-1020 FF+5.56d | 628.44d | 0d | Paint; Painter; Helper-Paint |
| OHD-CFN-B1-D-1040 |  | False Ceiling | 4.44d | 2014-03-17 | 2014-03-22 | OHD-CFN-B1-D-1030 SS+5.56d, OHD-CFN-B1-D-1030 FF+5.56d | 628.44d | 0d | False Ceiling; TECH-False Ceiling; Helper-False Ceiling |
|  | 3 | **WALL** |  | 2014-03-23 | 2014-04-02 |  |  |  |  |
| OHD-CFN-B1-D-1050 |  | Painting & Coating | 4.44d | 2014-03-23 | 2014-03-27 | OHD-CFN-B1-D-1040 SS+5.56d, OHD-CFN-B1-D-1040 FF+5.56d | 628.44d | 0d | Paint; Painter; Helper-Paint |
| OHD-CFN-B1-D-1060 |  | Ceramic Tiles | 4.44d | 2014-03-29 | 2014-04-02 | OHD-CFN-B1-D-1050 SS+5.56d, OHD-CFN-B1-D-1050 FF+5.56d | 628.44d | 0d | Ceramic Tiles; TECH-Ceramic Tiles; Helper-Ceramic Tiles |

| ID | WBS | Activity | Duration | Start | Finish | Predecessors | Total float | Free float | Resources |
| --- | --- | --- | --- | --- | --- | --- | --- | --- | --- |
|  | 4 | **FLOOR** |  | 2014-04-03 | 2014-04-13 |  |  |  |  |
| OHD-CFN-B1-D-1070 |  | Floor Screed | 4.44d | 2014-04-03 | 2014-04-07 | OHD-CFN-B1-D-1060 FF+5.56d, OHD-CFN-B1-D-1060 SS+5.56d | 628.44d | 0d | Screed; Mason-Concrete; Helper-Screed |
| OHD-CFN-B1-D-1080 |  | Granite Tiles | 4.44d | 2014-04-09 | 2014-04-13 | OHD-CFN-B1-D-1070 SS+5.56d, OHD-CFN-B1-D-1070 FF+5.56d | 628.44d | 602.44d | Granite Tiles; TECH-Granite Tiles; Helper-Granite Tiles |
| OHD-CFN-B1-D-1090 |  | Vinyle Tile | 4.44d | 2014-04-09 | 2014-04-13 | OHD-CFN-B1-D-1070 SS+5.56d, OHD-CFN-B1-D-1070 FF+5.56d | 628.44d | 602.44d | Vinyle Tile; TECH-Vinyle Tile; Helper-Vinyle Tile |
|  | 6 | **PROMENADE & PLAZA LOWER BALACONY LEVEL** |  | 2013-11-27 | 2014-08-20 |  |  |  |  |
|  | 6 | **PART C** |  | 2013-11-27 | 2014-08-20 |  |  |  |  |
|  | 1 | **MASONRY WORK** |  | 2013-11-27 | 2014-07-18 |  |  |  |  |
| OHD-CFN-LB-C-1020 |  | Partitions | 4.44d | 2013-11-27 | 2013-12-01 |  | 761.56d | 735.56d | Partitions; TECH-Partitions; Helper-Partitions |
| OHD-CFN-LB-C-1000 |  | Block works | 4.44d | 2014-07-08 | 2014-07-12 | OHD-CSS-UB-C4-1080 | 499.33d | 0d | Block; TECH-Block; Helper-Block |
| OHD-CFN-LB-C-1010 |  | Plastering works | 4.44d | 2014-07-13 | 2014-07-18 | OHD-CFN-LB-C-1000 SS+5.56d, OHD-CFN-LB-C-1000 FF+5.56d | 499.33d | 0d | Plaster; TECH-Plaster; Helper-Plaster |
|  | 2 | **CEILING** |  | 2014-07-19 | 2014-07-29 |  |  |  |  |
| OHD-CFN-LB-C-1030 |  | Painting & Coating | 4.44d | 2014-07-19 | 2014-07-23 | OHD-CFN-LB-C-1010 SS+5.56d, OHD-CFN-LB-C-1010 FF+5.56d | 499.33d | 0d | Paint; Painter; Helper-Paint |
| OHD-CFN-LB-C-1040 |  | False Ceiling | 4.44d | 2014-07-25 | 2014-07-29 | OHD-CFN-LB-C-1030 SS+5.56d, OHD-CFN-LB-C-1030 FF+5.56d | 499.33d | 0d | False Ceiling; TECH-False Ceiling; Helper-False Ceiling |
|  | 3 | **WALL** |  | 2014-07-30 | 2014-08-09 |  |  |  |  |
| OHD-CFN-LB-C-1050 |  | Painting & Coating | 4.44d | 2014-07-30 | 2014-08-03 | OHD-CFN-LB-C-1040 SS+5.56d, OHD-CFN-LB-C-1040 FF+5.56d | 499.33d | 0d | Paint; Painter; Helper-Paint |
| OHD-CFN-LB-C-1060 |  | Ceramic Tiles | 4.44d | 2014-08-05 | 2014-08-09 | OHD-CFN-LB-C-1050 SS+5.56d, OHD-CFN-LB-C-1050 FF+5.56d | 499.33d | 0d | Ceramic Tiles; TECH-Ceramic Tiles; Helper-Ceramic Tiles |
|  | 4 | **FLOOR** |  | 2014-08-10 | 2014-08-20 |  |  |  |  |
| OHD-CFN-LB-C-1090 |  | Floor Screed | 4.44d | 2014-08-10 | 2014-08-15 | OHD-CFN-LB-C-1060 FF+5.56d, OHD-CFN-LB-C-1060 SS+5.56d | 499.33d | 0d | Screed; Mason-Concrete; Helper-Screed |
| OHD-CFN-LB-C-1070 |  | Granite Tiles | 4.44d | 2014-08-16 | 2014-08-20 | OHD-CFN-LB-C-1090 SS+5.56d, OHD-CFN-LB-C-1090 FF+5.56d | 499.33d | 473.33d | Granite Tiles; TECH-Granite Tiles; Helper-Granite Tiles |
| OHD-CFN-LB-C-1080 |  | Vinyle Tile | 4.44d | 2014-08-16 | 2014-08-20 | OHD-CFN-LB-C-1090 SS+5.56d, OHD-CFN-LB-C-1090 FF+5.56d | 499.33d | 473.33d | Vinyle Tile; TECH-Vinyle Tile; Helper-Vinyle Tile |
|  | 1 | **PART D** |  | 2013-11-27 | 2014-05-14 |  |  |  |  |
|  | 1 | **MASONRY WORK** |  | 2013-11-27 | 2014-04-11 |  |  |  |  |
| OHD-CFN-LB-D-1010 |  | Partitions | 4.44d | 2013-11-27 | 2013-12-01 |  | 761.56d | 735.56d | Partitions; TECH-Partitions; Helper-Partitions |
| OHD-CFN-LB-D-1000 |  | Block works | 4.44d | 2014-04-01 | 2014-04-05 | OHD-CSS-UB-D-1080 FS+3.33d | 597.33d | 0d | Block; TECH-Block; Helper-Block |
| OHD-CFN-LB-D-1020 |  | Plastering works | 4.44d | 2014-04-06 | 2014-04-11 | OHD-CFN-LB-D-1000 SS+5.56d, OHD-CFN-LB-D-1000 FF+5.56d | 597.33d | 0d | Plaster; TECH-Plaster; Helper-Plaster |

| ID | WBS | Activity | Duration | Start | Finish | Predecessors | Total float | Free float | Resources |
| --- | --- | --- | --- | --- | --- | --- | --- | --- | --- |
|  | 2 | **CEILING** |  | 2014-04-12 | 2014-04-22 |  |  |  |  |
| OHD-CFN-LB-D-1030 |  | Painting & Coating | 4.44d | 2014-04-12 | 2014-04-16 | OHD-CFN-LB-D-1020 SS+5.56d, OHD-CFN-LB-D-1020 FF+5.56d | 597.33d | 0d | Paint; Painter; Helper-Paint |
| OHD-CFN-LB-D-1040 |  | False Ceiling | 4.44d | 2014-04-18 | 2014-04-22 | OHD-CFN-LB-D-1030 SS+5.56d, OHD-CFN-LB-D-1030 FF+5.56d | 597.33d | 0d | False Ceiling; TECH-False Ceiling; Helper-False Ceiling |
|  | 3 | **WALL** |  | 2014-04-23 | 2014-05-03 |  |  |  |  |
| OHD-CFN-LB-D-1050 |  | Painting & Coating | 4.44d | 2014-04-23 | 2014-04-27 | OHD-CFN-LB-D-1040 SS+5.56d, OHD-CFN-LB-D-1040 FF+5.56d | 597.33d | 0d | Paint; Painter; Helper-Paint |
| OHD-CFN-LB-D-1060 |  | Ceramic Tiles | 4.44d | 2014-04-29 | 2014-05-03 | OHD-CFN-LB-D-1050 SS+5.56d, OHD-CFN-LB-D-1050 FF+5.56d | 597.33d | 0d | Ceramic Tiles; TECH-Ceramic Tiles; Helper-Ceramic Tiles |
|  | 4 | **FLOOR** |  | 2014-05-04 | 2014-05-14 |  |  |  |  |
| OHD-CFN-LB-D-1070 |  | Floor Screed | 4.44d | 2014-05-04 | 2014-05-09 | OHD-CFN-LB-D-1060 FF+5.56d, OHD-CFN-LB-D-1060 SS+5.56d | 597.33d | 0d | Screed; Mason-Concrete; Helper-Screed |
| OHD-CFN-LB-D-1080 |  | Granite Tiles | 4.44d | 2014-05-10 | 2014-05-14 | OHD-CFN-LB-D-1070 SS+5.56d, OHD-CFN-LB-D-1070 FF+5.56d | 597.33d | 571.33d | Granite Tiles; TECH-Granite Tiles; Helper-Granite Tiles |
| OHD-CFN-LB-D-1090 |  | Vinyle Tile | 4.44d | 2014-05-10 | 2014-05-14 | OHD-CFN-LB-D-1070 SS+5.56d, OHD-CFN-LB-D-1070 FF+5.56d | 597.33d | 571.33d | Vinyle Tile; TECH-Vinyle Tile; Helper-Vinyle Tile |
|  | 8 | **UPPER BALACONY LEVEL** |  | 2013-11-27 | 2014-09-06 |  |  |  |  |
|  | 5 | **PART B** |  | 2013-11-27 | 2014-09-06 |  |  |  |  |
|  | 1 | **MASONRY WORK** |  | 2013-11-27 | 2014-08-03 |  |  |  |  |
| OHD-CFN-UB-B-1020 |  | Partitions | 4.44d | 2013-11-27 | 2013-12-01 |  | 761.56d | 735.56d | Partitions; TECH-Partitions; Helper-Partitions |
| OHD-CFN-UB-B-1000 |  | Block works | 4.44d | 2014-07-25 | 2014-07-29 | OHD-CSS-FT-B2-1080, OHD-CSS-FT-B1-1080 | 482.67d | 0d | Block; TECH-Block; Helper-Block |
| OHD-CFN-UB-B-1010 |  | Plastering works | 4.44d | 2014-07-30 | 2014-08-03 | OHD-CFN-UB-B-1000 SS+5.56d, OHD-CFN-UB-B-1000 FF+5.56d | 482.67d | 0d | Plaster; TECH-Plaster; Helper-Plaster |
|  | 2 | **CEILING** |  | 2014-08-05 | 2014-08-15 |  |  |  |  |
| OHD-CFN-UB-B-1030 |  | Painting & Coating | 4.44d | 2014-08-05 | 2014-08-09 | OHD-CFN-UB-B-1010 SS+5.56d, OHD-CFN-UB-B-1010 FF+5.56d | 482.67d | 0d | Paint; Painter; Helper-Paint |
| OHD-CFN-UB-B-1040 |  | False Ceiling | 4.44d | 2014-08-10 | 2014-08-15 | OHD-CFN-UB-B-1030 SS+5.56d, OHD-CFN-UB-B-1030 FF+5.56d | 482.67d | 0d | False Ceiling; TECH-False Ceiling; Helper-False Ceiling |
|  | 3 | **WALL** |  | 2014-08-16 | 2014-08-26 |  |  |  |  |
| OHD-CFN-UB-B-1050 |  | Painting & Coating | 4.44d | 2014-08-16 | 2014-08-20 | OHD-CFN-UB-B-1040 SS+5.56d, OHD-CFN-UB-B-1040 FF+5.56d | 482.67d | 0d | Paint; Painter; Helper-Paint |
| OHD-CFN-UB-B-1060 |  | Ceramic Tiles | 4.44d | 2014-08-21 | 2014-08-26 | OHD-CFN-UB-B-1050 SS+5.56d, OHD-CFN-UB-B-1050 FF+5.56d | 482.67d | 0d | Ceramic Tiles; TECH-Ceramic Tiles; Helper-Ceramic Tiles |
|  | 4 | **FLOOR** |  | 2014-08-27 | 2014-09-06 |  |  |  |  |
| OHD-CFN-UB-B-1090 |  | Floor Screed | 4.44d | 2014-08-27 | 2014-08-31 | OHD-CFN-UB-B-1060 FF+5.56d, OHD-CFN-UB-B-1060 SS+5.56d | 482.67d | 0d | Screed; Mason-Concrete; Helper-Screed |
| OHD-CFN-UB-B-1070 |  | Granite Tiles | 4.44d | 2014-09-01 | 2014-09-06 | OHD-CFN-UB-B-1090 SS+5.56d, OHD-CFN-UB-B-1090 FF+5.56d | 482.67d | 456.67d | Granite Tiles; TECH-Granite Tiles; Helper-Granite Tiles |
| OHD-CFN-UB-B-1080 |  | Vinyle Tile | 4.44d | 2014-09-01 | 2014-09-06 | OHD-CFN-UB-B-1090 SS+5.56d, OHD-CFN-UB-B-1090 FF+5.56d | 482.67d | 456.67d | Vinyle Tile; TECH-Vinyle Tile; Helper-Vinyle Tile |

| ID | WBS | Activity | Duration | Start | Finish | Predecessors | Total float | Free float | Resources |
| --- | --- | --- | --- | --- | --- | --- | --- | --- | --- |
|  | 6 | **PART C** |  | 2013-11-27 | 2014-08-03 |  |  |  |  |
|  | 1 | **MASONRY WORK** |  | 2013-11-27 | 2014-07-01 |  |  |  |  |
| OHD-CFN-UB-C-1020 |  | Partitions | 4.44d | 2013-11-27 | 2013-12-01 |  | 761.56d | 735.56d | Partitions; TECH-Partitions; Helper-Partitions |
| OHD-CFN-UB-C-1000 |  | Block works | 4.44d | 2014-06-21 | 2014-06-26 | OHD-CSS-FT-C1-1080, OHD-CSS-FT-C3-1080 | 516d | 0d | Block; TECH-Block; Helper-Block |
| OHD-CFN-UB-C-1010 |  | Plastering works | 4.44d | 2014-06-27 | 2014-07-01 | OHD-CFN-UB-C-1000 SS+5.56d, OHD-CFN-UB-C-1000 FF+5.56d | 516d | 0d | Plaster; TECH-Plaster; Helper-Plaster |
|  | 2 | **CEILING** |  | 2014-07-02 | 2014-07-12 |  |  |  |  |
| OHD-CFN-UB-C-1030 |  | Painting & Coating | 4.44d | 2014-07-02 | 2014-07-07 | OHD-CFN-UB-C-1010 SS+5.56d, OHD-CFN-UB-C-1010 FF+5.56d | 516d | 0d | Paint; Painter; Helper-Paint |
| OHD-CFN-UB-C-1040 |  | False Ceiling | 4.44d | 2014-07-08 | 2014-07-12 | OHD-CFN-UB-C-1030 SS+5.56d, OHD-CFN-UB-C-1030 FF+5.56d | 516d | 0d | False Ceiling; TECH-False Ceiling; Helper-False Ceiling |
|  | 3 | **WALL** |  | 2014-07-13 | 2014-07-23 |  |  |  |  |
| OHD-CFN-UB-C-1050 |  | Painting & Coating | 4.44d | 2014-07-13 | 2014-07-18 | OHD-CFN-UB-C-1040 SS+5.56d, OHD-CFN-UB-C-1040 FF+5.56d | 516d | 0d | Paint; Painter; Helper-Paint |
| OHD-CFN-UB-C-1060 |  | Ceramic Tiles | 4.44d | 2014-07-19 | 2014-07-23 | OHD-CFN-UB-C-1050 SS+5.56d, OHD-CFN-UB-C-1050 FF+5.56d | 516d | 0d | Ceramic Tiles; TECH-Ceramic Tiles; Helper-Ceramic Tiles |
|  | 4 | **FLOOR** |  | 2014-07-25 | 2014-08-03 |  |  |  |  |
| OHD-CFN-UB-C-1090 |  | Floor Screed | 4.44d | 2014-07-25 | 2014-07-29 | OHD-CFN-UB-C-1060 FF+5.56d, OHD-CFN-UB-C-1060 SS+5.56d | 516d | 0d | Screed; Mason-Concrete; Helper-Screed |
| OHD-CFN-UB-C-1070 |  | Granite Tiles | 4.44d | 2014-07-30 | 2014-08-03 | OHD-CFN-UB-C-1090 SS+5.56d, OHD-CFN-UB-C-1090 FF+5.56d | 516d | 490d | Granite Tiles; TECH-Granite Tiles; Helper-Granite Tiles |
| OHD-CFN-UB-C-1080 |  | Vinyle Tile | 4.44d | 2014-07-30 | 2014-08-03 | OHD-CFN-UB-C-1090 SS+5.56d, OHD-CFN-UB-C-1090 FF+5.56d | 516d | 490d | Vinyle Tile; TECH-Vinyle Tile; Helper-Vinyle Tile |
|  | 1 | **PART D** |  | 2013-11-27 | 2014-06-14 |  |  |  |  |
|  | 1 | **MASONRY WORK** |  | 2013-11-27 | 2014-05-12 |  |  |  |  |
| OHD-CFN-UB-D-1010 |  | Partitions | 4.44d | 2013-11-27 | 2013-12-01 |  | 761.56d | 735.56d | Partitions; TECH-Partitions; Helper-Partitions |
| OHD-CFN-UB-D-1000 |  | Block works | 4.44d | 2014-05-02 | 2014-05-06 | OHD-CSS-FT-D-1080 FS+3.33d | 566.22d | 0d | Block; TECH-Block; Helper-Block |
| OHD-CFN-UB-D-1020 |  | Plastering works | 4.44d | 2014-05-08 | 2014-05-12 | OHD-CFN-UB-D-1000 SS+5.56d, OHD-CFN-UB-D-1000 FF+5.56d | 566.22d | 0d | Plaster; TECH-Plaster; Helper-Plaster |
|  | 2 | **CEILING** |  | 2014-05-13 | 2014-05-23 |  |  |  |  |
| OHD-CFN-UB-D-1030 |  | Painting & Coating | 4.44d | 2014-05-13 | 2014-05-17 | OHD-CFN-UB-D-1020 SS+5.56d, OHD-CFN-UB-D-1020 FF+5.56d | 566.22d | 0d | Paint; Painter; Helper-Paint |
| OHD-CFN-UB-D-1040 |  | False Ceiling | 4.44d | 2014-05-19 | 2014-05-23 | OHD-CFN-UB-D-1030 SS+5.56d, OHD-CFN-UB-D-1030 FF+5.56d | 566.22d | 0d | False Ceiling; TECH-False Ceiling; Helper-False Ceiling |
|  | 3 | **WALL** |  | 2014-05-24 | 2014-06-03 |  |  |  |  |
| OHD-CFN-UB-D-1050 |  | Painting & Coating | 4.44d | 2014-05-24 | 2014-05-29 | OHD-CFN-UB-D-1040 SS+5.56d, OHD-CFN-UB-D-1040 FF+5.56d | 566.22d | 0d | Paint; Painter; Helper-Paint |
| OHD-CFN-UB-D-1060 |  | Ceramic Tiles | 4.44d | 2014-05-30 | 2014-06-03 | OHD-CFN-UB-D-1050 SS+5.56d, OHD-CFN-UB-D-1050 FF+5.56d | 566.22d | 0d | Ceramic Tiles; TECH-Ceramic Tiles; Helper-Ceramic Tiles |

| ID | WBS | Activity | Duration | Start | Finish | Predecessors | Total float | Free float | Resources |
| --- | --- | --- | --- | --- | --- | --- | --- | --- | --- |
|  | 4 | **FLOOR** |  | 2014-06-04 | 2014-06-14 |  |  |  |  |
| OHD-CFN-UB-D-1070 |  | Floor Screed | 4.44d | 2014-06-04 | 2014-06-09 | OHD-CFN-UB-D-1060 FF+5.56d, OHD-CFN-UB-D-1060 SS+5.56d | 566.22d | 0d | Screed; Mason-Concrete; Helper-Screed |
| OHD-CFN-UB-D-1080 |  | Granite Tiles | 4.44d | 2014-06-10 | 2014-06-14 | OHD-CFN-UB-D-1070 SS+5.56d, OHD-CFN-UB-D-1070 FF+5.56d | 566.22d | 540.22d | Granite Tiles; TECH-Granite Tiles; Helper-Granite Tiles |
| OHD-CFN-UB-D-1090 |  | Vinyle Tile | 4.44d | 2014-06-10 | 2014-06-14 | OHD-CFN-UB-D-1070 SS+5.56d, OHD-CFN-UB-D-1070 FF+5.56d | 566.22d | 540.22d | Vinyle Tile; TECH-Vinyle Tile; Helper-Vinyle Tile |
|  | 9 | **FLY TOWER LEVEL** |  | 2013-11-27 | 2014-12-24 |  |  |  |  |
|  | 1 | **PART D** |  | 2013-11-27 | 2014-01-09 |  |  |  |  |
|  | 1 | **MASONRY WORK** |  | 2013-11-27 | 2013-12-06 |  |  |  |  |
| OHD-CFN-FT-D-1000 |  | Block works | 4.44d | 2013-11-27 | 2013-12-01 |  | 722.67d | 0d | Block; TECH-Block; Helper-Block |
| OHD-CFN-FT-D-1010 |  | Partitions | 4.44d | 2013-11-27 | 2013-12-01 |  | 761.56d | 735.56d | Partitions; TECH-Partitions; Helper-Partitions |
| OHD-CFN-FT-D-1020 |  | Plastering works | 4.44d | 2013-12-02 | 2013-12-06 | OHD-CFN-FT-D-1000 SS+5.56d, OHD-CFN-FT-D-1000 FF+5.56d | 722.67d | 0d | Plaster; TECH-Plaster; Helper-Plaster |
|  | 2 | **CEILING** |  | 2013-12-08 | 2013-12-18 |  |  |  |  |
| OHD-CFN-FT-D-1030 |  | Painting & Coating | 4.44d | 2013-12-08 | 2013-12-12 | OHD-CFN-FT-D-1020 SS+5.56d, OHD-CFN-FT-D-1020 FF+5.56d | 722.67d | 0d | Paint; Painter; Helper-Paint |
| OHD-CFN-FT-D-1040 |  | False Ceiling | 4.44d | 2013-12-13 | 2013-12-18 | OHD-CFN-FT-D-1030 SS+5.56d, OHD-CFN-FT-D-1030 FF+5.56d | 722.67d | 0d | False Ceiling; TECH-False Ceiling; Helper-False Ceiling |
|  | 3 | **WALL** |  | 2013-12-19 | 2013-12-29 |  |  |  |  |
| OHD-CFN-FT-D-1050 |  | Painting & Coating | 4.44d | 2013-12-19 | 2013-12-23 | OHD-CFN-FT-D-1040 SS+5.56d, OHD-CFN-FT-D-1040 FF+5.56d | 722.67d | 0d | Paint; Painter; Helper-Paint |
| OHD-CFN-FT-D-1060 |  | Ceramic Tiles | 4.44d | 2013-12-24 | 2013-12-29 | OHD-CFN-FT-D-1050 SS+5.56d, OHD-CFN-FT-D-1050 FF+5.56d | 722.67d | 0d | Ceramic Tiles; TECH-Ceramic Tiles; Helper-Ceramic Tiles |
|  | 4 | **FLOOR** |  | 2013-12-30 | 2014-01-09 |  |  |  |  |
| OHD-CFN-FT-D-1070 |  | Floor Screed | 4.44d | 2013-12-30 | 2014-01-03 | OHD-CFN-FT-D-1060 FF+5.56d, OHD-CFN-FT-D-1060 SS+5.56d | 722.67d | 0d | Screed; Mason-Concrete; Helper-Screed |
| OHD-CFN-FT-D-1080 |  | Granite Tiles | 4.44d | 2014-01-04 | 2014-01-09 | OHD-CFN-FT-D-1070 SS+5.56d, OHD-CFN-FT-D-1070 FF+5.56d | 722.67d | 696.67d | Granite Tiles; TECH-Granite Tiles; Helper-Granite Tiles |
| OHD-CFN-FT-D-1090 |  | Vinyle Tile | 4.44d | 2014-01-04 | 2014-01-09 | OHD-CFN-FT-D-1070 SS+5.56d, OHD-CFN-FT-D-1070 FF+5.56d | 722.67d | 696.67d | Vinyle Tile; TECH-Vinyle Tile; Helper-Vinyle Tile |
|  | 5 | **PART B** |  | 2013-11-27 | 2014-12-24 |  |  |  |  |
|  | 1 | **MASONRY WORK** |  | 2013-11-27 | 2014-11-20 |  |  |  |  |
| OHD-CFN-FT-B-1020 |  | Partitions | 4.44d | 2013-11-27 | 2013-12-01 |  | 761.56d | 735.56d | Partitions; TECH-Partitions; Helper-Partitions |
| OHD-CFN-FT-B-1000 |  | Block works | 4.44d | 2014-11-10 | 2014-11-15 | OHD-CSS-LR-B2-1080, OHD-CSS-LR-B1-1080 | 369.33d | 0d | Block; TECH-Block; Helper-Block |
| OHD-CFN-FT-B-1010 |  | Plastering works | 4.44d | 2014-11-16 | 2014-11-20 | OHD-CFN-FT-B-1000 SS+5.56d, OHD-CFN-FT-B-1000 FF+5.56d | 373.78d | 0d | Plaster; TECH-Plaster; Helper-Plaster |

| ID | WBS | Activity | Duration | Start | Finish | Predecessors | Total float | Free float | Resources |
| --- | --- | --- | --- | --- | --- | --- | --- | --- | --- |
|  | 2 | **CEILING** |  | 2014-11-22 | 2014-12-01 |  |  |  |  |
| OHD-CFN-FT-B-1030 |  | Painting & Coating | 4.44d | 2014-11-22 | 2014-11-26 | OHD-CFN-FT-B-1010 SS+5.56d, OHD-CFN-FT-B-1010 FF+5.56d | 373.78d | 0d | Paint; Painter; Helper-Paint |
| OHD-CFN-FT-B-1040 |  | False Ceiling | 4.44d | 2014-11-27 | 2014-12-01 | OHD-CFN-FT-B-1030 SS+5.56d, OHD-CFN-FT-B-1030 FF+5.56d | 373.78d | 0d | False Ceiling; TECH-False Ceiling; Helper-False Ceiling |
|  | 3 | **WALL** |  | 2014-12-03 | 2014-12-13 |  |  |  |  |
| OHD-CFN-FT-B-1050 |  | Painting & Coating | 4.44d | 2014-12-03 | 2014-12-07 | OHD-CFN-FT-B-1040 SS+5.56d, OHD-CFN-FT-B-1040 FF+5.56d | 373.78d | 0d | Paint; Painter; Helper-Paint |
| OHD-CFN-FT-B-1060 |  | Ceramic Tiles | 4.44d | 2014-12-08 | 2014-12-13 | OHD-CFN-FT-B-1050 SS+5.56d, OHD-CFN-FT-B-1050 FF+5.56d | 373.78d | 0d | Ceramic Tiles; TECH-Ceramic Tiles; Helper-Ceramic Tiles |
|  | 4 | **FLOOR** |  | 2014-12-14 | 2014-12-24 |  |  |  |  |
| OHD-CFN-FT-B-1090 |  | Floor Screed | 4.44d | 2014-12-14 | 2014-12-18 | OHD-CFN-FT-B-1060 FF+5.56d, OHD-CFN-FT-B-1060 SS+5.56d | 373.78d | 0d | Screed; Mason-Concrete; Helper-Screed |
| OHD-CFN-FT-B-1070 |  | Granite Tiles | 4.44d | 2014-12-19 | 2014-12-24 | OHD-CFN-FT-B-1090 SS+5.56d, OHD-CFN-FT-B-1090 FF+5.56d | 373.78d | 347.78d | Granite Tiles; TECH-Granite Tiles; Helper-Granite Tiles |
| OHD-CFN-FT-B-1080 |  | Vinyle Tile | 4.44d | 2014-12-19 | 2014-12-24 | OHD-CFN-FT-B-1090 SS+5.56d, OHD-CFN-FT-B-1090 FF+5.56d | 373.78d | 347.78d | Vinyle Tile; TECH-Vinyle Tile; Helper-Vinyle Tile |
|  | 6 | **PART C** |  | 2013-11-27 | 2014-10-12 |  |  |  |  |
|  | 1 | **MASONRY WORK** |  | 2013-11-27 | 2014-09-09 |  |  |  |  |
| OHD-CFN-FT-C-1020 |  | Partitions | 4.44d | 2013-11-27 | 2013-12-01 |  | 761.56d | 735.56d | Partitions; TECH-Partitions; Helper-Partitions |
| OHD-CFN-FT-C-1000 |  | Block works | 4.44d | 2014-08-30 | 2014-09-04 | OHD-CSS-LR-C4-1080, OHD-CSS-LR-C2-1080 | 446d | 0d | Block; TECH-Block; Helper-Block |
| OHD-CFN-FT-C-1010 |  | Plastering works | 4.44d | 2014-09-05 | 2014-09-09 | OHD-CFN-FT-C-1000 SS+5.56d, OHD-CFN-FT-C-1000 FF+5.56d | 446d | 0d | Plaster; TECH-Plaster; Helper-Plaster |
|  | 2 | **CEILING** |  | 2014-09-10 | 2014-09-20 |  |  |  |  |
| OHD-CFN-FT-C-1030 |  | Painting & Coating | 4.44d | 2014-09-10 | 2014-09-15 | OHD-CFN-FT-C-1010 SS+5.56d, OHD-CFN-FT-C-1010 FF+5.56d | 446d | 0d | Paint; Painter; Helper-Paint |
| OHD-CFN-FT-C-1040 |  | False Ceiling | 4.44d | 2014-09-16 | 2014-09-20 | OHD-CFN-FT-C-1030 SS+5.56d, OHD-CFN-FT-C-1030 FF+5.56d | 446d | 0d | False Ceiling; TECH-False Ceiling; Helper-False Ceiling |
|  | 3 | **WALL** |  | 2014-09-21 | 2014-10-01 |  |  |  |  |
| OHD-CFN-FT-C-1050 |  | Painting & Coating | 4.44d | 2014-09-21 | 2014-09-26 | OHD-CFN-FT-C-1040 SS+5.56d, OHD-CFN-FT-C-1040 FF+5.56d | 446d | 0d | Paint; Painter; Helper-Paint |
| OHD-CFN-FT-C-1060 |  | Ceramic Tiles | 4.44d | 2014-09-27 | 2014-10-01 | OHD-CFN-FT-C-1050 SS+5.56d, OHD-CFN-FT-C-1050 FF+5.56d | 446d | 0d | Ceramic Tiles; TECH-Ceramic Tiles; Helper-Ceramic Tiles |
|  | 4 | **FLOOR** |  | 2014-10-03 | 2014-10-12 |  |  |  |  |
| OHD-CFN-FT-C-1090 |  | Floor Screed | 4.44d | 2014-10-03 | 2014-10-07 | OHD-CFN-FT-C-1060 FF+5.56d, OHD-CFN-FT-C-1060 SS+5.56d | 446d | 0d | Screed; Mason-Concrete; Helper-Screed |
| OHD-CFN-FT-C-1070 |  | Granite Tiles | 4.44d | 2014-10-08 | 2014-10-12 | OHD-CFN-FT-C-1090 SS+5.56d, OHD-CFN-FT-C-1090 FF+5.56d | 446d | 420d | Granite Tiles; TECH-Granite Tiles; Helper-Granite Tiles |
| OHD-CFN-FT-C-1080 |  | Vinyle Tile | 4.44d | 2014-10-08 | 2014-10-12 | OHD-CFN-FT-C-1090 SS+5.56d, OHD-CFN-FT-C-1090 FF+5.56d | 446d | 420d | Vinyle Tile; TECH-Vinyle Tile; Helper-Vinyle Tile |

| ID | WBS | Activity | Duration | Start | Finish | Predecessors | Total float | Free float | Resources |
| --- | --- | --- | --- | --- | --- | --- | --- | --- | --- |
|  | 11 | **LOWER ROOF LEVEL** |  | 2013-11-27 | 2014-12-28 |  |  |  |  |
|  | 5 | **PART B** |  | 2013-11-27 | 2014-12-28 |  |  |  |  |
|  | 5 | **MASONRY WORK** |  | 2013-11-27 | 2014-11-25 |  |  |  |  |
| OHD-CFN-LR-B-1020 |  | Partitions | 4.44d | 2013-11-27 | 2013-12-01 |  | 761.56d | 735.56d | Partitions; TECH-Partitions; Helper-Partitions |
| OHD-CFN-LR-B-1000 |  | Block works | 4.44d | 2014-11-15 | 2014-11-19 | OHD-CFN-FT-B-1000 | 369.33d | 0d | Block; TECH-Block; Helper-Block |
| OHD-CFN-LR-B-1010 |  | Plastering works | 4.44d | 2014-11-20 | 2014-11-25 | OHD-CFN-LR-B-1000 SS+5.56d, OHD-CFN-LR-B-1000 FF+5.56d | 369.33d | 0d | Plaster; TECH-Plaster; Helper-Plaster |
|  | 6 | **CEILING** |  | 2014-11-26 | 2014-12-06 |  |  |  |  |
| OHD-CFN-LR-B-1030 |  | Painting & Coating | 4.44d | 2014-11-26 | 2014-11-30 | OHD-CFN-LR-B-1010 SS+5.56d, OHD-CFN-LR-B-1010 FF+5.56d | 369.33d | 0d | Paint; Painter; Helper-Paint |
| OHD-CFN-LR-B-1040 |  | False Ceiling | 4.44d | 2014-12-02 | 2014-12-06 | OHD-CFN-LR-B-1030 SS+5.56d, OHD-CFN-LR-B-1030 FF+5.56d | 369.33d | 0d | False Ceiling; TECH-False Ceiling; Helper-False Ceiling |
|  | 7 | **WALL** |  | 2014-12-07 | 2014-12-17 |  |  |  |  |
| OHD-CFN-LR-B-1050 |  | Painting & Coating | 4.44d | 2014-12-07 | 2014-12-11 | OHD-CFN-LR-B-1040 SS+5.56d, OHD-CFN-LR-B-1040 FF+5.56d | 369.33d | 0d | Paint; Painter; Helper-Paint |
| OHD-CFN-LR-B-1060 |  | Ceramic Tiles | 4.44d | 2014-12-13 | 2014-12-17 | OHD-CFN-LR-B-1050 SS+5.56d, OHD-CFN-LR-B-1050 FF+5.56d | 369.33d | 0d | Ceramic Tiles; TECH-Ceramic Tiles; Helper-Ceramic Tiles |
|  | 8 | **FLOOR** |  | 2014-12-18 | 2014-12-28 |  |  |  |  |
| OHD-CFN-LR-B-1090 |  | Floor Screed | 4.44d | 2014-12-18 | 2014-12-23 | OHD-CFN-LR-B-1060 FF+5.56d, OHD-CFN-LR-B-1060 SS+5.56d | 369.33d | 0d | Screed; Mason-Concrete; Helper-Screed |
| OHD-CFN-LR-B-1070 |  | Granite Tiles | 4.44d | 2014-12-24 | 2014-12-28 | OHD-CFN-LR-B-1090 SS+5.56d, OHD-CFN-LR-B-1090 FF+5.56d | 369.33d | 343.33d | Granite Tiles; TECH-Granite Tiles; Helper-Granite Tiles |
| OHD-CFN-LR-B-1080 |  | Vinyle Tile | 4.44d | 2014-12-24 | 2014-12-28 | OHD-CFN-LR-B-1090 SS+5.56d, OHD-CFN-LR-B-1090 FF+5.56d | 369.33d | 343.33d | Vinyle Tile; TECH-Vinyle Tile; Helper-Vinyle Tile |
|  | 6 | **PART C** |  | 2013-11-27 | 2014-12-28 |  |  |  |  |
|  | 5 | **MASONRY WORK** |  | 2013-11-27 | 2014-11-25 |  |  |  |  |
| OHD-CFN-LR-C1-1020 |  | Partitions | 4.44d | 2013-11-27 | 2013-12-01 |  | 761.56d | 735.56d | Partitions; TECH-Partitions; Helper-Partitions |
| OHD-CFN-LR-C1-1000 |  | Block works | 4.44d | 2014-11-15 | 2014-11-19 | OHD-CFN-FT-B-1000 | 369.33d | 0d | Block; TECH-Block; Helper-Block |
| OHD-CFN-LR-C1-1010 |  | Plastering works | 4.44d | 2014-11-20 | 2014-11-25 | OHD-CFN-LR-C1-1000 SS+5.56d, OHD-CFN-LR-C1-1000 FF+5.56d | 369.33d | 0d | Plaster; TECH-Plaster; Helper-Plaster |
|  | 6 | **CEILING** |  | 2014-11-26 | 2014-12-06 |  |  |  |  |
| OHD-CFN-LR-C1-1030 |  | Painting & Coating | 4.44d | 2014-11-26 | 2014-11-30 | OHD-CFN-LR-C1-1010 SS+5.56d, OHD-CFN-LR-C1-1010 FF+5.56d | 369.33d | 0d | Paint; Painter; Helper-Paint |
| OHD-CFN-LR-C1-1040 |  | False Ceiling | 4.44d | 2014-12-02 | 2014-12-06 | OHD-CFN-LR-C1-1030 SS+5.56d, OHD-CFN-LR-C1-1030 FF+5.56d | 369.33d | 0d | False Ceiling; TECH-False Ceiling; Helper-False Ceiling |

| ID | WBS | Activity | Duration | Start | Finish | Predecessors | Total float | Free float | Resources |
| --- | --- | --- | --- | --- | --- | --- | --- | --- | --- |
|  | 7 | **WALL** |  | 2014-12-07 | 2014-12-17 |  |  |  |  |
| OHD-CFN-LR-C1-1050 |  | Painting & Coating | 4.44d | 2014-12-07 | 2014-12-11 | OHD-CFN-LR-C1-1040 SS+5.56d, OHD-CFN-LR-C1-1040 FF+5.56d | 369.33d | 0d | Paint; Painter; Helper-Paint |
| OHD-CFN-LR-C1-1060 |  | Ceramic Tiles | 4.44d | 2014-12-13 | 2014-12-17 | OHD-CFN-LR-C1-1050 SS+5.56d, OHD-CFN-LR-C1-1050 FF+5.56d | 369.33d | 0d | Ceramic Tiles; TECH-Ceramic Tiles; Helper-Ceramic Tiles |
|  | 8 | **FLOOR** |  | 2014-12-18 | 2014-12-28 |  |  |  |  |
| OHD-CFN-LR-C1-1090 |  | Floor Screed | 4.44d | 2014-12-18 | 2014-12-23 | OHD-CFN-LR-C1-1060 FF+5.56d, OHD-CFN-LR-C1-1060 SS+5.56d | 369.33d | 0d | Screed; Mason-Concrete; Helper-Screed |
| OHD-CFN-LR-C1-1070 |  | Granite Tiles | 4.44d | 2014-12-24 | 2014-12-28 | OHD-CFN-LR-C1-1090 SS+5.56d, OHD-CFN-LR-C1-1090 FF+5.56d | 369.33d | 343.33d | Granite Tiles; TECH-Granite Tiles; Helper-Granite Tiles |
| OHD-CFN-LR-C1-1080 |  | Vinyle Tile | 4.44d | 2014-12-24 | 2014-12-28 | OHD-CFN-LR-C1-1090 SS+5.56d, OHD-CFN-LR-C1-1090 FF+5.56d | 369.33d | 343.33d | Vinyle Tile; TECH-Vinyle Tile; Helper-Vinyle Tile |
|  | 4 | **MEP** |  | 2013-11-27 | 2014-05-18 |  |  |  |  |
|  | 2 | **BASEMENT LEVEL 3** |  | 2013-11-27 | 2014-05-18 |  |  |  |  |
|  | 2 | **PLUMBING** |  | 2013-11-27 | 2014-03-12 |  |  |  |  |
| OHD-CMP-B3OH-1000 |  | First Fix | 88.89d | 2013-11-27 | 2014-02-23 |  | 640.44d | 0d |  |
| OHD-CMP-B3OH-1010 |  | Second Fix | 100d | 2013-11-27 | 2014-03-06 |  | 599.33d | 0d |  |
| OHD-CMP-B3OH-1020 |  | Third Fix | 105.56d | 2013-11-27 | 2014-03-12 |  | 593.78d | 0d |  |
|  | 3 | **MECHANICAL** |  | 2013-12-13 | 2014-04-03 |  |  |  |  |
| OHD-CMP-B3OH-1030 |  | First Fix | 88.89d | 2013-12-13 | 2014-03-12 | OHD-CMP-B3OH-1000 SS+11.11d, OHD-CMP-B3OH-1000 FF+16.67d | 640.44d | 0d |  |
| OHD-CMP-B3OH-1040 |  | Second Fix | 100d | 2013-12-19 | 2014-03-29 | OHD-CMP-B3OH-1010 SS+22.22d, OHD-CMP-B3OH-1010 FF+22.22d | 599.33d | 0d |  |
| OHD-CMP-B3OH-1050 |  | Third Fix | 105.56d | 2013-12-19 | 2014-04-03 | OHD-CMP-B3OH-1020 SS+22.22d, OHD-CMP-B3OH-1020 FF+11.11d | 593.78d | 0d |  |
|  | 5 | **FIRE FIGHTING** |  | 2013-12-24 | 2014-04-25 |  |  |  |  |
| OHD-CMP-B3OH-1060 |  | First Fix | 88.89d | 2013-12-24 | 2014-03-23 | OHD-CMP-B3OH-1030 SS+8.89d, OHD-CMP-B3OH-1030 FF+11.11d | 640.44d | 0d |  |
| OHD-CMP-B3OH-1080 |  | Second Fix | 100d | 2014-01-10 | 2014-04-20 | OHD-CMP-B3OH-1040 SS+22.22d, OHD-CMP-B3OH-1040 FF+22.22d | 599.33d | 0d |  |
| OHD-CMP-B3OH-1090 |  | Third Fix | 105.56d | 2014-01-10 | 2014-04-25 | OHD-CMP-B3OH-1050 SS+22.22d, OHD-CMP-B3OH-1050 FF+22.22d | 593.78d | 0d |  |
|  | 4 | **ELECTRICAL** |  | 2014-01-02 | 2014-05-18 |  |  |  |  |
| OHD-CMP-B3OH-1070 |  | First Fix | 88.89d | 2014-01-02 | 2014-04-01 | OHD-CMP-B3OH-1060 SS+4.44d, OHD-CMP-B3OH-1060 FF+8.89d | 640.44d | 614.44d |  |
| OHD-CMP-B3OH-1100 |  | Second Fix | 100d | 2014-02-01 | 2014-05-12 | OHD-CMP-B3OH-1080 SS+22.22d, OHD-CMP-B3OH-1080 FF+22.22d | 599.33d | 573.33d |  |
| OHD-CMP-B3OH-1110 |  | Third Fix | 105.56d | 2014-02-01 | 2014-05-18 | OHD-CMP-B3OH-1090 SS+22.22d, OHD-CMP-B3OH-1090 FF+22.22d | 593.78d | 567.78d |  |

| ID | WBS | Activity | Duration | Start | Finish | Predecessors | Total float | Free float |
| --- | --- | --- | --- | --- | --- | --- | --- | --- |
|  | 3 | **BASEMENT LEVEL 2** |  | 2013-11-27 | 2014-05-18 |  |  |  |
|  | 2 | **PLUMBING** |  | 2013-11-27 | 2014-03-12 |  |  |  |
| OHD-CMP-B2OH-1000 |  | First Fix | 88.89d | 2013-11-27 | 2014-02-23 |  | 640.44d | 0d |
| OHD-CMP-B2OH-1010 |  | Second Fix | 100d | 2013-11-27 | 2014-03-06 |  | 599.33d | 0d |
| OHD-CMP-B2OH-1020 |  | Third Fix | 105.56d | 2013-11-27 | 2014-03-12 |  | 593.78d | 0d |
|  | 3 | **MECHANICAL** |  | 2013-12-13 | 2014-04-03 |  |  |  |
| OHD-CMP-B2OH-1030 |  | First Fix | 88.89d | 2013-12-13 | 2014-03-12 | OHD-CMP-B2OH-1000 SS+11.11d, OHD-CMP-B2OH-1000 FF+16.67d | 640.44d | 0d |
| OHD-CMP-B2OH-1040 |  | Second Fix | 100d | 2013-12-19 | 2014-03-29 | OHD-CMP-B2OH-1010 SS+22.22d, OHD-CMP-B2OH-1010 FF+22.22d | 599.33d | 0d |
| OHD-CMP-B2OH-1050 |  | Third Fix | 105.56d | 2013-12-19 | 2014-04-03 | OHD-CMP-B2OH-1020 SS+22.22d, OHD-CMP-B2OH-1020 FF+11.11d | 593.78d | 0d |
|  | 5 | **FIRE FIGHTING** |  | 2013-12-24 | 2014-04-25 |  |  |  |
| OHD-CMP-B2OH-1060 |  | First Fix | 88.89d | 2013-12-24 | 2014-03-23 | OHD-CMP-B2OH-1030 SS+8.89d, OHD-CMP-B2OH-1030 FF+11.11d | 640.44d | 0d |
| OHD-CMP-B2OH-1080 |  | Second Fix | 100d | 2014-01-10 | 2014-04-20 | OHD-CMP-B2OH-1040 SS+22.22d, OHD-CMP-B2OH-1040 FF+22.22d | 599.33d | 0d |
| OHD-CMP-B2OH-1090 |  | Third Fix | 105.56d | 2014-01-10 | 2014-04-25 | OHD-CMP-B2OH-1050 SS+22.22d, OHD-CMP-B2OH-1050 FF+22.22d | 593.78d | 0d |
|  | 4 | **ELECTRICAL** |  | 2014-01-02 | 2014-05-18 |  |  |  |
| OHD-CMP-B2OH-1070 |  | First Fix | 88.89d | 2014-01-02 | 2014-04-01 | OHD-CMP-B2OH-1060 SS+4.44d, OHD-CMP-B2OH-1060 FF+8.89d | 640.44d | 614.44d |
| OHD-CMP-B2OH-1100 |  | Second Fix | 100d | 2014-02-01 | 2014-05-12 | OHD-CMP-B2OH-1080 SS+22.22d, OHD-CMP-B2OH-1080 FF+22.22d | 599.33d | 573.33d |
| OHD-CMP-B2OH-1110 |  | Third Fix | 105.56d | 2014-02-01 | 2014-05-18 | OHD-CMP-B2OH-1090 SS+22.22d, OHD-CMP-B2OH-1090 FF+22.22d | 593.78d | 567.78d |
|  | 13 | **BASEMENT LEVEL 1** |  | 2013-11-27 | 2014-05-18 |  |  |  |
|  | 2 | **PLUMBING** |  | 2013-11-27 | 2014-03-12 |  |  |  |
| OHD-CMP-B1OH-1000 |  | First Fix | 88.89d | 2013-11-27 | 2014-02-23 |  | 640.44d | 0d |
| OHD-CMP-B1OH-1010 |  | Second Fix | 100d | 2013-11-27 | 2014-03-06 |  | 599.33d | 0d |
| OHD-CMP-B1OH-1020 |  | Third Fix | 105.56d | 2013-11-27 | 2014-03-12 |  | 593.78d | 0d |
|  | 3 | **MECHANICAL** |  | 2013-12-13 | 2014-04-03 |  |  |  |
| OHD-CMP-B1OH-1030 |  | First Fix | 88.89d | 2013-12-13 | 2014-03-12 | OHD-CMP-B1OH-1000 SS+11.11d, OHD-CMP-B1OH-1000 FF+16.67d | 640.44d | 0d |
| OHD-CMP-B1OH-1040 |  | Second Fix | 100d | 2013-12-19 | 2014-03-29 | OHD-CMP-B1OH-1010 SS+22.22d, OHD-CMP-B1OH-1010 FF+22.22d | 599.33d | 0d |
| OHD-CMP-B1OH-1050 |  | Third Fix | 105.56d | 2013-12-19 | 2014-04-03 | OHD-CMP-B1OH-1020 SS+22.22d, OHD-CMP-B1OH-1020 FF+11.11d | 593.78d | 0d |

| ID | WBS | Activity | Duration | Start | Finish | Predecessors | Total float | Free float |
| --- | --- | --- | --- | --- | --- | --- | --- | --- |
|  | 5 | **FIRE FIGHTING** |  | 2013-12-24 | 2014-04-25 |  |  |  |
| OHD-CMP-B1OH-1060 |  | First Fix | 88.89d | 2013-12-24 | 2014-03-23 | OHD-CMP-B1OH-1030 SS+8.89d, OHD-CMP-B1OH-1030 FF+11.11d | 640.44d | 0d |
| OHD-CMP-B1OH-1080 |  | Second Fix | 100d | 2014-01-10 | 2014-04-20 | OHD-CMP-B1OH-1040 SS+22.22d, OHD-CMP-B1OH-1040 FF+22.22d | 599.33d | 0d |
| OHD-CMP-B1OH-1090 |  | Third Fix | 105.56d | 2014-01-10 | 2014-04-25 | OHD-CMP-B1OH-1050 SS+22.22d, OHD-CMP-B1OH-1050 FF+22.22d | 593.78d | 0d |
|  | 4 | **ELECTRICAL** |  | 2014-01-02 | 2014-05-18 |  |  |  |
| OHD-CMP-B1OH-1070 |  | First Fix | 88.89d | 2014-01-02 | 2014-04-01 | OHD-CMP-B1OH-1060 SS+4.44d, OHD-CMP-B1OH-1060 FF+8.89d | 640.44d | 614.44d |
| OHD-CMP-B1OH-1100 |  | Second Fix | 100d | 2014-02-01 | 2014-05-12 | OHD-CMP-B1OH-1080 SS+22.22d, OHD-CMP-B1OH-1080 FF+22.22d | 599.33d | 573.33d |
| OHD-CMP-B1OH-1110 |  | Third Fix | 105.56d | 2014-02-01 | 2014-05-18 | OHD-CMP-B1OH-1090 SS+22.22d, OHD-CMP-B1OH-1090 FF+22.22d | 593.78d | 567.78d |
|  | 6 | **PROMENADE & PLAZA LOWER BALACONY LEVEL** |  | 2013-11-27 | 2014-05-18 |  |  |  |
|  | 2 | **PLUMBING** |  | 2013-11-27 | 2014-03-12 |  |  |  |
| OHD-CMP-LBOH-1000 |  | First Fix | 88.89d | 2013-11-27 | 2014-02-23 |  | 640.44d | 0d |
| OHD-CMP-LBOH-1010 |  | Second Fix | 100d | 2013-11-27 | 2014-03-06 |  | 599.33d | 0d |
| OHD-CMP-LBOH-1020 |  | Third Fix | 105.56d | 2013-11-27 | 2014-03-12 |  | 593.78d | 0d |
|  | 3 | **MECHANICAL** |  | 2013-12-13 | 2014-04-03 |  |  |  |
| OHD-CMP-LBOH-1030 |  | First Fix | 88.89d | 2013-12-13 | 2014-03-12 | OHD-CMP-LBOH-1000 SS+11.11d, OHD-CMP-LBOH-1000 FF+16.67d | 640.44d | 0d |
| OHD-CMP-LBOH-1040 |  | Second Fix | 100d | 2013-12-19 | 2014-03-29 | OHD-CMP-LBOH-1010 SS+22.22d, OHD-CMP-LBOH-1010 FF+22.22d | 599.33d | 0d |
| OHD-CMP-LBOH-1050 |  | Third Fix | 105.56d | 2013-12-19 | 2014-04-03 | OHD-CMP-LBOH-1020 SS+22.22d, OHD-CMP-LBOH-1020 FF+11.11d | 593.78d | 0d |
|  | 5 | **FIRE FIGHTING** |  | 2013-12-24 | 2014-04-25 |  |  |  |
| OHD-CMP-LBOH-1060 |  | First Fix | 88.89d | 2013-12-24 | 2014-03-23 | OHD-CMP-LBOH-1030 SS+8.89d, OHD-CMP-LBOH-1030 FF+11.11d | 640.44d | 0d |
| OHD-CMP-LBOH-1080 |  | Second Fix | 100d | 2014-01-10 | 2014-04-20 | OHD-CMP-LBOH-1040 SS+22.22d, OHD-CMP-LBOH-1040 FF+22.22d | 599.33d | 0d |
| OHD-CMP-LBOH-1090 |  | Third Fix | 105.56d | 2014-01-10 | 2014-04-25 | OHD-CMP-LBOH-1050 SS+22.22d, OHD-CMP-LBOH-1050 FF+22.22d | 593.78d | 0d |
|  | 4 | **ELECTRICAL** |  | 2014-01-02 | 2014-05-18 |  |  |  |
| OHD-CMP-LBOH-1070 |  | First Fix | 88.89d | 2014-01-02 | 2014-04-01 | OHD-CMP-LBOH-1060 SS+4.44d, OHD-CMP-LBOH-1060 FF+8.89d | 640.44d | 614.44d |
| OHD-CMP-LBOH-1100 |  | Second Fix | 100d | 2014-02-01 | 2014-05-12 | OHD-CMP-LBOH-1080 SS+22.22d, OHD-CMP-LBOH-1080 FF+22.22d | 599.33d | 573.33d |
| OHD-CMP-LBOH-1110 |  | Third Fix | 105.56d | 2014-02-01 | 2014-05-18 | OHD-CMP-LBOH-1090 SS+22.22d, OHD-CMP-LBOH-1090 FF+22.22d | 593.78d | 567.78d |

| ID | WBS | Activity | Duration | Start | Finish | Predecessors | Total float | Free float |
| --- | --- | --- | --- | --- | --- | --- | --- | --- |
|  | 8 | **UPPER BALACONY LEVEL** |  | 2013-11-27 | 2014-05-18 |  |  |  |
|  | 2 | **PLUMBING** |  | 2013-11-27 | 2014-03-12 |  |  |  |
| OHD-CMP-UBOH-1000 |  | First Fix | 88.89d | 2013-11-27 | 2014-02-23 |  | 640.44d | 0d |
| OHD-CMP-UBOH-1010 |  | Second Fix | 100d | 2013-11-27 | 2014-03-06 |  | 599.33d | 0d |
| OHD-CMP-UBOH-1020 |  | Third Fix | 105.56d | 2013-11-27 | 2014-03-12 |  | 593.78d | 0d |
|  | 3 | **MECHANICAL** |  | 2013-12-13 | 2014-04-03 |  |  |  |
| OHD-CMP-UBOH-1030 |  | First Fix | 88.89d | 2013-12-13 | 2014-03-12 | OHD-CMP-UBOH-1000 SS+11.11d, OHD-CMP-UBOH-1000 FF+16.67d | 640.44d | 0d |
| OHD-CMP-UBOH-1040 |  | Second Fix | 100d | 2013-12-19 | 2014-03-29 | OHD-CMP-UBOH-1010 SS+22.22d, OHD-CMP-UBOH-1010 FF+22.22d | 599.33d | 0d |
| OHD-CMP-UBOH-1050 |  | Third Fix | 105.56d | 2013-12-19 | 2014-04-03 | OHD-CMP-UBOH-1020 SS+22.22d, OHD-CMP-UBOH-1020 FF+11.11d | 593.78d | 0d |
|  | 5 | **FIRE FIGHTING** |  | 2013-12-24 | 2014-04-25 |  |  |  |
| OHD-CMP-UBOH-1060 |  | First Fix | 88.89d | 2013-12-24 | 2014-03-23 | OHD-CMP-UBOH-1030 SS+8.89d, OHD-CMP-UBOH-1030 FF+11.11d | 640.44d | 0d |
| OHD-CMP-UBOH-1080 |  | Second Fix | 100d | 2014-01-10 | 2014-04-20 | OHD-CMP-UBOH-1040 SS+22.22d, OHD-CMP-UBOH-1040 FF+22.22d | 599.33d | 0d |
| OHD-CMP-UBOH-1090 |  | Third Fix | 105.56d | 2014-01-10 | 2014-04-25 | OHD-CMP-UBOH-1050 SS+22.22d, OHD-CMP-UBOH-1050 FF+22.22d | 593.78d | 0d |
|  | 4 | **ELECTRICAL** |  | 2014-01-02 | 2014-05-18 |  |  |  |
| OHD-CMP-UBOH-1070 |  | First Fix | 88.89d | 2014-01-02 | 2014-04-01 | OHD-CMP-UBOH-1060 SS+4.44d, OHD-CMP-UBOH-1060 FF+8.89d | 640.44d | 614.44d |
| OHD-CMP-UBOH-1100 |  | Second Fix | 100d | 2014-02-01 | 2014-05-12 | OHD-CMP-UBOH-1080 SS+22.22d, OHD-CMP-UBOH-1080 FF+22.22d | 599.33d | 573.33d |
| OHD-CMP-UBOH-1110 |  | Third Fix | 105.56d | 2014-02-01 | 2014-05-18 | OHD-CMP-UBOH-1090 SS+22.22d, OHD-CMP-UBOH-1090 FF+22.22d | 593.78d | 567.78d |
|  | 9 | **FLY TOWER LEVEL** |  | 2013-11-27 | 2014-05-18 |  |  |  |
|  | 2 | **PLUMBING** |  | 2013-11-27 | 2014-03-12 |  |  |  |
| OHD-CMP-FTOH-1000 |  | First Fix | 88.89d | 2013-11-27 | 2014-02-23 |  | 640.44d | 0d |
| OHD-CMP-FTOH-1010 |  | Second Fix | 100d | 2013-11-27 | 2014-03-06 |  | 599.33d | 0d |
| OHD-CMP-FTOH-1020 |  | Third Fix | 105.56d | 2013-11-27 | 2014-03-12 |  | 593.78d | 0d |
|  | 3 | **MECHANICAL** |  | 2013-12-13 | 2014-04-03 |  |  |  |
| OHD-CMP-FTOH-1030 |  | First Fix | 88.89d | 2013-12-13 | 2014-03-12 | OHD-CMP-FTOH-1000 SS+11.11d, OHD-CMP-FTOH-1000 FF+16.67d | 640.44d | 0d |
| OHD-CMP-FTOH-1040 |  | Second Fix | 100d | 2013-12-19 | 2014-03-29 | OHD-CMP-FTOH-1010 SS+22.22d, OHD-CMP-FTOH-1010 FF+22.22d | 599.33d | 0d |
| OHD-CMP-FTOH-1050 |  | Third Fix | 105.56d | 2013-12-19 | 2014-04-03 | OHD-CMP-FTOH-1020 SS+22.22d, OHD-CMP-FTOH-1020 FF+11.11d | 593.78d | 0d |

| ID | WBS | Activity | Duration | Start | Finish | Predecessors | Total float | Free float |
| --- | --- | --- | --- | --- | --- | --- | --- | --- |
|  | 5 | **FIRE FIGHTING** |  | 2013-12-24 | 2014-04-25 |  |  |  |
| OHD-CMP-FTOH-1060 |  | First Fix | 88.89d | 2013-12-24 | 2014-03-23 | OHD-CMP-FTOH-1030 SS+8.89d, OHD-CMP-FTOH-1030 FF+11.11d | 640.44d | 0d |
| OHD-CMP-FTOH-1080 |  | Second Fix | 100d | 2014-01-10 | 2014-04-20 | OHD-CMP-FTOH-1040 SS+22.22d, OHD-CMP-FTOH-1040 FF+22.22d | 599.33d | 0d |
| OHD-CMP-FTOH-1090 |  | Third Fix | 105.56d | 2014-01-10 | 2014-04-25 | OHD-CMP-FTOH-1050 SS+22.22d, OHD-CMP-FTOH-1050 FF+22.22d | 593.78d | 0d |
|  | 4 | **ELECTRICAL** |  | 2014-01-02 | 2014-05-18 |  |  |  |
| OHD-CMP-FTOH-1070 |  | First Fix | 88.89d | 2014-01-02 | 2014-04-01 | OHD-CMP-FTOH-1060 SS+4.44d, OHD-CMP-FTOH-1060 FF+8.89d | 640.44d | 614.44d |
| OHD-CMP-FTOH-1100 |  | Second Fix | 100d | 2014-02-01 | 2014-05-12 | OHD-CMP-FTOH-1080 SS+22.22d, OHD-CMP-FTOH-1080 FF+22.22d | 599.33d | 573.33d |
| OHD-CMP-FTOH-1110 |  | Third Fix | 105.56d | 2014-02-01 | 2014-05-18 | OHD-CMP-FTOH-1090 SS+22.22d, OHD-CMP-FTOH-1090 FF+22.22d | 593.78d | 567.78d |
|  | 11 | **LOWER ROOF LEVEL** |  | 2013-11-27 | 2014-05-18 |  |  |  |
|  | 2 | **PLUMBING** |  | 2013-11-27 | 2014-03-12 |  |  |  |
| OHD-CMP-LROH-1000 |  | First Fix | 88.89d | 2013-11-27 | 2014-02-23 |  | 640.44d | 0d |
| OHD-CMP-LROH-1010 |  | Second Fix | 100d | 2013-11-27 | 2014-03-06 |  | 599.33d | 0d |
| OHD-CMP-LROH-1020 |  | Third Fix | 105.56d | 2013-11-27 | 2014-03-12 |  | 593.78d | 0d |
|  | 3 | **MECHANICAL** |  | 2013-12-13 | 2014-04-03 |  |  |  |
| OHD-CMP-LROH-1030 |  | First Fix | 88.89d | 2013-12-13 | 2014-03-12 | OHD-CMP-LROH-1000 SS+11.11d, OHD-CMP-LROH-1000 FF+16.67d | 640.44d | 0d |
| OHD-CMP-LROH-1040 |  | Second Fix | 100d | 2013-12-19 | 2014-03-29 | OHD-CMP-LROH-1010 SS+22.22d, OHD-CMP-LROH-1010 FF+22.22d | 599.33d | 0d |
| OHD-CMP-LROH-1050 |  | Third Fix | 105.56d | 2013-12-19 | 2014-04-03 | OHD-CMP-LROH-1020 SS+22.22d, OHD-CMP-LROH-1020 FF+11.11d | 593.78d | 0d |
|  | 5 | **FIRE FIGHTING** |  | 2013-12-24 | 2014-04-25 |  |  |  |
| OHD-CMP-LROH-1060 |  | First Fix | 88.89d | 2013-12-24 | 2014-03-23 | OHD-CMP-LROH-1030 SS+8.89d, OHD-CMP-LROH-1030 FF+11.11d | 640.44d | 0d |
| OHD-CMP-LROH-1080 |  | Second Fix | 100d | 2014-01-10 | 2014-04-20 | OHD-CMP-LROH-1040 SS+22.22d, OHD-CMP-LROH-1040 FF+22.22d | 599.33d | 0d |
| OHD-CMP-LROH-1090 |  | Third Fix | 105.56d | 2014-01-10 | 2014-04-25 | OHD-CMP-LROH-1050 SS+22.22d, OHD-CMP-LROH-1050 FF+22.22d | 593.78d | 0d |
|  | 4 | **ELECTRICAL** |  | 2014-01-02 | 2014-05-18 |  |  |  |
| OHD-CMP-LROH-1070 |  | First Fix | 88.89d | 2014-01-02 | 2014-04-01 | OHD-CMP-LROH-1060 SS+4.44d, OHD-CMP-LROH-1060 FF+8.89d | 640.44d | 614.44d |
| OHD-CMP-LROH-1100 |  | Second Fix | 100d | 2014-02-01 | 2014-05-12 | OHD-CMP-LROH-1080 SS+22.22d, OHD-CMP-LROH-1080 FF+22.22d | 599.33d | 573.33d |
| OHD-CMP-LROH-1110 |  | Third Fix | 105.56d | 2014-02-01 | 2014-05-18 | OHD-CMP-LROH-1090 SS+22.22d, OHD-CMP-LROH-1090 FF+22.22d | 593.78d | 567.78d |

| WBS | Activity |
| --- | --- |
| 4 | **Testing & Commissioning** |
